# VIvienda Hermanos Rossi

Schedule from MS Project XML, 2025-07-01 to 2028-03-17, A marks actual dates.

## Calendars

- Calendario Argentino 2024: Mon-Fri 09:00-13:00, 15:00-19:00; Sat-Sun off. Exceptions (off unless hours are given): 2024-12-25 to 2033-12-25 (Navidad, recurring), 2025-01-01 to 2034-01-01 (Año nuevo 2025, recurring), 2025-02-10 to 2034-02-10 (Carnaval 2025, recurring), 2025-03-24 to 2034-03-24 (Día Nacional de la Memoria por la Verdad y la Justicia, recurring), 2025-04-02 to 2034-04-02 (Día del Veterano y de los Caídos en la Guerra de Malvinas, recurring), 2025-05-01 to 2034-05-01 (Día del Trabajador, recurring), 2025-05-25 to 2034-05-25 (Dia de la revolucion de Mayo, recurring), 2025-06-20 to 2034-06-20 (Día de la Bandera, recurring), 2025-07-09 to 2034-07-09 (Día de la Independencia, recurring), 2025-08-18 to 2034-08-18 (Paso a la Inmortalidad del Gral. José de San Martín (17/08), recurring), 2025-10-13 to 2034-10-13 (Día del Respeto a la Diversidad Cultural (12/10), recurring), 2025-11-18 to 2034-11-18 (Día de la Soberanía Nacional (20/11), recurring), 2025-12-08 to 2034-12-08 (Día de la Virgen, recurring).

## Resources

| Resource |
| --- |
| Gabriela Rojo |
| Julian Steib |
| Posventa |
| Alexandra Arevalo |

## Schedule

| ID | WBS | Task | Type | Duration | Start | Finish | Predecessors | Complete | Remaining | Baseline start | Baseline finish | Baseline duration | Baseline 1 start | Baseline 1 finish | Total slack | Constraint | Resources | Work | Actual work |
| --- | --- | --- | --- | --- | --- | --- | --- | --- | --- | --- | --- | --- | --- | --- | --- | --- | --- | --- | --- |
| 1 | 1 | **VIVIENDAS HERMANOS ROSSI** |  | 680d? | 2025-07-01 A | 2028-03-17 |  | 33% | 456.62d? | 2025-07-01 | 2028-05-13 | 718d? | 2025-07-01 | 2028-01-09 | 0d |  |  | 42744h | 14047.9h |
| 2 | 1.1 | ✔Recepción de Pliego |  | 22d | 2025-07-01 A | 2025-07-31 A |  | 100% |  | 2025-07-01 | 2025-07-31 | 22d | 2025-07-01 | 2025-07-31 |  | start no earlier than 2025-07-01 | Gabriela Rojo | 176h | 176h |
| 3 | 1.2 | **✔Gestiones** |  | 35d | 2025-08-01 A | 2025-09-19 A |  | 100% |  | 2025-08-01 | 2025-09-19 | 35d | 2025-08-01 | 2025-09-19 |  |  |  | 552h | 552h |
| 4 | 1.2.1 | ✔Gestiones CAPC |  | 24d | 2025-08-01 A | 2025-09-04 A | 2 | 100% |  | 2025-08-01 | 2025-09-04 | 24d | 2025-08-01 | 2025-09-04 |  |  | Gabriela Rojo | 192h | 192h |
| 5 | 1.2.2 | ✔Gestiones Municipales |  | 35d | 2025-08-01 A | 2025-09-19 A | 2 | 100% |  | 2025-08-01 | 2025-09-19 | 35d | 2025-08-01 | 2025-09-19 |  |  | Gabriela Rojo | 280h | 280h |
| 6 | 1.2.3 | ✔Gestiones de Personal |  | 10d | 2025-09-08 A | 2025-09-19 A | 5FF | 100% |  | 2025-09-08 | 2025-09-19 | 10d | 2025-09-08 | 2025-09-19 |  |  | Gabriela Rojo | 80h | 80h |
| 7 | 1.3 | **Obra - Vivienda Hermanos Rossi** |  | 413d | 2025-09-19 A | 2027-05-19 |  | 9% | 375.33d | 2025-09-19 | 2027-05-19 | 413d | 2025-09-19 | 2027-05-19 | 210d |  |  | 6456h | 588.8h |
| 8 | 1.3.1 | ✔Firma Acta Inicio de Obra | milestone | 0d | 2025-09-19 A | 2025-09-19 A | 3 | 100% |  | 2025-09-19 | 2025-09-19 |  | 2025-09-19 | 2025-09-19 |  |  | Julian Steib |  |  |
| 9 | 1.3.2 | Vivieda Hermanos Rossi Contratada |  | 433d | 2025-09-22 | 2027-05-19 | 8 |  |  | 2025-09-22 | 2027-05-19 | 433d | 2025-09-22 | 2027-05-19 | 206d |  | Julian Steib | 3464h |  |
| 10 | 1.3.3 | Obra Vivieda Hermanos Rossi |  | 374d | 2025-09-22 A | 2027-02-25 |  | 20% | 300.4d |  |  |  | 2025-09-22 | 2027-01-14 | 267d | start no earlier than 2025-09-22 | Alexandra Arevalo | 2992h | 588.8h |
| 11 | 1.4 | **CRONOGRAMA VIVIENDA ROSSI** |  | 374d? | 2025-09-22 A | 2027-03-23 |  | 48% | 195.6d? | 2025-09-22 | 2027-05-19 | 413d? | 2025-09-22 | 2027-01-14 | 0d |  |  | 26920h | 12731h |
| 12 | 1.4.1 | **TAREAS PRELIMINARES** |  | 78d | 2025-09-22 A | 2026-01-14 A |  | 100% |  | 2025-09-22 | 2026-01-14 | 78d | 2025-09-22 | 2026-01-14 |  |  |  | 608h | 608h |
| 13 | 1.4.1.1 | ✔CERCO PERIMETRAL | milestone | 0d | 2025-09-22 A | 2025-09-22 A |  | 100% |  | 2025-09-22 | 2025-09-23 | 2d | 2025-09-22 | 2025-09-22 |  | start no earlier than 2025-09-22 | Alexandra Arevalo |  |  |
| 14 | 1.4.1.2 | ✔REPLANTEO DE OBRA | milestone | 0d | 2025-10-08 A | 2025-10-08 A | 17 | 100% |  | 2025-10-08 | 2025-10-09 | 2d | 2025-10-08 | 2025-10-08 |  |  | Alexandra Arevalo |  |  |
| 15 | 1.4.1.3 | ✔ARMADO DE PILAR CON TABLERO DE OBRA | milestone | 0d | 2025-09-22 A | 2025-09-22 A |  | 100% |  | 2025-09-22 | 2025-09-22 | 1d | 2025-09-22 | 2025-09-22 |  | start no earlier than 2025-09-22 | Alexandra Arevalo |  |  |
| 16 | 1.4.1.4 | ✔MOVIMIENTO DE SUELO (Monto a confirmar una vez iniciada la obra) |  | 76d | 2025-09-24 A | 2026-01-14 A | 15FS+2d | 100% |  | 2025-09-24 | 2026-01-14 | 76d | 2025-09-24 | 2026-01-14 |  |  | Alexandra Arevalo | 608h | 608h |
| 17 | 1.4.1.5 | ✔LIMPIEZA Y NIVELACIÓN (Monto a confirmar una vez iniciada la obra) | milestone | 0d | 2025-10-03 A | 2025-10-03 A | 16 | 100% |  | 2025-10-03 | 2025-10-07 | 3d | 2025-10-03 | 2025-10-03 |  |  | Alexandra Arevalo |  |  |
| 18 | 1.4.1.6 | ✔AGUA DE OBRA (valor conexión Cooperativa agua) | milestone | 0d | 2025-09-22 A | 2025-09-22 A |  | 100% |  | 2025-09-22 | 2025-09-22 | 1d | 2025-09-22 | 2025-09-22 |  | start no earlier than 2025-09-22 | Alexandra Arevalo |  |  |
| 19 | 1.4.1.7 | ✔LUZ DE OBRA (valor conexión Epec) | milestone | 0d | 2025-09-22 A | 2025-09-22 A |  | 100% |  | 2025-09-22 | 2025-09-22 | 1d | 2025-09-22 | 2025-09-22 |  | start no earlier than 2025-09-22 | Alexandra Arevalo |  |  |
| 20 | 1.4.2 | **PILOTES** |  | 78d | 2025-10-22 A | 2026-02-13 A |  | 100% |  | 2025-10-22 | 2026-01-29 | 68d | 2025-10-22 | 2026-02-04 |  |  |  | 536h | 536h |
| 21 | 1.4.2.1 | ✔EXCAVACIÓN DE PILOTES |  | 10d | 2026-01-15 A | 2026-01-28 A | 16 | 100% |  | 2026-01-15 | 2026-01-23 | 7d | 2026-01-15 | 2026-01-28 |  |  | Alexandra Arevalo | 80h | 80h |
| 22 | 1.4.2.2 | ✔P1 - Pilotes (40cm diametro) - 5 unidades - Prof. 3 mts aprox |  | 15d | 2026-01-23 A | 2026-02-13 A | 21FF+11d | 100% |  | 2026-01-12 | 2026-01-29 | 14d | 2026-01-15 | 2026-02-04 |  | start no earlier than 2025-09-10 | Alexandra Arevalo | 120h | 120h |
| 23 | 1.4.2.3 | ✔P2 - Pilotes (50cm diametro) - 4 unidades - Prof. 3 mts aprox |  | 15d | 2026-01-23 A | 2026-02-13 A | 21FF+11d | 100% |  | 2026-01-12 | 2026-01-29 | 14d | 2026-01-15 | 2026-02-04 |  |  | Alexandra Arevalo | 120h | 120h |
| 24 | 1.4.2.4 | ✔Zapata |  | 13d | 2025-10-22 A | 2025-11-07 A |  | 100% |  | 2025-10-22 | 2025-11-19 | 20d | 2025-10-22 | 2025-11-07 |  | start no earlier than 2025-10-22 | Alexandra Arevalo | 104h | 104h |
| 25 | 1.4.2.5 | ✔Mamposteria de Nivelación SS1 |  | 5d | 2025-11-10 A | 2025-11-14 A | 28 | 100% |  | 2025-11-20 | 2025-11-26 | 5d | 2025-11-10 | 2025-11-14 |  |  | Alexandra Arevalo | 40h | 40h |
| 26 | 1.4.2.6 | ✔Mamposteria de Nivelación PB |  | 9d | 2026-01-19 A | 2026-01-29 A | 79, 80 | 100% |  | 2025-12-31 | 2026-01-06 | 4d | 2026-01-19 | 2026-01-29 |  |  | Alexandra Arevalo | 72h | 72h |

| ID | WBS | Task | Duration | Start | Finish | Predecessors | Complete | Remaining | Baseline start | Baseline finish | Baseline duration | Baseline 1 start | Baseline 1 finish | Total slack | Free slack | Resources | Work | Actual work |
| --- | --- | --- | --- | --- | --- | --- | --- | --- | --- | --- | --- | --- | --- | --- | --- | --- | --- | --- |
| 27 | 1.4.3 | **VIGAS DE FUNDACIÓN** | 76d | 2025-10-23 A | 2026-02-12 A |  | 100% |  | 2025-11-03 | 2026-02-03 | 63d | 2025-10-23 | 2026-02-04 |  |  |  | 464h | 464h |
| 28 | 1.4.3.1 | ✔VF - 0,30 x 0,35 | 12d | 2025-10-23 A | 2025-11-07 A | 24FF | 100% |  | 2025-11-03 | 2025-11-19 | 12d | 2025-10-23 | 2025-11-07 |  |  | Alexandra Arevalo | 96h | 96h |
| 29 | 1.4.3.2 | ✔VF1 - 0,30 x 0,40 | 12d | 2025-10-23 A | 2025-11-07 A | 24FF | 100% |  | 2025-11-03 | 2025-11-19 | 12d | 2025-10-23 | 2025-11-07 |  |  | Alexandra Arevalo | 96h | 96h |
| 30 | 1.4.3.3 | ✔VF2 - 0,30 x 0,45 | 12d | 2025-10-23 A | 2025-11-07 A | 24FF | 100% |  | 2025-11-03 | 2025-11-19 | 12d | 2025-10-23 | 2025-11-07 |  |  | Alexandra Arevalo | 96h | 96h |
| 31 | 1.4.3.4 | ✔VF - 0,30 x 0,35 | 11d | 2026-01-28 A | 2026-02-12 A | 23SS+3d | 100% |  | 2026-01-19 | 2026-02-03 | 12d | 2026-01-20 | 2026-02-04 |  |  | Alexandra Arevalo | 88h | 88h |
| 32 | 1.4.3.5 | ✔VF1 - 0,30 x 0,40 | 11d | 2026-01-28 A | 2026-02-12 A | 23SS+3d | 100% |  | 2026-01-19 | 2026-02-03 | 12d | 2026-01-20 | 2026-02-04 |  |  | Alexandra Arevalo | 88h | 88h |
| 33 | 1.4.4 | **COLUMNAS + ENCADENADOS VERTICALES** | 123d | 2025-11-21 A | 2026-05-21 |  | 63% | 45.46d | 2025-12-02 | 2026-04-03 | 83d | 2025-11-21 | 2026-04-08 | 209d |  |  | 1840h | 1160h |
| 34 | 1.4.4.1 | ✔C1 (6 columnas) | 18d | 2025-11-21 A | 2025-12-17 A | 102 | 100% |  | 2025-12-02 | 2025-12-09 | 5d | 2025-11-21 | 2025-12-17 |  |  | Alexandra Arevalo | 144h | 144h |
| 35 | 1.4.4.2 | ✔C1 s (11 columnas) | 18d | 2025-11-21 A | 2025-12-17 A | 102 | 100% |  | 2025-12-02 | 2025-12-09 | 5d | 2025-11-21 | 2025-12-17 |  |  | Alexandra Arevalo | 144h | 144h |
| 36 | 1.4.4.3 | ✔C2 (1 columna) | 18d | 2025-11-21 A | 2025-12-17 A | 102 | 100% |  | 2025-12-02 | 2025-12-09 | 5d | 2025-11-21 | 2025-12-17 |  |  | Alexandra Arevalo | 144h | 144h |
| 37 | 1.4.4.4 | ✔C3 s (2 columnas) | 18d | 2025-11-21 A | 2025-12-17 A | 102 | 100% |  | 2025-12-02 | 2025-12-09 | 5d | 2025-11-21 | 2025-12-17 |  |  | Alexandra Arevalo | 144h | 144h |
| 38 | 1.4.4.5 | ✔C5 (2 columnas) | 18d | 2025-11-21 A | 2025-12-17 A | 102 | 100% |  | 2025-12-02 | 2025-12-09 | 5d | 2025-11-21 | 2025-12-17 |  |  | Alexandra Arevalo | 144h | 144h |
| 39 | 1.4.4.6 | ✔C1 (18 columnas) | 7d | 2026-02-04 A | 2026-02-13 A | 101 | 100% |  | 2026-01-12 | 2026-01-20 | 7d | 2026-02-04 | 2026-02-13 |  |  | Alexandra Arevalo | 56h | 56h |
| 40 | 1.4.4.7 | ✔C2 (5 columnas) | 7d | 2026-02-04 A | 2026-02-13 A | 101 | 100% |  | 2026-01-12 | 2026-01-20 | 7d | 2026-02-04 | 2026-02-13 |  |  | Alexandra Arevalo | 56h | 56h |
| 41 | 1.4.4.8 | ✔C3 (5 columnas) | 7d | 2026-02-04 A | 2026-02-13 A | 101 | 100% |  | 2026-01-12 | 2026-01-20 | 7d | 2026-02-04 | 2026-02-13 |  |  | Alexandra Arevalo | 56h | 56h |
| 42 | 1.4.4.9 | ✔C6 (3 columnas) | 27d | 2026-02-04 A | 2026-03-13 A | 101 | 100% |  | 2026-01-12 | 2026-01-20 | 7d | 2026-02-04 | 2026-02-13 |  |  | Alexandra Arevalo | 216h | 216h |
| 43 | 1.4.4.10 | ✔C1 (19 columnas) | 17d | 2026-04-28 | 2026-05-21 | 83 |  |  | 2026-03-25 | 2026-04-03 | 7d | 2026-03-30 | 2026-04-08 | 209d |  | Alexandra Arevalo | 136h |  |
| 44 | 1.4.4.11 | ✔C2 (2 columnas) | 17d | 2026-04-28 | 2026-05-21 | 83 |  |  | 2026-03-25 | 2026-04-03 | 7d | 2026-03-30 | 2026-04-08 | 209d |  | Alexandra Arevalo | 136h |  |
| 45 | 1.4.4.12 | ✔C3 (2 columnas) | 17d | 2026-04-28 | 2026-05-21 | 83 |  |  | 2026-03-25 | 2026-04-03 | 7d | 2026-03-30 | 2026-04-08 | 209d |  | Alexandra Arevalo | 136h |  |
| 46 | 1.4.4.13 | ✔C4 (3 columnas) | 17d | 2026-04-28 | 2026-05-21 | 83 |  |  | 2026-03-25 | 2026-04-03 | 7d | 2026-03-30 | 2026-04-08 | 209d |  | Alexandra Arevalo | 136h |  |
| 47 | 1.4.4.14 | ✔Ce (7 columnas) | 7d | 2026-02-04 A | 2026-02-13 A | 101 | 100% |  | 2026-01-12 | 2026-01-20 | 7d | 2026-02-04 | 2026-02-13 |  |  | Alexandra Arevalo | 56h | 56h |
| 48 | 1.4.4.15 | ✔Ce (17 columnas) | 17d | 2026-04-28 | 2026-05-21 | 83 |  |  | 2026-03-25 | 2026-04-03 | 7d | 2026-03-30 | 2026-04-08 | 209d |  | Alexandra Arevalo | 136h |  |
| 49 | 1.4.5 | **TABIQUES DE HORMIGON VISTO** | 177d | 2025-11-10 A | 2026-07-28 |  | 36% | 113.28d | 2025-11-20 | 2026-05-14 | 119d | 2025-11-10 | 2026-05-12 | 111d |  |  | 800h | 288h |
| 50 | 1.4.5.1 | ✔T1 - TABIQUES DE HORMIGON VISTO contencion cantero y cochera PSB - esp: 20cm | 26d | 2025-11-10 A | 2025-12-17 A | 28, 29, 30 | 100% |  | 2025-11-20 | 2025-12-16 | 18d | 2025-11-10 | 2025-12-17 |  |  | Alexandra Arevalo | 208h | 208h |
| 51 | 1.4.5.2 | ✔T1 - TABIQUES DE HORMIGON VISTO cantero PB - esp: 20cm | 10d | 2026-01-19 A | 2026-01-30 A | 80 | 100% |  | 2025-12-31 | 2026-01-14 | 10d | 2026-01-19 | 2026-01-30 |  |  | Alexandra Arevalo | 80h | 80h |
| 52 | 1.4.5.3 | ✔T1 - TABIQUES DE HORMIGON VISTO PA - esp: 20cm - Etapa 1 | 45d | 2026-04-28 | 2026-07-01 | 82 |  |  | 2026-03-25 | 2026-05-14 | 35d | 2026-03-30 | 2026-05-12 | 13.8d | 0d | Alexandra Arevalo | 360h |  |
| 53 | 1.4.5.4 | T1 - TABIQUES DE HORMIGON VISTO PA - esp: 20cm - Etapa 2 | 19d | 2026-07-02 | 2026-07-28 | 52 |  |  |  |  |  |  |  | 111d | 0d | Alexandra Arevalo | 152h |  |

| ID | WBS | Task | Duration | Start | Finish | Predecessors | Complete | Remaining | Baseline start | Baseline finish | Baseline duration | Baseline 1 start | Baseline 1 finish | Total slack | Resources | Work | Actual work |
| --- | --- | --- | --- | --- | --- | --- | --- | --- | --- | --- | --- | --- | --- | --- | --- | --- | --- |
| 54 | 1.4.6 | **VIGAS ESTRUCTURALES + ENCADENADOS HORIZONTALES** | 141d | 2025-12-15 A | 2026-07-08 |  | 99% | 1.85d | 2026-01-15 | 2026-05-29 | 92d | 2025-12-15 | 2026-05-21 | 176d |  | 4024h | 3971.2h |
| 55 | 1.4.6.1 | ✔V1 - 0,18 x 0,30 | 7d | 2025-12-15 A | 2025-12-23 A | 79SS | 100% |  | 2026-01-23 | 2026-02-05 | 10d | 2025-12-15 | 2025-12-23 |  | Alexandra Arevalo | 56h | 56h |
| 56 | 1.4.6.2 | ✔V2 - 0,18 x 0,30 | 7d | 2025-12-15 A | 2025-12-23 A | 79SS | 100% |  | 2026-01-23 | 2026-02-05 | 10d | 2025-12-15 | 2025-12-23 |  | Alexandra Arevalo | 56h | 56h |
| 57 | 1.4.6.3 | ✔V3 - 0,18 x 0,35 | 7d | 2025-12-15 A | 2025-12-23 A | 79SS | 100% |  | 2026-01-23 | 2026-02-05 | 10d | 2025-12-15 | 2025-12-23 |  | Alexandra Arevalo | 56h | 56h |
| 58 | 1.4.6.4 | ✔V4 - 0,18 x 0,40 | 7d | 2025-12-15 A | 2025-12-23 A | 79SS | 100% |  | 2026-01-23 | 2026-02-05 | 10d | 2025-12-15 | 2025-12-23 |  | Alexandra Arevalo | 56h | 56h |
| 59 | 1.4.6.5 | ✔V5 - 0,18 x 0,45 | 7d | 2025-12-15 A | 2025-12-23 A | 79SS | 100% |  | 2026-01-23 | 2026-02-05 | 10d | 2025-12-15 | 2025-12-23 |  | Alexandra Arevalo | 56h | 56h |
| 60 | 1.4.6.6 | ✔V6 - 0,18 x 0,45 | 7d | 2025-12-15 A | 2025-12-23 A | 79SS | 100% |  | 2026-01-23 | 2026-02-05 | 10d | 2025-12-15 | 2025-12-23 |  | Alexandra Arevalo | 56h | 56h |
| 61 | 1.4.6.7 | ✔VL - 0,25 x 0,50 | 7d | 2025-12-15 A | 2025-12-23 A | 79SS | 100% |  | 2026-01-23 | 2026-02-05 | 10d | 2025-12-15 | 2025-12-23 |  | Alexandra Arevalo | 56h | 56h |
| 62 | 1.4.6.8 | ✔Vh - 0,18 x h | 7d | 2025-12-15 A | 2025-12-23 A | 79SS | 100% |  | 2026-01-23 | 2026-02-05 | 10d | 2025-12-15 | 2025-12-23 |  | Alexandra Arevalo | 56h | 56h |
| 63 | 1.4.6.9 | ✔V1 - 0,18 x 0,30 | 50d | 2026-02-02 A | 2026-04-15 A | 51 | 100% |  | 2026-01-15 | 2026-01-28 | 10d | 2026-02-02 | 2026-02-11 |  | Alexandra Arevalo | 400h | 400h |
| 64 | 1.4.6.10 | ✔V2 - 0,18 x 0,30 | 50d | 2026-02-02 A | 2026-04-15 A | 51 | 100% |  | 2026-01-15 | 2026-01-28 | 10d | 2026-02-02 | 2026-02-11 |  | Alexandra Arevalo | 400h | 400h |
| 65 | 1.4.6.11 | ✔V3 - 0,18 x 0,35 | 50d | 2026-02-02 A | 2026-04-15 A | 51 | 100% |  | 2026-01-15 | 2026-01-28 | 10d | 2026-02-02 | 2026-02-11 |  | Alexandra Arevalo | 400h | 400h |
| 66 | 1.4.6.12 | ✔V4 - 0,18 x 0,40 | 50d | 2026-02-02 A | 2026-04-15 A | 51 | 100% |  | 2026-01-15 | 2026-01-28 | 10d | 2026-02-02 | 2026-02-11 |  | Alexandra Arevalo | 400h | 400h |
| 67 | 1.4.6.13 | ✔V3e - 0,18 x 0,40 | 50d | 2026-02-02 A | 2026-04-15 A | 51 | 100% |  | 2026-01-15 | 2026-01-28 | 10d | 2026-02-02 | 2026-02-11 |  | Alexandra Arevalo | 400h | 400h |
| 68 | 1.4.6.14 | ✔VL - 0,25 x 0,50 | 50d | 2026-02-02 A | 2026-04-15 A | 51 | 100% |  | 2026-01-15 | 2026-01-28 | 10d | 2026-02-02 | 2026-02-11 |  | Alexandra Arevalo | 400h | 400h |
| 69 | 1.4.6.15 | ✔VL1 - 0,28 x 0,50 | 50d | 2026-02-02 A | 2026-04-15 A | 51 | 100% |  | 2026-01-15 | 2026-01-28 | 10d | 2026-02-02 | 2026-02-11 |  | Alexandra Arevalo | 400h | 400h |
| 70 | 1.4.6.16 | ✔EH 0.18X0.18 | 36d | 2026-03-20 A | 2026-05-13 A | 51FS+33d | 100% |  | 2026-01-15 | 2026-01-28 | 10d | 2026-02-02 | 2026-02-11 |  | Alexandra Arevalo | 288h | 288h |
| 71 | 1.4.6.17 | ✔EH1 0.18X0.18 | 7d | 2026-03-20 A | 2026-03-31 A | 51FS+33d | 100% |  | 2026-05-15 | 2026-05-29 | 10d | 2026-05-13 | 2026-05-21 |  | Alexandra Arevalo | 56h | 56h |
| 72 | 1.4.6.18 | ✔V1 - 0,18 x 0,30 | 7d | 2026-06-04 A | 2026-06-12 A | 98, 99, 97 | 100% |  | 2026-05-08 | 2026-05-21 | 10d | 2026-04-28 | 2026-05-07 |  | Alexandra Arevalo | 56h | 56h |
| 73 | 1.4.6.19 | ✔V2 - 0,18 x 0,30 | 7d | 2026-06-04 A | 2026-06-12 A | 98, 99, 97 | 100% |  | 2026-05-08 | 2026-05-21 | 10d | 2026-04-28 | 2026-05-07 |  | Alexandra Arevalo | 56h | 56h |
| 74 | 1.4.6.20 | ✔V3 - 0,18 x 0,35 | 7d | 2026-06-04 A | 2026-06-12 A | 98, 99, 97 | 100% |  | 2026-05-08 | 2026-05-21 | 10d | 2026-04-28 | 2026-05-07 |  | Alexandra Arevalo | 56h | 56h |
| 75 | 1.4.6.21 | V4 - 0,18 x 0,40 | 11d | 2026-06-24 A | 2026-07-08 | 52FS-11d | 80% | 2.2d | 2026-05-15 | 2026-05-29 | 10d | 2026-05-13 | 2026-05-21 | 176d | Alexandra Arevalo | 88h | 70.4h |
| 76 | 1.4.6.22 | VL - 0,25 x 0,50 | 11d | 2026-06-24 A | 2026-07-08 | 52FS-11d | 80% | 2.2d | 2026-05-15 | 2026-05-29 | 10d | 2026-05-13 | 2026-05-21 | 176d | Alexandra Arevalo | 88h | 70.4h |
| 77 | 1.4.6.23 | VL1e - 0,25 x 0,30 | 11d | 2026-06-24 A | 2026-07-08 | 52FS-11d | 80% | 2.2d | 2026-05-15 | 2026-05-29 | 10d | 2026-05-13 | 2026-05-21 | 176d | Alexandra Arevalo | 88h | 70.4h |

| ID | WBS | Task | Duration | Start | Finish | Predecessors | Complete | Remaining | Baseline start | Baseline finish | Baseline duration | Baseline 1 start | Baseline 1 finish | Total slack | Constraint | Resources | Work | Actual work |
| --- | --- | --- | --- | --- | --- | --- | --- | --- | --- | --- | --- | --- | --- | --- | --- | --- | --- | --- |
| 78 | 1.4.7 | **LOSAS** | 129d | 2025-12-15 A | 2026-06-22 |  | 99% | 0d | 2025-12-01 | 2026-06-12 | 132d | 2025-12-15 | 2026-06-10 | 0d |  | Alexandra Arevalo | 2432h | 1663.85h |
| 79 | 1.4.7.1 | ✔Losa Maciza 8 cm - Planta Subsuelo | 23d | 2025-12-15 A | 2026-01-16 A | 92 | 100% |  | 2025-12-01 | 2025-12-30 | 20d | 2025-12-15 | 2026-01-16 |  | start no earlier than 2025-12-01 | Alexandra Arevalo | 184h | 184h |
| 80 | 1.4.7.2 | ✔Losa Viguetas 22 cm - Planta Subsuelo | 23d | 2025-12-15 A | 2026-01-16 A | 92 | 100% |  | 2025-12-01 | 2025-12-30 | 20d | 2025-12-15 | 2026-01-16 |  | start no earlier than 2025-12-01 | Alexandra Arevalo | 184h | 184h |
| 81 | 1.4.7.3 | ✔Losa Viguetas 22 cm - Planta Baja | 28d | 2026-03-17 A | 2026-04-27 A | 96 | 100% |  | 2026-02-09 | 2026-03-23 | 30d | 2026-02-26 | 2026-03-27 |  |  | Alexandra Arevalo | 224h | 224h |
| 82 | 1.4.7.4 | ✔Losa Viguetas 17 cm - Planta Baja | 28d | 2026-03-17 A | 2026-04-27 A | 96 | 100% |  | 2026-02-09 | 2026-03-23 | 30d | 2026-02-26 | 2026-03-27 |  |  | Alexandra Arevalo | 224h | 224h |
| 83 | 1.4.7.5 | ✔Losa Maciza 8 cm HORMIGÓN VISTO - Planta Baja | 28d | 2026-03-17 A | 2026-04-27 A | 96 | 100% |  | 2026-02-09 | 2026-03-23 | 30d | 2026-02-26 | 2026-03-27 |  |  | Alexandra Arevalo | 224h | 224h |
| 84 | 1.4.7.6 | ✔Losa Viguetas 17 cm - Planta Alta | 15d | 2026-06-02 A | 2026-06-22 A | 52FS-22d | 100% |  | 2026-05-15 | 2026-06-12 | 20d | 2026-05-13 | 2026-06-10 |  |  | Alexandra Arevalo | 120h | 120h |
| 85 | 1.4.7.7 | ✔Pases electricidad gral ss1 | 5d | 2026-01-12 A | 2026-01-16 A | 80FF | 100% |  | 2025-12-23 | 2025-12-30 | 5d | 2026-01-12 | 2026-01-16 |  |  | Alexandra Arevalo | 40h | 40h |
| 86 | 1.4.7.8 | ✔Pases plomería gral ss1 | 5d | 2026-01-12 A | 2026-01-16 A | 80FF | 100% |  | 2025-12-23 | 2025-12-30 | 5d | 2026-01-12 | 2026-01-16 |  |  | Alexandra Arevalo | 40h | 40h |
| 87 | 1.4.7.9 | ✔Pases electricidad gral pb | 5d | 2026-04-21 A | 2026-04-27 A | 82FF | 100% |  | 2026-03-17 | 2026-03-23 | 5d | 2026-03-20 | 2026-03-27 |  |  | Alexandra Arevalo | 40h | 40h |
| 88 | 1.4.7.10 | ✔Pases plomería gral pb | 5d | 2026-04-21 A | 2026-04-27 A | 82FF | 100% |  | 2026-03-17 | 2026-03-23 | 5d | 2026-03-20 | 2026-03-27 |  |  | Alexandra Arevalo | 40h | 40h |
| 89 | 1.4.7.11 | ✔Pases electricidad gral pa | 5d | 2026-06-16 A | 2026-06-22 A | 84FF | 100% |  | 2026-06-08 | 2026-06-12 | 5d | 2026-06-04 | 2026-06-10 |  |  | Alexandra Arevalo | 40h | 40h |
| 90 | 1.4.7.12 | ✔Pases plomería gral pa | 5d | 2026-06-16 A | 2026-06-22 A | 84FF | 100% |  | 2026-06-08 | 2026-06-12 | 5d | 2026-06-04 | 2026-06-10 |  |  | Alexandra Arevalo | 40h | 40h |
| 91 | 1.4.8 | **MAMPOSTERIA** | 126d | 2025-11-21 A | 2026-05-27 A |  | 100% |  | 2025-12-02 | 2026-05-07 | 106d | 2025-11-21 | 2026-04-27 |  |  |  | 1528h | 1528h |
| 92 | 1.4.8.1 | XMAMP. LADRILLO CERAMICO HUECO PORTANTE 12x18x33 | 20d | 2025-11-21 A | 2025-12-19 A | 102 | 100% |  | 2025-12-02 | 2025-12-23 | 15d | 2025-11-21 | 2025-12-19 |  |  | Alexandra Arevalo | 160h | 160h |
| 93 | 1.4.8.2 | ✔MAMP. LADRILLO CERAMICO HUECO PORTANTE 18x18x33 | 20d | 2025-11-21 A | 2025-12-19 A | 102 | 100% |  | 2025-12-02 | 2025-12-23 | 15d | 2025-11-21 | 2025-12-19 |  |  | Alexandra Arevalo | 160h | 160h |
| 94 | 1.4.8.3 | ✔MAMP. LADRILLO CERAMICO HUECO PORTANTE 8x18x33 | 35d | 2026-03-06 A | 2026-04-27 A | 83FF | 100% |  | 2026-01-12 | 2026-02-06 | 20d | 2026-02-04 | 2026-02-25 |  |  | Alexandra Arevalo | 280h | 280h |
| 95 | 1.4.8.4 | ✔MAMP. LADRILLO CERAMICO HUECO PORTANTE 12x18x33 | 28d | 2026-02-04 A | 2026-03-16 A | 101 | 100% |  | 2026-01-12 | 2026-02-06 | 20d | 2026-02-04 | 2026-02-25 |  |  | Alexandra Arevalo | 224h | 224h |
| 96 | 1.4.8.5 | ✔MAMP. LADRILLO CERAMICO HUECO PORTANTE 18x18x33 | 28d | 2026-02-04 A | 2026-03-16 A | 101 | 100% |  | 2026-01-12 | 2026-02-06 | 20d | 2026-02-04 | 2026-02-25 |  |  | Alexandra Arevalo | 224h | 224h |
| 97 | 1.4.8.6 | ✔MAMP. LADRILLO CERAMICO HUECO PORTANTE 8x18x33 | 20d | 2026-04-28 A | 2026-05-27 A | 81 | 100% |  | 2026-03-25 | 2026-05-07 | 30d | 2026-03-30 | 2026-04-27 |  |  | Alexandra Arevalo | 160h | 160h |
| 98 | 1.4.8.7 | ✔MAMP. LADRILLO CERAMICO HUECO PORTANTE 12x18x33 | 20d | 2026-04-28 A | 2026-05-27 A | 81 | 100% |  | 2026-03-25 | 2026-05-07 | 30d | 2026-03-30 | 2026-04-27 |  |  | Alexandra Arevalo | 160h | 160h |
| 99 | 1.4.8.8 | ✔MAMP. LADRILLO CERAMICO HUECO PORTANTE 18x18x33 | 20d | 2026-04-28 A | 2026-05-27 A | 81 | 100% |  | 2026-03-25 | 2026-05-07 | 30d | 2026-03-30 | 2026-04-27 |  |  | Alexandra Arevalo | 160h | 160h |
| 100 | 1.4.9 | **AISLACIÓN MUROS** | 57d | 2025-11-17 A | 2026-02-09 A |  | 100% |  | 2025-11-27 | 2026-01-22 | 38d | 2025-11-17 | 2026-02-09 |  |  |  | 112h | 112h |
| 101 | 1.4.9.1 | ✔CAPA AISLADORA HORIZONTAL | 3d | 2026-01-30 A | 2026-02-03 A | 26 | 100% |  | 2026-01-07 | 2026-01-09 | 3d | 2026-01-30 | 2026-02-03 |  |  | Alexandra Arevalo | 24h | 24h |
| 102 | 1.4.9.2 | ✔CAPA AISLADORA HORIZONTAL | 3d | 2025-11-17 A | 2025-11-20 A | 25 | 100% |  | 2025-11-27 | 2025-12-01 | 3d | 2025-11-17 | 2025-11-20 |  |  | Alexandra Arevalo | 24h | 24h |
| 103 | 1.4.9.3 | ✔CAPA AISLADORA VERTICAL | 8d | 2026-01-29 A | 2026-02-09 A | 119, 121, 120 | 100% |  | 2026-01-16 | 2026-01-22 | 5d | 2026-01-29 | 2026-02-09 |  |  | Alexandra Arevalo | 64h | 64h |

| ID | WBS | Task | Duration | Start | Finish | Predecessors | Complete | Remaining | Baseline start | Baseline finish | Baseline duration | Baseline 1 start | Baseline 1 finish | Total slack | Free slack | Constraint | Resources | Work | Actual work |
| --- | --- | --- | --- | --- | --- | --- | --- | --- | --- | --- | --- | --- | --- | --- | --- | --- | --- | --- | --- |
| 104 | 1.4.10 | **CONTRAPISO** | 73d | 2025-10-28 A | 2026-02-12 A |  | 100% |  | 2026-01-12 | 2026-10-16 | 192d | 2026-02-04 | 2026-08-19 |  |  |  |  | 168h | 168h |
| 105 | 1.4.10.1 | ✔HORMIGON P/ CONTRAPISO: INT: e= 10cm | 6d | 2026-02-04 A | 2026-02-12 A | 101, 102 | 100% |  | 2026-01-12 | 2026-01-16 | 5d | 2026-02-04 | 2026-02-11 |  |  |  | Alexandra Arevalo | 48h | 48h |
| 106 | 1.4.10.2 | ✔HORMIGON P/ CONTRAPISO: EXT sub y planta baja: e= 10cm | 15d | 2025-10-28 A | 2025-11-17 A |  | 100% |  | 2026-09-18 | 2026-10-16 | 20d | 2026-07-22 | 2026-08-19 |  |  | finish no earlier than 2025-11-17 | Alexandra Arevalo | 120h | 120h |
| 107 | 1.4.11 | **CARPETA DE NIVELACIÓN** | 38d | 2026-07-29 | 2026-09-21 |  |  |  | 2026-08-19 | 2026-11-12 | 61d | 2026-06-19 | 2026-07-01 | 101d |  |  |  | 264h |  |
| 108 | 1.4.11.1 | CARPETA DE NIVELACIÓN: ESP: 4 CM - INTERIOR PSS | 7d | 2026-09-11 | 2026-09-21 | 250 |  |  | 2026-11-04 | 2026-11-12 | 7d | 2026-06-19 | 2026-06-29 | 118d | 0d |  | Alexandra Arevalo | 56h |  |
| 109 | 1.4.11.2 | CARPETA DE NIVELACIÓN: ESP: 4 CM - INTERIOR PB | 7d | 2026-09-11 | 2026-09-21 | 250 |  |  | 2026-11-04 | 2026-11-12 | 7d | 2026-06-19 | 2026-06-29 | 125d |  |  | Alexandra Arevalo | 56h |  |
| 110 | 1.4.11.3 | CARPETA DE NIVELACIÓN: ESP: 4 CM - EXTERIOR PB | 7d | 2026-09-11 | 2026-09-21 | 250 |  |  | 2026-11-04 | 2026-11-12 | 7d | 2026-06-19 | 2026-06-29 | 125d |  |  | Alexandra Arevalo | 56h |  |
| 111 | 1.4.11.4 | CARPETA DE NIVELACIÓN: ESP: 4 CM - INTERIOR PA | 7d | 2026-09-11 | 2026-09-21 | 250 |  |  | 2026-11-04 | 2026-11-12 | 7d | 2026-06-19 | 2026-06-29 | 70d | 0d |  | Alexandra Arevalo | 56h |  |
| 112 | 1.4.11.5 | CARPETA DE NIVELACIÓN SOBRE CARGA CUBIERTA | 5d | 2026-07-29 | 2026-08-04 | 116 |  |  | 2026-08-19 | 2026-08-27 | 7d | 2026-06-25 | 2026-07-01 | 111d | 0d |  | Alexandra Arevalo | 40h |  |
| 113 | 1.4.12 | **CUBIERTA** | 135d | 2026-01-29 A | 2026-08-13 |  | 31% | 92.57d | 2026-06-15 | 2026-09-07 | 59d | 2026-06-11 | 2026-07-13 | 151d |  |  |  | 280h | 88h |
| 114 | 1.4.12.1 | Tanque y parapetos | 7d | 2026-07-08 | 2026-07-17 | 84FS+11d |  |  | 2026-06-15 | 2026-06-23 | 7d | 2026-06-11 | 2026-06-19 | 170d |  |  | Alexandra Arevalo | 56h |  |
| 115 | 1.4.12.2 | ✔Cubierta común sobre Losa - Hormigón de pendiente 10cm | 11d | 2026-01-29 A | 2026-02-12 A |  | 100% |  |  |  |  |  |  |  |  | finish no earlier than 2026-02-12 | Alexandra Arevalo | 88h | 88h |
| 116 | 1.4.12.3 | Cubierta común sobre Losa - Hormigón de pendiente 10cm | 10d | 2026-07-15 | 2026-07-28 | 53FF |  |  | 2026-06-15 | 2026-06-26 | 10d | 2026-06-11 | 2026-06-24 | 111d | 0d |  | Alexandra Arevalo | 80h |  |
| 117 | 1.4.12.4 | IMPERMEABILIZACIÓN EN LOSA Y PARAPETOS* | 7d | 2026-08-05 | 2026-08-13 | 112 |  |  | 2026-08-28 | 2026-09-07 | 7d | 2026-07-02 | 2026-07-13 | 111d | 0d |  | Alexandra Arevalo | 56h |  |
| 118 | 1.4.13 | **REVOQUES EXT + INT** | 147d | 2026-03-12 A | 2026-10-12 |  | 32% | 100.09d | 2025-12-24 | 2026-09-17 | 183d | 2025-12-22 | 2026-08-13 | 110d |  |  |  | 3384h | 1080h |
| 119 | 1.4.13.1 | X REVOQUE GRUESO C/ AZOTADO HIDROF. CEMENTICIO EN MAMP. EXTERIOR | 60d | 2026-03-12 A | 2026-06-09 A | 92, 93FS+55d | 100% |  | 2025-12-24 | 2026-01-15 | 15d | 2025-12-22 | 2026-01-28 |  |  |  | Alexandra Arevalo | 480h | 480h |
| 120 | 1.4.13.2 | X REVOQUE GRUESO C/ AZOTADO HIDROF. CEMENTICIO EN MAMP. EXTERIOR | 60d | 2026-03-12 A | 2026-06-09 A | 92, 93FS+55d | 100% |  | 2025-12-24 | 2026-01-15 | 15d | 2025-12-22 | 2026-01-28 |  |  |  | Alexandra Arevalo | 480h | 480h |
| 121 | 1.4.13.3 | REVOQUE GRUESO C/ AZOTADO HIDROF. CEMENTICIO EN MAMP. INTERIOR | 60d | 2026-05-11 | 2026-08-04 | 92, 93FS+94d |  |  | 2025-12-24 | 2026-01-15 | 15d | 2025-12-22 | 2026-01-28 | 158d |  |  | Alexandra Arevalo | 480h |  |
| 122 | 1.4.13.4 | X REVOQUE FINO EXTERIOR | 15d | 2026-07-20 A | 2026-08-07 A | 111 | 100% |  | 2026-08-28 | 2026-09-17 | 15d | 2026-06-30 | 2026-07-21 |  |  |  | Alexandra Arevalo | 120h | 120h |
| 123 | 1.4.13.5 | REVOQUE GRUESO C/ AZOTADO HIDROF. CEMENTICIO EN MAMP. EXTERIOR | 34d | 2026-06-17 | 2026-08-04 | 95, 96FS+62d |  |  | 2026-02-09 | 2026-03-02 | 15d | 2026-02-26 | 2026-03-18 | 158d |  |  | Alexandra Arevalo | 272h |  |
| 124 | 1.4.13.6 | REVOQUE GRUESO C/ AZOTADO HIDROF. CEMENTICIO EN MAMP. EXTERIOR | 34d | 2026-06-17 | 2026-08-04 | 95, 96FS+62d |  |  | 2026-02-09 | 2026-03-02 | 15d | 2026-02-26 | 2026-03-18 | 158d |  |  | Alexandra Arevalo | 272h |  |
| 125 | 1.4.13.7 | REVOQUE GRUESO C/ AZOTADO HIDROF. CEMENTICIO EN MAMP. INTERIOR | 34d | 2026-06-17 | 2026-08-04 | 95, 96FS+62d |  |  | 2026-02-09 | 2026-03-02 | 15d | 2026-02-26 | 2026-03-18 | 158d |  |  | Alexandra Arevalo | 272h |  |
| 126 | 1.4.13.8 | REVOQUE FINO EXTERIOR | 15d | 2026-09-22 | 2026-10-12 | 111 |  |  | 2026-08-28 | 2026-09-17 | 15d | 2026-06-30 | 2026-07-21 | 110d |  |  | Alexandra Arevalo | 120h |  |
| 127 | 1.4.13.9 | REVOQUE GRUESO C/ AZOTADO HIDROF. CEMENTICIO EN MAMP. EXTERIOR | 53d | 2026-05-28 | 2026-08-11 | 98, 99 |  |  | 2026-05-08 | 2026-05-29 | 15d | 2026-04-28 | 2026-05-19 | 153d | 0d |  | Alexandra Arevalo | 424h |  |
| 128 | 1.4.13.10 | REVOQUE GRUESO C/ AZOTADO HIDROF. CEMENTICIO EN MAMP. INTERIOR | 53d | 2026-05-28 | 2026-08-11 | 98, 99 |  |  | 2026-05-08 | 2026-05-29 | 15d | 2026-04-28 | 2026-05-19 | 1d | 0d |  | Alexandra Arevalo | 424h |  |
| 129 | 1.4.13.11 | IMPERMEABILIZACIÓN P/ PIEDRAS | 5d | 2026-08-20 | 2026-08-26 | 84FS+40d |  |  | 2026-08-11 | 2026-08-17 | 5d | 2026-08-07 | 2026-08-13 | 123d | 0d |  | Alexandra Arevalo | 40h |  |

Notes:
- 114: Revisar ITEM
- 115: Sobre Losa de SS
- 119: Cancelado
- 120: Cancelado
- 122: Cancelado

| ID | WBS | Task | Duration | Start | Finish | Predecessors | Complete | Remaining | Baseline start | Baseline finish | Baseline duration | Baseline 1 start | Baseline 1 finish | Total slack | Free slack | Constraint | Resources | Work | Actual work | Texto1 |
| --- | --- | --- | --- | --- | --- | --- | --- | --- | --- | --- | --- | --- | --- | --- | --- | --- | --- | --- | --- | --- |
| 130 | 1.4.14 | **ENGROSADO + ENLUCIDO DE YESO** | 15d | 2026-08-14 | 2026-09-04 |  |  |  | 2026-09-08 | 2026-09-28 | 15d | 2026-07-14 | 2026-08-03 | 111d |  |  |  | 360h |  |  |
| 131 | 1.4.14.1 | ENGROSADO + ENLUCIDO YESO | 15d | 2026-08-14 | 2026-09-04 | 117 |  |  | 2026-09-08 | 2026-09-28 | 15d | 2026-07-14 | 2026-08-03 | 111d | 0d |  | Alexandra Arevalo | 120h |  |  |
| 132 | 1.4.14.2 | ENGROSADO + ENLUCIDO YESO | 15d | 2026-08-14 | 2026-09-04 | 117 |  |  | 2026-09-08 | 2026-09-28 | 15d | 2026-07-14 | 2026-08-03 | 136d |  |  | Alexandra Arevalo | 120h |  |  |
| 133 | 1.4.14.3 | ENGROSADO + ENLUCIDO YESO | 15d | 2026-08-14 | 2026-09-04 | 117 |  |  | 2026-09-08 | 2026-09-28 | 15d | 2026-07-14 | 2026-08-03 | 136d |  |  | Alexandra Arevalo | 120h |  |  |
| 134 | 1.4.15 | **CIELORRASO** | 10d | 2026-09-07 | 2026-09-18 |  |  |  | 2026-09-29 | 2026-10-12 | 10d | 2026-08-04 | 2026-08-17 | 111d |  |  |  | 160h |  |  |
| 135 | 1.4.15.1 | C2 - Cielorraso suspendido de placa de durock | 10d | 2026-09-07 | 2026-09-18 | 131 |  |  | 2026-09-29 | 2026-10-12 | 10d | 2026-08-04 | 2026-08-17 | 111d | 0d |  | Alexandra Arevalo | 80h |  |  |
| 136 | 1.4.15.2 | C6 - Cajón de durlock | 10d | 2026-09-07 | 2026-09-18 | 131 |  |  | 2026-09-29 | 2026-10-12 | 10d | 2026-08-04 | 2026-08-17 | 126d |  |  | Alexandra Arevalo | 80h |  |  |
| 137 | 1.4.16 | **ASADOR** | 3d | 2026-07-15 | 2026-07-17 |  |  |  | 2026-02-09 | 2026-02-12 | 3d | 2026-02-26 | 2026-03-02 | 170d |  |  |  | 24h |  |  |
| 138 | 1.4.16.1 | ASADOR | 3d | 2026-07-15 | 2026-07-17 |  |  |  | 2026-02-09 | 2026-02-12 | 3d | 2026-02-26 | 2026-03-02 | 170d |  | start no earlier than 2026-07-15 | Alexandra Arevalo | 24h |  |  |
| 139 | 1.4.17 | **VEREDAS PERIMETRALES** | 71d | 2026-07-01 | 2026-10-09 |  |  |  | 2026-01-19 | 2026-01-23 | 5d | 2026-02-12 | 2026-02-18 | 111d |  |  |  | 40h |  |  |
| 140 | 1.4.17.1 | Definición de Paisajismo | 66d | 2026-07-01 | 2026-10-02 |  |  |  |  |  |  |  |  | 111d | 0d | start no earlier than 2026-07-01 |  |  |  |  |
| 141 | 1.4.17.2 | VEREDAS PERIMETRALES CON CORDÓN - ancho 40cm | 5d | 2026-10-05 | 2026-10-09 | 105FS+66d, 140 |  |  | 2026-01-19 | 2026-01-23 | 5d | 2026-02-12 | 2026-02-18 | 111d |  |  | Alexandra Arevalo | 40h |  |  |
| 142 | 1.4.18 | **COLUMNAS Y VIGAS METÁLICAS** | 123d | 2026-04-01 A | 2026-09-25 |  | 49% | 62.42d | 2026-01-21 | 2026-07-13 | 118d | 2026-02-16 | 2026-07-08 | 121d |  |  |  | 1072h | 528h | revisar division |
| 143 | 1.4.18.1 | ✔Cm1- 2UPN140 (5 columnas) 3,50 mts de largo | 10d | 2026-04-01 A | 2026-04-15 A | 81SS+10d | 100% |  | 2026-01-21 | 2026-01-29 | 7d | 2026-02-16 | 2026-02-24 |  |  |  | Alexandra Arevalo | 80h | 80h |  |
| 144 | 1.4.18.2 | ✔Cm3- 2UPN100 (2 columnas) 3,50 mts de largo | 10d | 2026-04-01 A | 2026-04-15 A | 81SS+10d | 100% |  | 2026-01-21 | 2026-01-26 | 4d | 2026-02-16 | 2026-02-19 |  |  |  | Alexandra Arevalo | 80h | 80h |  |
| 145 | 1.4.18.3 | ✔Cm4- 2UPN200 (2 columnas) 3,5 mts de largo | 4d | 2026-05-22 A | 2026-05-28 A | 43 | 100% |  | 2026-04-06 | 2026-04-09 | 4d | 2026-04-09 | 2026-04-14 |  |  |  | Alexandra Arevalo | 32h | 32h |  |
| 146 | 1.4.18.4 | Viga Met. - IPN300 | 14d | 2026-07-29 | 2026-08-17 | 81, 53 |  |  | 2026-01-21 | 2026-02-09 | 14d | 2026-02-16 | 2026-03-05 | 149d |  |  | Alexandra Arevalo | 112h |  |  |
| 147 | 1.4.18.5 | ✔Viga Met. - IPN300 | 14d | 2026-05-22 A | 2026-06-11 A | 43 | 100% |  | 2026-04-06 | 2026-04-23 | 14d | 2026-04-09 | 2026-04-28 |  |  |  | Alexandra Arevalo | 112h | 112h |  |
| 148 | 1.4.18.6 | Viga Met. - IPN300 + UPN300 | 14d | 2026-07-29 | 2026-08-17 | 81, 53 |  |  | 2026-01-21 | 2026-02-09 | 14d | 2026-02-16 | 2026-03-05 | 149d |  |  | Alexandra Arevalo | 112h |  |  |
| 149 | 1.4.18.7 | ✔Viga Met. - IPN300 + UPN300 | 14d | 2026-05-22 A | 2026-06-11 A | 43 | 100% |  | 2026-04-06 | 2026-04-23 | 14d | 2026-04-09 | 2026-04-28 |  |  |  | Alexandra Arevalo | 112h | 112h |  |
| 150 | 1.4.18.8 | ✔Viga Met. - IPN400 + UPN400 | 14d | 2026-05-22 A | 2026-06-11 A | 43 | 100% |  | 2026-04-06 | 2026-04-23 | 14d | 2026-04-09 | 2026-04-28 |  |  |  | Alexandra Arevalo | 112h | 112h |  |
| 151 | 1.4.18.9 | Escalera con nervio central de IPN 300, con descanso (ver distribucion en plano) (9,3 m de IPN) | 20d | 2026-08-31 | 2026-09-25 | 53FS+22d |  |  | 2026-03-25 | 2026-04-22 | 20d | 2026-03-30 | 2026-04-27 | 121d | 0d |  | Alexandra Arevalo | 160h |  |  |
| 152 | 1.4.18.10 | Escalera con nervio central de IPN 300, con descanso (ver distribucion en plano) (9,3 m de IPN) | 20d | 2026-08-31 | 2026-09-25 | 53FS+22d |  |  | 2026-06-15 | 2026-07-13 | 20d | 2026-06-11 | 2026-07-08 | 121d |  |  | Alexandra Arevalo | 160h |  |  |
| 153 | 1.4.19 | **CUBIERTA METÁLICA** | 21d | 2026-08-11 | 2026-09-09 |  |  |  | 2026-02-09 | 2026-06-15 | 86d | 2026-02-26 | 2026-06-11 | 133d |  |  |  | 336h |  |  |
| 154 | 1.4.19.1 | Cubierta Liviana Metálica - pend. 2% - escur. a canaleta - chapa sinusoidal | 21d | 2026-08-11 | 2026-09-09 | 151SF+8d |  |  | 2026-02-09 | 2026-03-10 | 21d | 2026-02-26 | 2026-03-27 | 133d |  |  | Alexandra Arevalo | 168h |  |  |
| 155 | 1.4.19.2 | Cubierta Liviana Metálica - pend. 15% - escur. a canaleta - chapa sinusoidal (ver planos) | 21d | 2026-08-11 | 2026-09-09 | 151SF+8d |  |  | 2026-05-15 | 2026-06-15 | 21d | 2026-05-13 | 2026-06-11 | 133d |  |  | Alexandra Arevalo | 168h |  |  |

Notes:
- 141: Sin definición de paisaje

| ID | WBS | Task | Duration | Start | Finish | Predecessors | Complete | Remaining | Baseline start | Baseline finish | Baseline duration | Baseline 1 start | Baseline 1 finish | Total slack | Free slack | Constraint | Resources | Work | Actual work |
| --- | --- | --- | --- | --- | --- | --- | --- | --- | --- | --- | --- | --- | --- | --- | --- | --- | --- | --- | --- |
| 156 | 1.4.20 | **CONDUCTOS METÁLICOS** | 3d | 2026-04-23 A | 2026-04-27 A |  | 100% |  | 2026-02-13 | 2026-02-17 | 3d | 2026-03-03 | 2026-03-05 |  |  |  |  | 24h | 24h |
| 157 | 1.4.20.1 | .✔ASADOR PB - conducto descarga 2,30m aprx - 30 diam. | 3d | 2026-04-23 A | 2026-04-27 A | 83FF | 100% |  | 2026-02-13 | 2026-02-17 | 3d | 2026-03-03 | 2026-03-05 |  |  |  | Alexandra Arevalo | 24h | 24h |
| 158 | 1.4.21 | **CERRAMIENTO METÁLICOS** | 4d | 2026-11-26 | 2026-12-01 |  |  |  | 2027-01-11 | 2027-01-14 | 4d | 2026-09-18 | 2026-09-23 | 76d |  |  |  | 32h |  |
| 159 | 1.4.21.1 | Cerramiento en Ventana Toilette (perfiles en vertical separados entre ellos 25 cm) | 4d | 2026-11-26 | 2026-12-01 | 232 |  |  | 2027-01-11 | 2027-01-14 | 4d | 2026-09-18 | 2026-09-23 | 76d |  |  | Alexandra Arevalo | 32h |  |
| 160 | 1.4.22 | **PORTON METALICO COCHERA** | 4d | 2026-12-09 | 2026-12-14 |  |  |  | 2027-01-21 | 2027-01-26 | 4d | 2026-09-30 | 2026-10-05 | 68d |  |  |  | 32h |  |
| 161 | 1.4.22.1 | Portón metálico de la cochera (2,50m x 8,60m) | 4d | 2026-12-09 | 2026-12-14 | 236 |  |  | 2027-01-21 | 2027-01-26 | 4d | 2026-09-30 | 2026-10-05 | 68d |  |  | Alexandra Arevalo | 32h |  |
| 162 | 1.4.23 | **INSTALACIONES PLUVIALES** | 120d | 2026-01-21 | 2026-07-15 |  |  |  | 2025-12-26 | 2026-06-19 | 120d | 2026-01-21 | 2026-07-15 | 172d |  |  |  | 960h |  |
| 163 | 1.4.23.1 | Desagues pluviales (sin zinguería) | 120d | 2026-01-21 | 2026-07-15 | 105SS-10d |  |  | 2025-12-26 | 2026-06-19 | 120d | 2026-01-21 | 2026-07-15 | 172d |  |  | Alexandra Arevalo | 960h |  |
| 164 | 1.4.24 | **INSTALACIONES CLOACALES** | 35d | 2026-06-11 | 2026-07-30 |  |  |  | 2026-05-08 | 2026-06-26 | 35d | 2026-05-13 | 2026-07-01 | 161d |  |  |  | 280h |  |
| 165 | 1.4.24.1 | Instalación de cloacas para un baño en PB y tres baños en PA, pileta de cocina, pileta de lavadero, lavavajilla, lavarropas. | 25d | 2026-06-11 | 2026-07-16 | 83FS+30d |  |  | 2026-05-08 | 2026-06-12 | 25d | 2026-05-13 | 2026-06-17 | 161d | 0d |  | Alexandra Arevalo | 200h |  |
| 166 | 1.4.24.2 | Colocación de 5 cámara de inspección (según detalle técnico) | 5d | 2026-07-17 | 2026-07-23 | 165 |  |  | 2026-06-15 | 2026-06-19 | 5d | 2026-06-18 | 2026-06-24 | 161d | 0d |  | Alexandra Arevalo | 40h |  |
| 167 | 1.4.24.3 | Colocación de 1 cámara séptica (según detalle técnico) | 5d | 2026-07-24 | 2026-07-30 | 166 |  |  | 2026-06-22 | 2026-06-26 | 5d | 2026-06-25 | 2026-07-01 | 161d |  |  | Alexandra Arevalo | 40h |  |
| 168 | 1.4.25 | **INSTALACIONES AGUA** | 141d | 2026-06-11 | 2027-01-04 |  |  |  | 2026-05-08 | 2027-02-15 | 193d | 2026-05-13 | 2026-10-23 | 55d |  |  |  | 296h |  |
| 169 | 1.4.25.1 | Instalación de agua fría y caliente para un baño PB y tres en PA, pileta de cocina, pileta de lavadero, lavavajilla, lavarropas. | 25d | 2026-06-11 | 2026-07-16 | 83FS+30d |  |  | 2026-05-08 | 2026-06-12 | 25d | 2026-05-13 | 2026-06-17 | 166d | 0d |  | Alexandra Arevalo | 200h |  |
| 170 | 1.4.25.2 | Alimentación de agua para válvulas de inodoros desde tanques | 5d | 2026-07-17 | 2026-07-23 | 169 |  |  | 2026-06-15 | 2026-06-19 | 5d | 2026-06-11 | 2026-06-17 | 166d |  |  | Alexandra Arevalo | 40h |  |
| 171 | 1.4.25.3 | Alimentación de agua a tanques y canillas en patio | 5d | 2026-07-17 | 2026-07-23 | 169 |  |  | 2026-06-15 | 2026-06-19 | 5d | 2026-06-11 | 2026-06-17 | 166d |  |  | Alexandra Arevalo | 40h |  |
| 172 | 1.4.25.4 | Instalación de bomba hidroneumática bajo tanque | 2d | 2026-12-31 | 2027-01-04 | 236FS+15d |  |  | 2027-02-12 | 2027-02-15 | 2d | 2026-10-22 | 2026-10-23 | 55d |  |  | Alexandra Arevalo | 16h |  |
| 173 | 1.4.26 | **INSTALACIONES GAS** | 214d | 2026-05-15 A | 2027-03-23 |  | 18% | 176.49d | 2026-03-03 | 2027-05-19 | 303d | 2026-03-19 | 2027-01-14 | 0d |  |  |  | 776h | 136h |
| 174 | 1.4.26.1 | Instalación de gas para anafe, horno, termotanque | 17d | 2026-05-15 A | 2026-06-09 A |  | 100% |  | 2026-03-03 | 2026-03-23 | 15d | 2026-03-19 | 2026-04-10 |  |  | start no earlier than 2026-05-15 | Alexandra Arevalo | 136h | 136h |
| 175 | 1.4.26.2 | Factibilidad de gas y plano aprobación de cañerías | 33d | 2026-06-10 | 2026-07-27 | 174 |  |  | 2026-03-25 | 2026-04-15 | 15d | 2026-04-13 | 2026-05-04 | 70d | 0d |  | Alexandra Arevalo | 264h |  |
| 176 | 1.4.26.3 | Segunda inspección parcial de cañerías y ventilaciones | 10d | 2026-07-28 | 2026-08-10 | 175 |  |  | 2026-04-16 | 2026-04-29 | 10d | 2026-05-05 | 2026-05-18 | 70d | 0d |  | Alexandra Arevalo | 80h |  |
| 177 | 1.4.26.4 | Solicitud de servicio domiciliario (no incluye aranceles Ecogas) | 7d | 2027-03-15 | 2027-03-23 | 178 |  |  | 2027-05-11 | 2027-05-19 | 7d | 2027-01-06 | 2027-01-14 | 0d |  |  | Alexandra Arevalo | 56h |  |
| 178 | 1.4.26.5 | Final de gas con artefactos colocados | 15d | 2027-02-22 | 2027-03-12 | 245FS+5d |  |  | 2027-04-20 | 2027-05-10 | 15d | 2026-12-14 | 2027-01-05 | 0d |  |  | Alexandra Arevalo | 120h |  |
| 179 | 1.4.26.6 | Ventilaciones para gas. Conductos y rejillas | 15d | 2026-07-13 | 2026-07-31 | 174FS+22d |  |  | 2026-03-25 | 2026-04-15 | 15d | 2026-04-13 | 2026-05-04 | 160d |  |  | Alexandra Arevalo | 120h |  |

| ID | WBS | Task | Duration | Start | Finish | Predecessors | Complete | Remaining | Baseline start | Baseline finish | Baseline duration | Baseline 1 start | Baseline 1 finish | Total slack | Free slack | Constraint | Resources | Work | Actual work |
| --- | --- | --- | --- | --- | --- | --- | --- | --- | --- | --- | --- | --- | --- | --- | --- | --- | --- | --- | --- |
| 180 | 1.4.27 | **INSTALACION A°A° Y CALEFACCIÓN CENTRALIZADO (POR CONDUCTOS)** | 151d | 2026-07-17 | 2027-02-23 |  |  |  | 2026-06-15 | 2027-04-07 | 203d | 2026-06-18 | 2026-12-15 | 20d |  |  |  | 168h |  |
| 181 | 1.4.27.1 | 1 EQUIPO CON 6 CONDUCTOS | 7d | 2027-02-15 | 2027-02-23 | 226FS+40d |  |  | 2027-03-29 | 2027-04-07 | 7d | 2026-12-04 | 2026-12-15 | 20d |  |  | Alexandra Arevalo | 56h |  |
| 182 | 1.4.27.2 | 2 EQUIPOS CON 4 CONDUCTOS CADA EQUIPO | 7d | 2027-02-15 | 2027-02-23 | 226FS+40d |  |  | 2027-03-29 | 2027-04-07 | 7d | 2026-12-04 | 2026-12-15 | 20d |  |  | Alexandra Arevalo | 56h |  |
| 183 | 1.4.27.3 | KIT INSTALACIÓN AA | 7d | 2026-07-17 | 2026-07-27 | 165 |  |  | 2026-06-15 | 2026-06-23 | 7d | 2026-06-18 | 2026-06-26 | 164d |  |  | Alexandra Arevalo | 56h |  |
| 184 | 1.4.28 | **INSTALACION ELÉCTRICA** | 265d | 2026-01-12 A | 2027-02-02 |  | 46% | 142.89d | 2025-12-23 | 2027-03-16 | 306d | 2026-01-12 | 2026-11-24 | 34d |  |  |  | 816h | 376h |
| 185 | 1.4.28.1 | ✔AMURADO DE CAJAS Y CANALIZACIÓN EN LOSA O CIELORASO | 5d | 2026-01-12 A | 2026-01-16 A | 79FF | 100% |  | 2025-12-23 | 2025-12-30 | 5d | 2026-01-12 | 2026-01-16 |  |  |  | Alexandra Arevalo | 40h | 40h |
| 186 | 1.4.28.2 | ✔AMURADO DE CAJAS Y CANALIZACIÓN EN LOSA O CIELORASO | 5d | 2026-04-21 A | 2026-04-27 A | 81FF | 100% |  | 2026-03-17 | 2026-03-23 | 5d | 2026-03-20 | 2026-03-27 |  |  |  | Alexandra Arevalo | 40h | 40h |
| 187 | 1.4.28.3 | ✔AMURADO DE CAJAS Y CANALIZACIÓN EN LOSA O CIELORASO | 5d | 2026-06-16 A | 2026-06-22 A | 84FF | 100% |  | 2026-06-08 | 2026-06-12 | 5d | 2026-06-04 | 2026-06-10 |  |  |  | Alexandra Arevalo | 40h | 40h |
| 188 | 1.4.28.4 | ✔AMURADO DE CAJAS Y CANALIZACIÓN EN MUROS | 15d | 2026-03-19 A | 2026-04-10 A | 119, 120 | 100% |  | 2026-01-16 | 2026-02-05 | 15d | 2026-01-29 | 2026-02-19 |  |  |  | Alexandra Arevalo | 120h | 120h |
| 189 | 1.4.28.5 | ✔AMURADO DE CAJAS Y CANALIZACIÓN EN MUROS | 15d | 2026-06-01 A | 2026-06-19 A |  | 100% |  | 2026-03-03 | 2026-03-23 | 15d | 2026-03-19 | 2026-04-10 |  |  | start no earlier than 2026-06-01 | Alexandra Arevalo | 120h | 120h |
| 190 | 1.4.28.6 | AMURADO DE CAJAS Y CANALIZACIÓN EN MUROS | 15d | 2026-07-01 | 2026-07-22 | 127FS-29d |  |  | 2026-09-18 | 2026-10-08 | 15d | 2026-08-14 | 2026-09-04 | 167d |  |  | Alexandra Arevalo | 120h |  |
| 191 | 1.4.28.7 | ✔AMURADO DE TABLEROS SECCIONALES | 2d | 2026-05-20 A | 2026-05-21 A | 190FS-44d | 100% |  | 2026-10-09 | 2026-10-12 | 2d | 2026-09-07 | 2026-09-08 |  |  |  | Alexandra Arevalo | 16h | 16h |
| 192 | 1.4.28.8 | CABLEADO GENERAL 220V | 15d | 2026-12-16 | 2027-01-07 | 236FS+5d |  |  | 2027-01-28 | 2027-02-18 | 15d | 2026-10-07 | 2026-10-28 | 52d |  |  | Alexandra Arevalo | 120h |  |
| 193 | 1.4.28.9 | GUIAS TESTIGOS DE SEÑALES DÉBILES | 10d | 2026-12-09 | 2026-12-22 | 236 |  |  | 2027-01-21 | 2027-02-03 | 10d | 2026-09-30 | 2026-10-14 | 62d |  |  | Alexandra Arevalo | 80h |  |
| 194 | 1.4.28.10 | ARMADO DE INTERRUPTORES Y TOMAS | 10d | 2027-01-15 | 2027-01-28 | 224FS+20d |  |  | 2027-02-26 | 2027-03-11 | 10d | 2026-11-05 | 2026-11-19 | 34d | 0d |  | Alexandra Arevalo | 80h |  |
| 195 | 1.4.28.11 | ARMADO DEL TABLERO GENERAL | 3d | 2027-01-29 | 2027-02-02 | 194 |  |  | 2027-03-12 | 2027-03-16 | 3d | 2026-11-20 | 2026-11-24 | 34d |  |  | Alexandra Arevalo | 24h |  |
| 196 | 1.4.28.12 | ARMADO DEL PILAR Y TABLERO DE OBRA TRIFÁSICO | 2d | 2027-01-29 | 2027-02-01 | 194 |  |  | 2027-03-12 | 2027-03-15 | 2d | 2026-11-20 | 2026-11-23 | 35d |  |  | Alexandra Arevalo | 16h |  |
| 197 | 1.4.29 | **PISOS INTERIORES** | 30d | 2026-09-22 | 2026-11-03 |  |  |  | 2026-11-25 | 2027-01-08 | 30d | 2026-07-10 | 2026-08-21 | 70d |  |  |  | 960h |  |
| 198 | 1.4.29.1 | S1 - COCINA-LIVING-COMEDOR-PASILLO-DESPENSA (Porcelanato Simil Madera 60x120) | 30d | 2026-09-22 | 2026-11-03 | 111 |  |  | 2026-11-25 | 2027-01-08 | 30d | 2026-07-10 | 2026-08-21 | 70d | 0d |  | Alexandra Arevalo | 240h |  |
| 199 | 1.4.29.2 | S3 - LAVADERO Y TOILETTE (Porcelanato de 60x120 - a definir) | 30d | 2026-09-22 | 2026-11-03 | 111 |  |  | 2026-11-25 | 2027-01-08 | 30d | 2026-07-10 | 2026-08-21 | 95d |  |  | Alexandra Arevalo | 240h |  |
| 200 | 1.4.29.3 | S1 - DORMITORIOS-VESTIDOR-PASILLOS-BALCONES (Porcelanato Simil Madera 60x120) | 30d | 2026-09-22 | 2026-11-03 | 111 |  |  | 2026-11-25 | 2027-01-08 | 30d | 2026-07-10 | 2026-08-21 | 95d |  |  | Alexandra Arevalo | 240h |  |
| 201 | 1.4.29.4 | S3 - BAÑOS (Porcelanato de 60x120 - a definir) | 30d | 2026-09-22 | 2026-11-03 | 111 |  |  | 2026-11-25 | 2027-01-08 | 30d | 2026-07-10 | 2026-08-21 | 92d | 0d |  | Alexandra Arevalo | 240h |  |
| 202 | 1.4.30 | **REVESTIMIENTOS EXTERIORES** | 83d | 2026-08-27 | 2026-12-24 |  |  |  | 2026-08-19 | 2027-02-05 | 118d | 2026-08-14 | 2026-10-16 | 60d |  |  |  | 800h |  |
| 203 | 1.4.30.1 | R5 - rev. Texturado plástico color gris oscuro tono a definir - ext | 20d | 2026-11-16 | 2026-12-15 | 236SS-7d |  |  | 2026-12-30 | 2027-01-27 | 20d | 2026-09-09 | 2026-10-06 | 60d | 0d |  | Alexandra Arevalo | 160h |  |
| 204 | 1.4.30.2 | R6 - rev. De piedra formato natural de color a definir - ext | 20d | 2026-08-27 | 2026-09-23 | 129 |  |  | 2026-08-19 | 2026-09-15 | 20d | 2026-08-14 | 2026-09-11 | 123d |  |  | Alexandra Arevalo | 160h |  |
| 205 | 1.4.30.3 | R5 - rev. Texturado plástico color gris oscuro tono a definir - ext | 20d | 2026-11-16 | 2026-12-15 | 236SS-7d |  |  | 2026-12-30 | 2027-01-27 | 20d | 2026-09-09 | 2026-10-06 | 67d |  |  | Alexandra Arevalo | 160h |  |
| 206 | 1.4.30.4 | R6 - rev. De piedra formato natural de color a definir - ext | 20d | 2026-08-27 | 2026-09-23 | 129 |  |  | 2026-08-19 | 2026-09-15 | 20d | 2026-08-14 | 2026-09-11 | 123d |  |  | Alexandra Arevalo | 160h |  |
| 207 | 1.4.30.5 | R8 - rev. De ladrillos refractarios - ext | 3d | 2026-11-04 | 2026-11-06 | 201 |  |  | 2027-01-11 | 2027-01-13 | 3d | 2026-08-24 | 2026-08-26 | 92d |  |  | Alexandra Arevalo | 24h |  |
| 208 | 1.4.30.6 | R11 - rev. Tipo wpc simil madera - ext | 5d | 2026-12-16 | 2026-12-22 | 203 |  |  | 2027-01-28 | 2027-02-03 | 5d | 2026-10-07 | 2026-10-14 | 62d |  |  | Alexandra Arevalo | 40h |  |
| 209 | 1.4.30.7 | R10 - rev. De hormigón visto - ext | 7d | 2026-12-16 | 2026-12-24 | 203 |  |  | 2027-01-28 | 2027-02-05 | 7d | 2026-10-07 | 2026-10-16 | 60d |  |  | Alexandra Arevalo | 56h |  |
| 210 | 1.4.30.8 | R11 - rev. Tipo wpc simil madera - ext | 5d | 2026-12-16 | 2026-12-22 | 203 |  |  | 2027-01-28 | 2027-02-03 | 5d | 2026-10-07 | 2026-10-14 | 62d |  |  | Alexandra Arevalo | 40h |  |

| ID | WBS | Task | Duration | Start | Finish | Predecessors | Baseline start | Baseline finish | Baseline duration | Baseline 1 start | Baseline 1 finish | Total slack | Free slack | Resources | Work |
| --- | --- | --- | --- | --- | --- | --- | --- | --- | --- | --- | --- | --- | --- | --- | --- |
| 211 | 1.4.31 | **PISOS EXTERIORES** | 25d | 2026-11-04 | 2026-12-10 |  | 2027-01-11 | 2027-02-15 | 25d | 2026-08-24 | 2026-09-25 | 70d |  |  | 600h |
| 212 | 1.4.31.1 | S8 - INGRESO COCHERA - COCHERA - Adoquines de Hormigón | 25d | 2026-11-04 | 2026-12-10 | 198 | 2027-01-11 | 2027-02-15 | 25d | 2026-08-24 | 2026-09-25 | 70d |  | Alexandra Arevalo | 200h |
| 213 | 1.4.31.2 | S2 - INGRESO PEATONAL - Cemento alisado transitable exterior | 15d | 2026-11-04 | 2026-11-25 | 198 | 2027-01-11 | 2027-01-29 | 15d | 2026-08-24 | 2026-09-11 | 80d |  | Alexandra Arevalo | 120h |
| 214 | 1.4.31.3 | S4 - CANTEROS - Piedra partida | 15d | 2026-11-04 | 2026-11-25 | 198 | 2027-01-11 | 2027-01-29 | 15d | 2026-08-24 | 2026-09-11 | 80d |  | Alexandra Arevalo | 120h |
| 215 | 1.4.31.4 | S5 - GALERIA PILETA Y SOLARIUM - Revestimiento Travertino | 20d | 2026-11-04 | 2026-12-02 | 198 | 2027-01-11 | 2027-02-05 | 20d | 2026-08-24 | 2026-09-18 | 75d |  | Alexandra Arevalo | 160h |
| 216 | 1.4.32 | **ZOCALOS** | 73d | 2026-09-22 | 2027-01-07 |  | 2026-11-13 | 2027-02-18 | 65d | 2026-06-30 | 2026-10-28 | 52d |  |  | 696h |
| 217 | 1.4.32.1 | S8 - INGRESO COCHERA - COCHERA - Adoquines de Hormigón | 15d | 2026-12-16 | 2027-01-07 | 236FS+5d | 2027-01-28 | 2027-02-18 | 15d | 2026-10-07 | 2026-10-28 | 52d |  | Alexandra Arevalo | 120h |
| 218 | 1.4.32.2 | S5 - GALERIA PILETA Y SOLARIUM - Revestimiento Travertino | 5d | 2026-12-16 | 2026-12-22 | 236FS+5d | 2027-01-28 | 2027-02-03 | 5d | 2026-10-07 | 2026-10-14 | 62d |  | Alexandra Arevalo | 40h |
| 219 | 1.4.32.3 | S1 - COCINA-LIVING-COMEDOR-PASILLO-DESPENSA (Porcelanato Simil Madera 60x120) | 15d | 2026-12-16 | 2027-01-07 | 236FS+5d | 2027-01-28 | 2027-02-18 | 15d | 2026-10-07 | 2026-10-28 | 52d |  | Alexandra Arevalo | 120h |
| 220 | 1.4.32.4 | S3 - LAVADERO-TOILETTE-TENDER (Porcelanato de 60x120 - a definir) | 15d | 2026-12-16 | 2027-01-07 | 236FS+5d | 2027-01-28 | 2027-02-18 | 15d | 2026-10-07 | 2026-10-28 | 52d |  | Alexandra Arevalo | 120h |
| 221 | 1.4.32.5 | S1 - DORMITORIOS-VESTIDOR-PASILLOS-BALCONES (Porcelanato Simil Madera 60x120) | 15d | 2026-12-16 | 2027-01-07 | 236FS+5d | 2027-01-28 | 2027-02-18 | 15d | 2026-10-07 | 2026-10-28 | 52d |  | Alexandra Arevalo | 120h |
| 222 | 1.4.32.6 | S3 - BAÑOS (Porcelanato de 60x120 - a definir) | 15d | 2026-12-16 | 2027-01-07 | 236FS+5d | 2027-01-28 | 2027-02-18 | 15d | 2026-10-07 | 2026-10-28 | 52d |  | Alexandra Arevalo | 120h |
| 223 | 1.4.32.7 | Banquinas | 7d | 2026-09-22 | 2026-09-30 | 108 | 2026-11-13 | 2026-11-24 | 7d | 2026-06-30 | 2026-07-08 | 118d |  | Alexandra Arevalo | 56h |
| 224 | 1.4.33 | **PINTURA INTERIOR** | 27d | 2026-11-05 | 2026-12-15 |  | 2026-12-18 | 2027-01-27 | 27d | 2026-08-31 | 2026-10-06 | 27d | 0d |  | 856h |
| 225 | 1.4.33.1 | LATEX INTERIOR PSB | 20d | 2026-11-16 | 2026-12-15 | 236SS-7d | 2026-12-30 | 2027-01-27 | 20d | 2026-09-09 | 2026-10-06 | 34d | 0d | Alexandra Arevalo | 160h |
| 226 | 1.4.33.2 | LATEX INTERIOR PB | 20d | 2026-11-16 | 2026-12-15 | 236SS-7d | 2026-12-30 | 2027-01-27 | 20d | 2026-09-09 | 2026-10-06 | 20d | 0d | Alexandra Arevalo | 160h |
| 227 | 1.4.33.3 | LATEX INTERIOR PA | 20d | 2026-11-16 | 2026-12-15 | 236SS-7d | 2026-12-30 | 2027-01-27 | 20d | 2026-09-09 | 2026-10-06 | 34d |  | Alexandra Arevalo | 160h |
| 228 | 1.4.33.4 | LATEX CIELORRASO | 20d | 2026-11-16 | 2026-12-15 | 236SS-7d | 2026-12-30 | 2027-01-27 | 20d | 2026-09-09 | 2026-10-06 | 34d |  | Alexandra Arevalo | 160h |
| 229 | 1.4.33.5 | LATEX CIELORRASO | 20d | 2026-11-16 | 2026-12-15 | 236SS-7d | 2026-12-30 | 2027-01-27 | 20d | 2026-09-09 | 2026-10-06 | 34d |  | Alexandra Arevalo | 160h |
| 230 | 1.4.33.6 | ENDUIDO INTERIOR | 7d | 2026-11-05 | 2026-11-16 | 225SF | 2026-12-18 | 2026-12-30 | 7d | 2026-08-31 | 2026-09-09 | 54d |  | Alexandra Arevalo | 56h |
| 231 | 1.4.34 | **PINTURA EXTERIOR** | 5d | 2026-11-19 | 2026-11-26 |  | 2027-01-04 | 2027-01-11 | 5d | 2026-09-11 | 2026-09-18 | 76d |  |  | 40h |
| 232 | 1.4.34.1 | ESMALTE SINTÉTICO | 5d | 2026-11-19 | 2026-11-26 | 236SF | 2027-01-04 | 2027-01-11 | 5d | 2026-09-11 | 2026-09-18 | 76d | 0d | Alexandra Arevalo | 40h |
| 233 | 1.4.35 | **ABERTURAS** | 92d | 2026-07-28 | 2026-12-07 |  | 2027-01-11 | 2027-01-20 | 8d | 2026-05-20 | 2026-09-29 | 1d |  |  | 128h |
| 234 | 1.4.35.1 | Puertas de madera | 4d | 2026-12-02 | 2026-12-07 | 235 | 2027-01-11 | 2027-01-14 | 4d | 2026-09-24 | 2026-09-29 | 72d |  | Alexandra Arevalo | 32h |
| 235 | 1.4.35.2 | Puertas de aluminio | 4d | 2026-11-26 | 2026-12-01 | 238 | 2027-01-11 | 2027-01-14 | 4d | 2026-09-18 | 2026-09-23 | 72d | 0d | Alexandra Arevalo | 32h |
| 236 | 1.4.35.3 | Aberturas de aluminio* | 8d | 2026-11-26 | 2026-12-07 | 238 | 2027-01-11 | 2027-01-20 | 8d | 2026-09-18 | 2026-09-29 | 0d |  | Alexandra Arevalo | 64h |
| 237 | 1.4.35.4 | Colocación de premarcos | 5d | 2026-07-28 | 2026-08-03 | 128FS-11d |  |  |  | 2026-05-20 | 2026-05-27 | 1d |  |  |  |
| 238 | 1.4.35.5 | Medición y fabricaciónde premarcos | 3d | 2026-11-23 | 2026-11-25 | 237FS+110ed |  |  |  | 2026-09-15 | 2026-09-17 | 0d |  |  |  |

| ID | WBS | Task | Type | Duration | Start | Finish | Predecessors | Baseline start | Baseline finish | Baseline duration | Baseline 1 start | Baseline 1 finish | Total slack | Free slack | Constraint | Resources | Work |
| --- | --- | --- | --- | --- | --- | --- | --- | --- | --- | --- | --- | --- | --- | --- | --- | --- | --- |
| 239 | 1.4.36 | **VARIOS** |  | 350d? | 2025-09-22 | 2027-02-17 |  | 2025-09-22 | 2027-04-15 | 389d? | 2025-09-22 | 2026-12-09 | 24d |  |  |  | 320h |
| 240 | 1.4.36.1 | PISCINA con desborde infinito* |  | 20d | 2026-12-31 | 2027-01-28 | 236FS+15d | 2027-02-12 | 2027-03-11 | 20d | 2026-10-22 | 2026-11-19 | 37d |  |  | Alexandra Arevalo | 160h |
| 241 | 1.4.36.2 | Pérgola de listones de madera* |  | 1d? | 2025-09-22 | 2025-09-22 |  | 2025-09-22 | 2025-09-22 | 1d? | 2025-09-22 | 2025-09-22 | 373d |  | start no earlier than 2025-09-22 | Alexandra Arevalo | 8h |
| 242 | 1.4.36.3 | Pozo de agua |  | 3d | 2026-12-31 | 2027-01-05 | 236FS+15d | 2027-02-12 | 2027-02-16 | 3d | 2026-10-22 | 2026-10-26 | 54d |  |  | Alexandra Arevalo | 24h |
| 243 | 1.4.36.4 | Instalación de artefactos electricos |  | 3d | 2026-12-23 | 2026-12-28 | 246 | 2027-02-19 | 2027-02-23 | 3d | 2026-10-15 | 2026-10-19 | 59d |  |  | Alexandra Arevalo | 24h |
| 244 | 1.4.36.5 | Instalación de artefactos sanitarios |  | 3d | 2027-02-15 | 2027-02-17 | 245 | 2027-04-13 | 2027-04-15 | 3d | 2026-12-04 | 2026-12-09 | 24d |  |  | Alexandra Arevalo | 24h |
| 245 | 1.4.36.6 | Mesadas colocación |  | 5d | 2027-02-05 | 2027-02-12 | 246FS+30d | 2027-04-06 | 2027-04-12 | 5d | 2026-11-27 | 2026-12-03 | 0d |  |  | Alexandra Arevalo | 40h |
| 246 | 1.4.36.7 | Muebles colocación |  | 5d | 2026-12-16 | 2026-12-22 | 236FS+5d | 2027-02-12 | 2027-02-18 | 5d | 2026-10-07 | 2026-10-14 | 0d |  |  | Alexandra Arevalo | 40h |
| 247 | 1.4.37 | **Instalaciones Calefacción** |  | 43d | 2026-08-11 | 2026-10-09 |  | 2026-10-14 | 2026-11-03 | 15d | 2026-05-19 | 2026-09-08 | 77d |  |  | Alexandra Arevalo | 704h |
| 248 | 1.4.37.1 | Colector |  | 15d | 2026-09-21 | 2026-10-09 | 135 | 2026-10-14 | 2026-11-03 | 15d | 2026-08-19 | 2026-09-08 | 111d |  |  | Alexandra Arevalo | 120h |
| 249 | 1.4.37.2 | Piso radiante planta baja |  | 15d | 2026-08-11 | 2026-09-01 | 176 | 2026-10-14 | 2026-11-03 | 15d | 2026-05-19 | 2026-06-09 | 139d |  |  | Alexandra Arevalo | 120h |
| 250 | 1.4.37.3 | Piso radiante planta alta |  | 15d | 2026-08-21 | 2026-09-10 | 176FS+7d | 2026-10-14 | 2026-11-03 | 15d | 2026-05-29 | 2026-06-18 | 70d | 0d |  | Alexandra Arevalo | 120h |
| 251 | 1.5 | Firma Acta recepcion Provisoria | milestone | 0d | 2027-03-23 | 2027-03-23 | 11 | 2027-05-19 | 2027-05-19 |  | 2027-01-14 | 2027-01-14 | 0d |  |  |  |  |
| 252 | 1.6 | Posventa |  | 12emo | 2027-03-23 | 2028-03-17 | 251 | 2027-05-19 | 2028-05-13 | 12emo | 2027-01-14 | 2028-01-09 | 0d |  |  | Posventa | 8640h |

Notes:
- 240: Sin contratar
- 241: Item a definir
