# Vivienda Venturelli - Bernal

Schedule from MS Project XML, 2026-06-09 to 2029-06-10, status date 2026-06-25, A marks actual dates.

## Calendars

- Calendario Argentino 2024: Mon-Fri 09:00-13:00, 15:00-19:00; Sat-Sun off. Exceptions (off unless hours are given): 2024-12-25 to 2033-12-25 (Navidad, recurring), 2025-01-01 to 2034-01-01 (Año nuevo 2025, recurring), 2025-02-10 to 2034-02-10 (Carnaval 2025, recurring), 2025-03-24 to 2034-03-24 (Día Nacional de la Memoria por la Verdad y la Justicia, recurring), 2025-04-02 to 2034-04-02 (Día del Veterano y de los Caídos en la Guerra de Malvinas, recurring), 2025-05-01 to 2034-05-01 (Día del Trabajador, recurring), 2025-05-25 to 2034-05-25 (Dia de la revolucion de Mayo, recurring), 2025-06-20 to 2034-06-20 (Día de la Bandera, recurring), 2025-07-09 to 2034-07-09 (Día de la Independencia, recurring), 2025-08-18 to 2034-08-18 (Paso a la Inmortalidad del Gral. José de San Martín (17/08), recurring), 2025-10-13 to 2034-10-13 (Día del Respeto a la Diversidad Cultural (12/10), recurring), 2025-11-18 to 2034-11-18 (Día de la Soberanía Nacional (20/11), recurring), 2025-12-08 to 2034-12-08 (Día de la Virgen, recurring).

## Resources

| Resource |
| --- |
| Gabriela Rojo |
| Posventa |
| Proyectos |
| Mariana V |

## Schedule

| ID | WBS | Task | Type | Duration | Start | Finish | Predecessors | Complete | Remaining | Total slack | Free slack | Constraint | Resources | Work | Actual work |
| --- | --- | --- | --- | --- | --- | --- | --- | --- | --- | --- | --- | --- | --- | --- | --- |
| 1 | 1 | **Vivienda Diego Casali** |  | 755d? | 2026-06-09 A | 2029-06-10 |  |  | 753.06d? | 0d |  |  |  | 30696h | 80h |
| 2 | 1.1 | Obra Vivienda Diego Casali Contratada | milestone | 0d | 2026-06-22 | 2026-06-22 | 4SS |  |  | 746d |  | start no earlier than 2026-06-22 | Gabriela Rojo |  |  |
| 3 | 1.2 | Obra Vivienda Diego Casali | milestone | 0d? | 2028-07-26 | 2028-07-26 | 4FF |  |  | 219d |  |  | Gabriela Rojo |  |  |
| 4 | 1.3 | **OBRA VIVIENDA DIEGO CASALI** |  | 536d? | 2026-06-09 A | 2028-07-26 |  |  | 534.1d? | 219d | 0d |  |  | 22056h | 80h |
| 5 | 1.3.1 | **TAREAS PRELIMINARES** |  | 18d | 2026-06-09 A | 2026-07-02 A |  | 100% |  |  |  |  |  | 80h | 80h |
| 6 | 1.3.1.1 | Estudio de Suelos |  | 3d | 2026-06-22 A | 2026-06-24 A |  | 100% |  |  |  | start no earlier than 2026-06-22 | Mariana V | 24h | 24h |
| 7 | 1.3.1.2 | Calculo Estructural |  | 3d | 2026-06-22 A | 2026-06-24 A |  | 100% |  |  |  |  | Mariana V | 24h | 24h |
| 8 | 1.3.1.3 | Cerco Perimetral |  | 2d | 2026-06-22 A | 2026-06-23 A |  | 100% |  |  |  |  | Mariana V | 16h | 16h |
| 9 | 1.3.1.4 | Replanteo de Obra |  | 1d | 2026-07-02 A | 2026-07-02 A | 8FS+6d | 100% |  |  |  | start no earlier than 2026-04-27 | Mariana V | 8h | 8h |
| 10 | 1.3.1.5 | Armado de Pilar con Tablero de Obra |  | 1d | 2026-06-09 A | 2026-06-09 A |  | 100% |  |  |  |  | Mariana V | 8h | 8h |
| 11 | 1.3.2 | **CONFORMACIÓN DE TERRENO** |  | 213d | 2026-07-02 | 2027-05-10 |  |  |  | 0d |  |  |  | 168h |  |
| 12 | 1.3.2.1 | Excavación terreno |  | 11d | 2026-07-02 | 2026-07-17 | 9SS |  |  | 0d |  |  | Mariana V | 88h |  |
| 13 | 1.3.2.2 | Relleno de terreno |  | 5d | 2026-09-09 | 2026-09-15 | 110 |  |  | 0d |  |  | Mariana V | 40h |  |
| 14 | 1.3.2.3 | Relleno de terreno |  | 5d | 2027-05-04 | 2027-05-10 | 111 |  |  | 0d |  |  | Mariana V | 40h |  |
| 15 | 1.3.3 | **ESTRUCTURA Y ALBAÑILERIA** |  | 527d | 2026-06-22 | 2028-07-26 |  |  |  | 19d |  |  |  | 12840h |  |
| 16 | 1.3.3.1 | **Bases Aisladas** |  | 186d | 2026-07-20 | 2027-04-16 |  |  |  | 0d |  |  |  | 976h |  |
| 17 | 1.3.3.1.1 | Base Aislada B2 (100x70x35) - PSS |  | 12d | 2026-07-20 | 2026-08-04 | 12 |  |  | 0d |  |  | Mariana V | 96h |  |
| 18 | 1.3.3.1.2 | Base Aislada B3 (120x70x35) - PSS |  | 12d | 2026-07-20 | 2026-08-04 | 12 |  |  | 715d |  |  | Mariana V | 96h |  |
| 19 | 1.3.3.1.3 | Base Aislada B4 (80x80x35) - PSS |  | 12d | 2026-07-20 | 2026-08-04 | 12 |  |  | 715d |  |  | Mariana V | 96h |  |
| 20 | 1.3.3.1.4 | Base Aislada B5 (150x90x35) - PSS |  | 12d | 2026-07-20 | 2026-08-04 | 12 |  |  | 715d |  |  | Mariana V | 96h |  |
| 21 | 1.3.3.1.5 | Base Aislada B6 (90x90x35) - PSS |  | 12d | 2026-07-20 | 2026-08-04 | 12 |  |  | 715d |  |  | Mariana V | 96h |  |
| 22 | 1.3.3.1.6 | Hormigón de bases |  | 1d | 2026-08-24 | 2026-08-24 | 31 |  |  | 687d | 0d |  | Mariana V | 8h |  |
| 23 | 1.3.3.1.7 | Base Aislada B1 (70x70x35) - PB |  | 10d | 2027-03-19 | 2027-04-05 | 141 |  |  | 0d |  |  | Mariana V | 80h |  |
| 24 | 1.3.3.1.8 | Base Aislada B2 (100x70x35) - PB |  | 10d | 2027-03-19 | 2027-04-05 | 141 |  |  | 550d |  |  | Mariana V | 80h |  |
| 25 | 1.3.3.1.9 | Base Aislada B3 (120x70x35) - PB |  | 10d | 2027-03-19 | 2027-04-05 | 141 |  |  | 550d |  |  | Mariana V | 80h |  |
| 26 | 1.3.3.1.10 | Base Aislada B4 (80x80x35) - PB |  | 10d | 2027-03-19 | 2027-04-05 | 141 |  |  | 550d |  |  | Mariana V | 80h |  |
| 27 | 1.3.3.1.11 | Base Aislada B5 (150x90x35) - PB |  | 10d | 2027-03-19 | 2027-04-05 | 141 |  |  | 550d |  |  | Mariana V | 80h |  |
| 28 | 1.3.3.1.12 | Base Aislada B6 (90x90x35) - PB |  | 10d | 2027-03-19 | 2027-04-05 | 141 |  |  | 550d |  |  | Mariana V | 80h |  |
| 29 | 1.3.3.1.13 | Hormigon de bases |  | 1d | 2027-04-16 | 2027-04-16 | 33 |  |  | 541d |  |  | Mariana V | 8h |  |

| ID | WBS | Task | Duration | Start | Finish | Predecessors | Total slack | Resources | Work |
| --- | --- | --- | --- | --- | --- | --- | --- | --- | --- |
| 30 | 1.3.3.2 | **Vigas de Fundación y Riostra** | 173d | 2026-08-05 | 2027-04-15 |  | 0d |  | 320h |
| 31 | 1.3.3.2.1 | Viga Fundación VF (60x25) - PSS | 12d | 2026-08-05 | 2026-08-21 | 17 | 0d | Mariana V | 96h |
| 32 | 1.3.3.2.2 | Viga Riostra VR (20x25) - PSS | 12d | 2026-08-05 | 2026-08-21 | 17 | 703d | Mariana V | 96h |
| 33 | 1.3.3.2.3 | Viga Fundación VF (60x25) - PB | 8d | 2027-04-06 | 2027-04-15 | 23 | 0d | Mariana V | 64h |
| 34 | 1.3.3.2.4 | Viga Riostra VR (20x25) - PB | 8d | 2027-04-06 | 2027-04-15 | 23 | 542d | Mariana V | 64h |
| 35 | 1.3.3.3 | **Columnas.** | 242d | 2026-11-24 | 2027-11-10 |  | 397d |  | 872h |
| 36 | 1.3.3.3.1 | C1 - (0,18x0,30) - 3 unid - (2,8 m de altura) | 5d | 2026-11-24 | 2026-11-30 | 98FF | 634d | Mariana V | 40h |
| 37 | 1.3.3.3.2 | C2 - (0,18x0,80) - 1 unid - (2,8 m de altura) | 5d | 2026-11-24 | 2026-11-30 | 98FF | 634d | Mariana V | 40h |
| 38 | 1.3.3.3.3 | C3 - (0,18x0,40) - 5 unid - (2,8 m de altura) | 5d | 2026-11-24 | 2026-11-30 | 98FF | 634d | Mariana V | 40h |
| 39 | 1.3.3.3.4 | C4 - (0,18x0,50) - 3 unid - (2,8 m de altura) | 5d | 2026-11-24 | 2026-11-30 | 98FF | 634d | Mariana V | 40h |
| 40 | 1.3.3.3.5 | C5 - (0,18x1,00) - 1 unid - (2,8 m de altura) | 5d | 2026-11-24 | 2026-11-30 | 98FF | 634d | Mariana V | 40h |
| 41 | 1.3.3.3.6 | C6 - (0,18x1,00) - 1 unid - (2,8 m de altura) | 5d | 2026-11-24 | 2026-11-30 | 98FF | 634d | Mariana V | 40h |
| 42 | 1.3.3.3.7 | C7 - (0,18x1,00) - 1 unid - (2,8 m de altura) | 5d | 2026-11-24 | 2026-11-30 | 98FF | 634d | Mariana V | 40h |
| 43 | 1.3.3.3.8 | C1 - (0,18x0,30) - 2 unid - (2,8 m de altura) | 7d | 2027-06-16 | 2027-06-24 | 102FF | 493d | Mariana V | 56h |
| 44 | 1.3.3.3.9 | C2 - (0,18x0,80) - 1 unid - (2,8 m de altura) | 7d | 2027-06-16 | 2027-06-24 | 102FF | 493d | Mariana V | 56h |
| 45 | 1.3.3.3.10 | C3 - (0,18x0,40) - 5 unid - (2,8 m de altura) | 7d | 2027-06-16 | 2027-06-24 | 102FF | 493d | Mariana V | 56h |
| 46 | 1.3.3.3.11 | C4 - (0,18x0,50) - 7 unid - (2,8 m de altura) | 7d | 2027-06-16 | 2027-06-24 | 102FF | 493d | Mariana V | 56h |
| 47 | 1.3.3.3.12 | C5 - (0,18x1,00) - 2 unid - (2,8 m de altura) | 7d | 2027-06-16 | 2027-06-24 | 102FF | 493d | Mariana V | 56h |
| 48 | 1.3.3.3.13 | C6 - (0,18x1,00) - 1 unid - (2,8 m de altura) | 7d | 2027-06-16 | 2027-06-24 | 102FF | 493d | Mariana V | 56h |
| 49 | 1.3.3.3.14 | C8 - (0,18x1,00) - 1 unid - (2,8 m de altura) | 7d | 2027-06-16 | 2027-06-24 | 102FF | 493d | Mariana V | 56h |
| 50 | 1.3.3.3.15 | C2 - (0,18x0,80) - 1 unid - (2,8 m de altura) | 5d | 2027-11-04 | 2027-11-10 | 105FF | 397d | Mariana V | 40h |
| 51 | 1.3.3.3.16 | C3 - (0,18x0,40) - 2 unid - (2,8 m de altura) | 5d | 2027-11-04 | 2027-11-10 | 105FF | 397d | Mariana V | 40h |
| 52 | 1.3.3.3.17 | C4 - (0,18x0,50) - 4 unid - (2,8 m de altura) | 5d | 2027-11-04 | 2027-11-10 | 105FF | 397d | Mariana V | 40h |
| 53 | 1.3.3.3.18 | C5 - (0,18x1,00) - 1 unid - (2,8 m de altura) | 5d | 2027-11-04 | 2027-11-10 | 105FF | 397d | Mariana V | 40h |
| 54 | 1.3.3.3.19 | C6 - (0,18x1,00) - 1 unid - (2,8 m de altura) | 5d | 2027-11-04 | 2027-11-10 | 105FF | 397d | Mariana V | 40h |

| ID | WBS | Task | Duration | Start | Finish | Predecessors | Total slack | Resources | Work |
| --- | --- | --- | --- | --- | --- | --- | --- | --- | --- |
| 55 | 1.3.3.4 | **Encadenado Vertical** | 247d | 2026-11-16 | 2027-11-10 |  | 397d |  | 584h |
| 56 | 1.3.3.4.1 | Ce - (0,18x0,18) - 24 unid - (2,8 m de altura) | 10d | 2026-11-16 | 2026-11-30 | 98FF | 634d | Mariana V | 80h |
| 57 | 1.3.3.4.2 | Ce1 - (0,18x0,18) - 21 unid - (2,8 m de altura) | 10d | 2026-11-16 | 2026-11-30 | 98FF | 634d | Mariana V | 80h |
| 58 | 1.3.3.4.3 | Ce2 - (0,18x0,30) - 7 unid - (2,8 m de altura) | 5d | 2026-11-24 | 2026-11-30 | 98FF | 634d | Mariana V | 40h |
| 59 | 1.3.3.4.4 | Ce - (0,18x0,18) - 7 unid - (2,8 m de altura) | 7d | 2027-06-16 | 2027-06-24 | 102FF | 493d | Mariana V | 56h |
| 60 | 1.3.3.4.5 | Ce1 - (0,18x0,18) - 10 unid - (2,8 m de altura) | 7d | 2027-06-16 | 2027-06-24 | 102FF | 493d | Mariana V | 56h |
| 61 | 1.3.3.4.6 | Ce2 - (0,18x0,30) - 8 unid - (2,8 m de altura) | 7d | 2027-06-16 | 2027-06-24 | 102FF | 493d | Mariana V | 56h |
| 62 | 1.3.3.4.7 | Ce - (0,18x0,18) - 21 unid - (2,8 m de altura) | 10d | 2027-10-28 | 2027-11-10 | 105FF | 397d | Mariana V | 80h |
| 63 | 1.3.3.4.8 | Ce1 - (0,18x0,18) - 21 unid - (2,8 m de altura) | 10d | 2027-10-28 | 2027-11-10 | 105FF | 397d | Mariana V | 80h |
| 64 | 1.3.3.4.9 | Ce2 - (0,18x0,30) - 13 unid - (2,8 m de altura) | 7d | 2027-11-02 | 2027-11-10 | 105FF | 397d | Mariana V | 56h |
| 65 | 1.3.3.5 | **Encadenado Horizontal** | 244d | 2026-12-23 | 2027-12-14 |  | 375d |  | 272h |
| 66 | 1.3.3.5.1 | EH - (0,18x0,15) | 10d | 2026-12-23 | 2027-01-07 | 155SS | 609d | Mariana V | 80h |
| 67 | 1.3.3.5.2 | EH1 - (0,25x0,15) | 10d | 2026-12-23 | 2027-01-07 | 155SS | 609d | Mariana V | 80h |
| 68 | 1.3.3.5.3 | EH - (0,18x0,15) | 7d | 2027-07-26 | 2027-08-03 | 156SS | 466d | Mariana V | 56h |
| 69 | 1.3.3.5.4 | EH - (0,18x0,15) | 7d | 2027-12-03 | 2027-12-14 | 158SS | 375d | Mariana V | 56h |
| 70 | 1.3.3.6 | **Vigas Estructurales** | 267d | 2026-12-23 | 2028-01-14 |  | 352d |  | 2184h |
| 71 | 1.3.3.6.1 | V - (35x40),(35x50),(35x60),(40x40) | 12d | 2026-12-23 | 2027-01-11 | 155SS | 607d | Mariana V | 96h |
| 72 | 1.3.3.6.2 | V - (18x35) | 12d | 2026-12-23 | 2027-01-11 | 155SS | 607d | Mariana V | 96h |
| 73 | 1.3.3.6.3 | V - (35x70),(35x85),(35x100) | 12d | 2026-12-23 | 2027-01-11 | 155SS | 607d | Mariana V | 96h |
| 74 | 1.3.3.6.4 | NB - (15x40)-(20x40) - Hormigón Visto | 12d | 2026-12-23 | 2027-01-11 | 155SS | 607d | Mariana V | 96h |
| 75 | 1.3.3.6.5 | V - (30x35),(35x40),(35x50),(35x60),(40x40),(40x60) | 21d | 2027-07-26 | 2027-08-24 | 156SS | 452d | Mariana V | 168h |
| 76 | 1.3.3.6.6 | V - (18x35),(25x40) | 21d | 2027-07-26 | 2027-08-24 | 156SS | 452d | Mariana V | 168h |
| 77 | 1.3.3.6.7 | V - (18x70),(35x80),(35x70),(35x80) | 21d | 2027-07-26 | 2027-08-24 | 156SS | 452d | Mariana V | 168h |
| 78 | 1.3.3.6.8 | NB - (15x40)-(20x40) | 21d | 2027-07-26 | 2027-08-24 | 156SS | 452d | Mariana V | 168h |
| 79 | 1.3.3.6.9 | NB1 - (20x40) | 21d | 2027-07-26 | 2027-08-24 | 156SS | 452d | Mariana V | 168h |
| 80 | 1.3.3.6.10 | V - (30x35),(30x45),(45x60),(40x40),(40x45),(40x60) | 30d | 2027-12-03 | 2028-01-14 | 158SS | 352d | Mariana V | 240h |
| 81 | 1.3.3.6.11 | V - (18x35),(20x45) | 30d | 2027-12-03 | 2028-01-14 | 158SS | 352d | Mariana V | 240h |
| 82 | 1.3.3.6.12 | V - (40x70) | 30d | 2027-12-03 | 2028-01-14 | 158SS | 352d | Mariana V | 240h |
| 83 | 1.3.3.6.13 | NB - (15x40)-(20x40) | 30d | 2027-12-03 | 2028-01-14 | 158SS | 352d | Mariana V | 240h |

| ID | WBS | Task | Duration | Start | Finish | Predecessors | Total slack | Free slack | Resources | Work |
| --- | --- | --- | --- | --- | --- | --- | --- | --- | --- | --- |
| 84 | 1.3.3.7 | **Losas** | 286d | 2027-01-12 | 2028-02-29 |  | 0d |  |  | 1544h |
| 85 | 1.3.3.7.1 | L1 - Losa Nervurada - 35 cm (cieloraso de yeso o madera) | 30d | 2027-01-12 | 2027-02-23 | 155 | 0d |  | Mariana V | 240h |
| 86 | 1.3.3.7.2 | L2 - Losa Nervurada VISTA - 35 cm | 15d | 2027-02-02 | 2027-02-23 | 85FF | 577d |  | Mariana V | 120h |
| 87 | 1.3.3.7.3 | Losa Maciza - 15 cm | 15d | 2027-02-02 | 2027-02-23 | 85FF | 577d |  | Mariana V | 120h |
| 88 | 1.3.3.7.4 | Hormigón losa SS | 1d | 2027-02-24 | 2027-02-24 | 85 | 541d | 0d | Mariana V | 8h |
| 89 | 1.3.3.7.5 | L1 - Losa Nervurada - 35 cm (cieloraso de yeso o madera) | 35d | 2027-08-16 | 2027-10-04 | 156 | 0d |  | Mariana V | 280h |
| 90 | 1.3.3.7.6 | L2 - Losa Nervurada VISTA - 35 cm | 15d | 2027-09-14 | 2027-10-04 | 89FF | 423d |  | Mariana V | 120h |
| 91 | 1.3.3.7.7 | Losa Maciza - 15 cm | 15d | 2027-09-14 | 2027-10-04 | 89FF | 423d |  | Mariana V | 120h |
| 92 | 1.3.3.7.8 | Hormigón de losa PB | 1d | 2027-10-05 | 2027-10-05 | 89 | 0d |  | Mariana V | 8h |
| 93 | 1.3.3.7.9 | L1 - Losa Nervurada - 35 cm (cieloraso de yeso o madera) | 45d | 2027-12-27 | 2028-02-28 | 158 | 241d | 0d | Mariana V | 360h |
| 94 | 1.3.3.7.10 | L2 - Losa Nervurada VISTA - 35 cm | 10d | 2028-02-15 | 2028-02-28 | 93FF | 322d |  | Mariana V | 80h |
| 95 | 1.3.3.7.11 | Losa Maciza - 15 cm - LOSA TANQUE | 10d | 2028-02-15 | 2028-02-28 | 93FF | 322d |  | Mariana V | 80h |
| 96 | 1.3.3.7.12 | Hormigón de losa PA | 1d | 2028-02-29 | 2028-02-29 | 93 | 241d | 0d | Mariana V | 8h |
| 97 | 1.3.3.8 | **Mampostería** | 306d | 2026-08-24 | 2027-11-10 |  | 0d |  |  | 1080h |
| 98 | 1.3.3.8.1 | Muro Armado con bloque de hormigón (llenado y armado) 19x19x39 | 35d | 2026-10-09 | 2026-11-30 | 124 | 0d |  | Mariana V | 280h |
| 99 | 1.3.3.8.2 | Mamposteria Ladrillo Hueco Portante 12x18x33 | 15d | 2026-10-09 | 2026-10-30 | 124 | 654d |  | Mariana V | 120h |
| 100 | 1.3.3.8.3 | Mamposteria Ladrillo Hueco Portante 18x18x33 | 10d | 2026-10-09 | 2026-10-23 | 124 | 649d | 0d | Mariana V | 80h |
| 101 | 1.3.3.8.4 | Mampostería de fundación/elevación | 5d | 2026-08-24 | 2026-08-28 | 31 | 0d |  | Mariana V | 40h |
| 102 | 1.3.3.8.5 | Mamposteria Ladrillo Hueco Portante 12x18x33 PB | 20d | 2027-05-28 | 2027-06-24 | 126 | 0d |  | Mariana V | 160h |
| 103 | 1.3.3.8.6 | Mamposteria Ladrillo Hueco Portante 18x18x33 PB | 10d | 2027-06-11 | 2027-06-24 | 102FF | 493d |  | Mariana V | 80h |
| 104 | 1.3.3.8.7 | Mampostería de fundación/elevación | 5d | 2027-04-16 | 2027-04-22 | 33 | 0d |  | Mariana V | 40h |
| 105 | 1.3.3.8.8 | Mamposteria Ladrillo Hueco Portante 12x18x33 PA | 25d | 2027-10-06 | 2027-11-10 | 92 | 0d |  | Mariana V | 200h |
| 106 | 1.3.3.8.9 | Mamposteria Ladrillo Hueco Portante 18x18x33 PA | 10d | 2027-10-28 | 2027-11-10 | 105FF | 397d |  | Mariana V | 80h |
| 107 | 1.3.3.9 | **Muro de Contención** | 12d | 2026-10-09 | 2026-10-27 |  | 657d |  |  | 96h |
| 108 | 1.3.3.9.1 | Muro de contencion de bloque de hormigón según detalle muro armado - PSS - Costado del quincho y fogonero* | 12d | 2026-10-09 | 2026-10-27 | 124 | 657d |  | Mariana V | 96h |

| ID | WBS | Task | Duration | Start | Finish | Predecessors | Total slack | Free slack | Resources | Work |
| --- | --- | --- | --- | --- | --- | --- | --- | --- | --- | --- |
| 109 | 1.3.3.10 | **Aislación en Muros y Contrapiso** | 320d | 2026-08-31 | 2027-12-09 |  | 0d |  |  | 584h |
| 110 | 1.3.3.10.1 | Capa Aisladora Horizontal Mampostería | 7d | 2026-08-31 | 2026-09-08 | 101 | 0d |  | Mariana V | 56h |
| 111 | 1.3.3.10.2 | Capa Aisladora Horizontal Mampostería PB | 7d | 2027-04-23 | 2027-05-03 | 104 | 0d |  | Mariana V | 56h |
| 112 | 1.3.3.10.3 | Capa Aisladora Horizontal bajo contrapiso | 5d | 2026-09-16 | 2026-09-22 | 13 | 0d |  | Mariana V | 40h |
| 113 | 1.3.3.10.4 | Capa Aisladora Horizontal bajo contrapiso PB | 5d | 2027-05-11 | 2027-05-17 | 14 | 0d |  | Mariana V | 40h |
| 114 | 1.3.3.10.5 | Capa Aisladora Vertical Mampostería - H: 50cm | 10d | 2026-08-31 | 2026-09-11 | 101 | 688d |  | Mariana V | 80h |
| 115 | 1.3.3.10.6 | Capa Aisladora Vertical Mampostería - H: 50cm PB | 7d | 2027-04-23 | 2027-05-03 | 104 | 530d |  | Mariana V | 56h |
| 116 | 1.3.3.10.7 | Capa Aisladora Vertical Muros revestido de piedra con sika monotop 107 | 5d | 2026-12-23 | 2026-12-30 | 151 | 614d |  | Mariana V | 40h |
| 117 | 1.3.3.10.8 | Capa Aisladora Vertical Muros revestido de piedra con sika monotop 107 PB | 5d | 2027-07-26 | 2027-07-30 | 152 | 468d |  | Mariana V | 40h |
| 118 | 1.3.3.10.9 | Capa Aisladora Vertical Muros revestido de piedra con sika monotop 107 PA | 5d | 2027-12-03 | 2027-12-09 | 153 | 377d |  | Mariana V | 40h |
| 119 | 1.3.3.10.10 | Capa Aisladora Vertical en Muros Armados - Cara exterior (membrana geo) | 10d | 2026-12-09 | 2026-12-22 | 151FF | 612d | 0d | Mariana V | 80h |
| 120 | 1.3.3.10.11 | Capa Aisladora Vertical en Muros Armados - Cara exterior (rafa de ladrillos)** | 7d | 2026-12-23 | 2027-01-04 | 119 | 612d |  | Mariana V | 56h |
| 121 | 1.3.3.11 | **Contrapiso** | 416d | 2026-09-23 | 2028-05-19 |  | 0d |  |  | 376h |
| 122 | 1.3.3.11.1 | Hormigón p/contrapiso Interior Casa e=10cm (PSS) | 7d | 2026-09-23 | 2026-10-01 | 112 | 0d |  | Mariana V | 56h |
| 123 | 1.3.3.11.2 | Hormigón p/contrapiso Exterior Cochera e=10cm (PSS) | 5d | 2026-09-25 | 2026-10-01 | 122FF | 0d |  | Mariana V | 40h |
| 124 | 1.3.3.11.3 | Hormigón p/contrapiso Exterior Vereda Perimetral + Borde Fogonero e=10cm (PSS) | 5d | 2026-10-02 | 2026-10-08 | 123 | 0d |  | Mariana V | 40h |
| 125 | 1.3.3.11.4 | Hormigón p/contrapiso Exterior Solarium e=10cm (PSS) | 5d | 2026-10-02 | 2026-10-08 | 124FF | 669d |  | Mariana V | 40h |
| 126 | 1.3.3.11.5 | Hormigón p/contrapiso Interior Casa e=10cm (PB) | 7d | 2027-05-18 | 2027-05-27 | 113 | 0d |  | Mariana V | 56h |
| 127 | 1.3.3.11.6 | Hormigón p/contrapiso ARMADO Interior Casa e=10cm (PB) | 5d | 2027-05-20 | 2027-05-27 | 126FF | 513d | 0d | Mariana V | 40h |
| 128 | 1.3.3.11.7 | Hormigón p/contrapiso Exterior Ingreso Peatonal e=10cm (PB) | 5d | 2028-05-15 | 2028-05-19 | 163 | 255d | 0d | Mariana V | 40h |
| 129 | 1.3.3.11.8 | Hormigón p/contrapiso Exterior Ingreso Cochera Secundario e=10cm | 8d | 2027-05-17 | 2027-05-27 | 126FF | 513d |  | Mariana V | 64h |
| 130 | 1.3.3.12 | **Carpeta de Nivelación** | 312d | 2027-03-10 | 2028-06-05 |  | 0d |  |  | 928h |
| 131 | 1.3.3.12.1 | Carpeta de Nivelación Interior Casa e=10cm (PSS) | 12d | 2028-03-10 | 2028-03-28 | 256 | 242d | 0d | Mariana V | 96h |
| 132 | 1.3.3.12.2 | Carpeta de Nivelación Exterior Cochera e=10cm (PSS) | 10d | 2028-03-14 | 2028-03-28 | 131FF | 292d | 0d | Mariana V | 80h |
| 133 | 1.3.3.12.3 | Carpeta de Nivelación Exterior Vereda Perimetral + Borde Fogonero e=10cm (PSS) | 10d | 2028-03-29 | 2028-04-11 | 132 | 292d | 0d | Mariana V | 80h |
| 134 | 1.3.3.12.4 | Carpeta de Nivelación Exterior Solarium e=10cm (PSS) | 10d | 2028-03-29 | 2028-04-11 | 133FF | 292d |  | Mariana V | 80h |
| 135 | 1.3.3.12.5 | Carpeta de Nivelación Interior Casa e=10cm (PB) | 12d | 2028-03-21 | 2028-04-06 | 257 | 285d | 0d | Mariana V | 96h |
| 136 | 1.3.3.12.6 | Carpeta de Nivelación Exterior Ingreso Peatonal e=10cm (PB) | 10d | 2028-05-22 | 2028-06-05 | 128 | 255d |  | Mariana V | 80h |
| 137 | 1.3.3.12.7 | Carpeta de Nivelación Exterior Ingreso Cochera Secundario e=10cm (PB) | 10d | 2028-04-07 | 2028-04-20 | 135 | 285d |  | Mariana V | 80h |
| 138 | 1.3.3.12.8 | Carpeta de Nievelación Interior Casa e=4cm (PA) | 12d | 2028-03-31 | 2028-04-17 | 258 | 280d | 0d | Mariana V | 96h |
| 139 | 1.3.3.12.9 | Carpeta de Nievelación Alero e=4cm (PA) | 5d | 2028-04-18 | 2028-04-24 | 138 | 283d |  | Mariana V | 40h |
| 140 | 1.3.3.12.10 | Carpeta de Nievelación Estar Exterior e=4cm (PA) | 8d | 2028-04-18 | 2028-04-27 | 138 | 280d |  | Mariana V | 64h |
| 141 | 1.3.3.12.11 | Carpeta de Nivelación de Cubierta e= 4 cm | 7d | 2027-03-10 | 2027-03-18 | 144 | 0d |  | Mariana V | 56h |
| 142 | 1.3.3.12.12 | Carpeta de Nivelación de Cubierta e= 4 cm PA | 10d | 2028-03-24 | 2028-04-06 | 145 | 245d | 0d | Mariana V | 80h |

| ID | WBS | Task | Duration | Start | Finish | Predecessors | Total slack | Free slack | Resources | Work |
| --- | --- | --- | --- | --- | --- | --- | --- | --- | --- | --- |
| 143 | 1.3.3.13 | **Cubierta** | 289d | 2027-02-24 | 2028-04-17 |  | 0d |  |  | 328h |
| 144 | 1.3.3.13.1 | Cubierta común sobre Losa - Hormigon de Pendiente (carga) - 10 cm | 7d | 2027-03-01 | 2027-03-09 | 148 | 0d |  | Mariana V | 56h |
| 145 | 1.3.3.13.2 | Cubierta común sobre Losa - Hormigon de Pendiente (carga) - 10 cm PA | 10d | 2028-03-10 | 2028-03-23 | 149 | 245d | 0d | Mariana V | 80h |
| 146 | 1.3.3.13.3 | Impermeabilización en cubierta* (con parapeto-h:20cm) | 7d | 2027-03-19 | 2027-03-30 | 141 | 553d |  | Mariana V | 56h |
| 147 | 1.3.3.13.4 | Impermeabilización en cubierta* (con parapeto-h:20cm) PA | 7d | 2028-04-07 | 2028-04-17 | 142 | 288d |  | Mariana V | 56h |
| 148 | 1.3.3.13.5 | Parapeto SS | 3d | 2027-02-24 | 2027-02-26 | 85 | 0d |  | Mariana V | 24h |
| 149 | 1.3.3.13.6 | Parapeto PA + tanque | 7d | 2028-03-01 | 2028-03-09 | 96 | 245d | 0d | Mariana V | 56h |
| 150 | 1.3.3.14 | **Azotado Hidrófugo + Revoque Grueso exterior** | 252d | 2026-12-01 | 2027-12-02 |  | 0d |  |  | 400h |
| 151 | 1.3.3.14.1 | Revoque c/ azotado hidrof. cementicio en mamp. | 15d | 2026-12-01 | 2026-12-22 | 98 | 0d |  | Mariana V | 120h |
| 152 | 1.3.3.14.2 | Revoque c/ azotado hidrof. cementicio en mamp. | 20d | 2027-06-25 | 2027-07-23 | 102 | 0d |  | Mariana V | 160h |
| 153 | 1.3.3.14.3 | Revoque c/ azotado hidrof. cementicio en mamp. | 15d | 2027-11-11 | 2027-12-02 | 105 | 0d |  | Mariana V | 120h |
| 154 | 1.3.3.15 | **Azotado Cementicio Interior** | 466d | 2026-06-22 | 2028-04-27 |  | 127d |  |  | 576h |
| 155 | 1.3.3.15.1 | Azotado Cementicio Interior | 12d | 2026-12-23 | 2027-01-11 | 151 | 0d |  | Mariana V | 96h |
| 156 | 1.3.3.15.2 | Azotado Cementicio Interior | 15d | 2027-07-26 | 2027-08-13 | 152 | 0d |  | Mariana V | 120h |
| 157 | 1.3.3.15.3 | Azotado Cementicio Cieloraso | 15d | 2026-06-22 | 2026-07-13 |  | 731d |  | Mariana V | 120h |
| 158 | 1.3.3.15.4 | Azotado Cementicio Interior | 15d | 2027-12-03 | 2027-12-24 | 153 | 0d |  | Mariana V | 120h |
| 159 | 1.3.3.15.5 | Azotado Cementicio Cieloraso | 15d | 2028-04-07 | 2028-04-27 | 142 | 246d | 0d | Mariana V | 120h |
| 160 | 1.3.3.16 | **Revoque Fino Exterior** | 20d | 2028-04-28 | 2028-05-29 |  | 246d |  |  | 160h |
| 161 | 1.3.3.16.1 | Revoque Fino Exterior | 3d | 2028-05-24 | 2028-05-29 | 162 | 260d |  | Mariana V | 24h |
| 162 | 1.3.3.16.2 | Revoque Fino Exterior | 7d | 2028-05-15 | 2028-05-23 | 163 | 246d | 0d | Mariana V | 56h |
| 163 | 1.3.3.16.3 | Revoque Fino Exterior | 10d | 2028-04-28 | 2028-05-12 | 159 | 246d | 0d | Mariana V | 80h |
| 164 | 1.3.3.17 | **Engrosado + Enlucido de Yeso** | 270d | 2027-04-05 | 2028-04-26 |  | 281d |  |  | 280h |
| 165 | 1.3.3.17.1 | Engrosado + Enlucido de Yeso | 10d | 2027-04-05 | 2027-04-16 | 88FS+25d | 541d |  | Mariana V | 80h |
| 166 | 1.3.3.17.2 | Engrosado + Enlucido de Yeso | 10d | 2027-11-11 | 2027-11-25 | 92FS+25d | 387d |  | Mariana V | 80h |
| 167 | 1.3.3.17.3 | Engrosado + Enlucido de Yeso | 15d | 2028-04-06 | 2028-04-26 | 96FS+25d | 241d | 0d | Mariana V | 120h |

| ID | WBS | Task | Duration | Start | Finish | Predecessors | Total slack | Free slack | Resources | Work |
| --- | --- | --- | --- | --- | --- | --- | --- | --- | --- | --- |
| 168 | 1.3.3.18 | **Cielorrasos** | 527d | 2026-06-22 | 2028-07-26 |  | 219d |  |  | 1136h |
| 169 | 1.3.3.18.1 | Cielorraso de Placa de Yeso Suspendido (estructura + emplacado) | 5d | 2028-05-05 | 2028-05-11 | 249 | 241d | 0d | Mariana V | 40h |
| 170 | 1.3.3.18.2 | Cielorraso de Madera | 25d | 2028-04-28 | 2028-06-05 | 361 | 219d | 0d | Mariana V | 200h |
| 171 | 1.3.3.18.3 | Cortinero (estructura + emplacado) | 10d | 2028-05-12 | 2028-05-26 | 169 | 241d | 0d | Mariana V | 80h |
| 172 | 1.3.3.18.4 | Cielorraso de Placa de Yeso Suspendido (estructura + emplacado) | 7d | 2028-06-01 | 2028-06-09 | 176FF | 251d |  | Mariana V | 56h |
| 173 | 1.3.3.18.5 | Cielorraso de Madera | 18d | 2028-06-06 | 2028-06-30 | 170 | 219d | 0d | Mariana V | 144h |
| 174 | 1.3.3.18.6 | Cielorraso de Yeso Aplicado | 12d | 2026-06-22 | 2026-07-07 |  | 722d | 0d | Mariana V | 96h |
| 175 | 1.3.3.18.7 | Cielorraso de Lona Camuflada | 5d | 2028-06-13 | 2028-06-19 | 367 | 245d |  | Mariana V | 40h |
| 176 | 1.3.3.18.8 | Cortinero (estructura + emplacado) | 10d | 2028-05-29 | 2028-06-09 | 171 | 241d | 0d | Mariana V | 80h |
| 177 | 1.3.3.18.9 | Cielorraso de Placa de Yeso Suspendido (estructura + emplacado) | 10d | 2028-06-12 | 2028-06-26 | 176 | 241d | 0d | Mariana V | 80h |
| 178 | 1.3.3.18.10 | Cielorraso de Madera | 18d | 2028-07-03 | 2028-07-26 | 173 | 219d |  | Mariana V | 144h |
| 179 | 1.3.3.18.11 | Cielorraso de Yeso Aplicado | 12d | 2026-07-08 | 2026-07-24 | 174 | 722d |  | Mariana V | 96h |
| 180 | 1.3.3.18.12 | Cortinero (estructura + emplacado) | 10d | 2028-06-12 | 2028-06-26 | 177FF | 241d |  | Mariana V | 80h |
| 181 | 1.3.3.19 | **Escaleras** | 262d | 2026-09-18 | 2027-10-05 |  | 422d |  |  |  |
| 182 | 1.3.3.19.1 | Escalera de Hormigon in situ - PSS a PA | 15d | 2027-09-15 | 2027-10-05 | 92FF | 422d |  |  |  |
| 183 | 1.3.3.19.2 | Escalera de Hormigon in situ - PSS a PB | 15d | 2027-02-03 | 2027-02-24 | 88FF | 576d |  |  |  |
| 184 | 1.3.3.19.3 | Escalera Ext. de Hormigon in situ - (Costado Quincho) - PSS a Patio PB | 10d | 2026-09-18 | 2026-10-01 | 123FF | 674d |  |  |  |
| 185 | 1.3.3.19.4 | Escalera Ext. de Hormigon in situ - (Galería a patio solarium)* | 10d | 2027-05-13 | 2027-05-27 | 126FF | 513d |  |  |  |
| 186 | 1.3.3.20 | **Asador** | 10d | 2026-10-26 | 2026-11-06 |  | 649d |  |  | 80h |
| 187 | 1.3.3.20.1 | Asador + horno (3,00 m de largo) | 10d | 2026-10-26 | 2026-11-06 | 100 | 649d |  | Mariana V | 80h |
| 188 | 1.3.3.21 | **Veredas Perimetrales** | 8d | 2027-05-17 | 2027-05-27 |  | 513d |  |  | 64h |
| 189 | 1.3.3.21.1 | Veredas Perimetrales con Cordon - Ancho 40cm* | 8d | 2027-05-17 | 2027-05-27 | 127FF | 513d |  | Mariana V | 64h |
| 190 | 1.3.4 | **HERRERIA** | 331d | 2026-06-22 | 2027-10-15 |  | 415d |  |  | 808h |
| 191 | 1.3.4.1 | **Columnas Metálicas** | 288d | 2026-08-24 | 2027-10-15 |  | 415d |  |  | 424h |
| 192 | 1.3.4.1.1 | CM- 2UPN 100 (1 columna) 2,80 mts de largo | 3d | 2026-08-24 | 2026-08-26 | 31 | 700d |  | Mariana V | 24h |
| 193 | 1.3.4.1.2 | CM1- 2UPN 120 (2 columnas) 2,80 mts de largo | 3d | 2026-08-24 | 2026-08-26 | 31 | 700d |  | Mariana V | 24h |
| 194 | 1.3.4.1.3 | CM- 2UPN 100 (18 columna) 2,80 mts de largo | 10d | 2027-04-16 | 2027-04-29 | 33 | 517d | 0d | Mariana V | 80h |
| 195 | 1.3.4.1.4 | CM1- 2UPN 120 (1 columna) 2,80 mts de largo | 10d | 2027-04-16 | 2027-04-29 | 33 | 532d |  | Mariana V | 80h |
| 196 | 1.3.4.1.5 | CM2- 2UPN 140 (2 columnas) 2,80 mts de largo | 10d | 2027-04-16 | 2027-04-29 | 33 | 532d |  | Mariana V | 80h |
| 197 | 1.3.4.1.6 | CM3- 2UPN 160 (3 columnas) 2,80 mts de largo | 10d | 2027-04-16 | 2027-04-29 | 33 | 532d |  | Mariana V | 80h |
| 198 | 1.3.4.1.7 | CM- 2UPN 100 (6 columna) 2,80 mts de largo | 7d | 2027-10-06 | 2027-10-15 | 92 | 415d |  | Mariana V | 56h |

| ID | WBS | Task | Duration | Start | Finish | Predecessors | Total slack | Free slack | Resources | Work |
| --- | --- | --- | --- | --- | --- | --- | --- | --- | --- | --- |
| 199 | 1.3.4.2 | **Vigas Metálicas** | 156.5d | 2027-01-26 | 2027-09-09 |  | 440.5d |  |  | 160h |
| 200 | 1.3.4.2.1 | IPN 240 - Viga de Borde en Piso D1 Principal | 5d | 2027-01-26 | 2027-02-01 | 85SF+5% | 592d |  | Mariana V | 40h |
| 201 | 1.3.4.2.2 | IPN 240 - Viga de Borde en Losa Dº Principal | 5d | 2027-09-02 | 2027-09-09 | 89SF+5% | 440.5d | 0d | Mariana V | 40h |
| 202 | 1.3.4.2.3 | IPN 160 - Viga entre ventanas de dos alturas (Living Estar) | 5d | 2027-09-02 | 2027-09-09 | 89SF+5% | 440.5d |  | Mariana V | 40h |
| 203 | 1.3.4.2.4 | IPN 140 - Viga de anclaje de escalera | 5d | 2027-09-02 | 2027-09-09 | 89SF+5% | 440.5d |  | Mariana V | 40h |
| 204 | 1.3.4.3 | **Pergola Metálica** | 15d | 2027-04-30 | 2027-05-20 |  | 517d |  |  | 200h |
| 205 | 1.3.4.3.1 | Pergola Metálica de Cochera Secundaria - Perfiles de borde de IPN160 (21 mts de borde) - Correas según el peso del material a colocar. | 15d | 2027-04-30 | 2027-05-20 | 194 | 517d | 0d | Mariana V | 120h |
| 206 | 1.3.4.3.2 | Pergola Metálica de Estar Exterior - Perfiles de borde de IPN240 (30 mts de borde) - 33 mts de IPN160 como correas de la pérgola según detalle. | 10d | 2027-04-30 | 2027-05-13 | 194 | 522d |  | Mariana V | 80h |
| 207 | 1.3.4.4 | **Barandas Metálicas** | 10d | 2026-06-22 | 2026-07-03 |  | 736d |  |  |  |
| 208 | 1.3.4.4.1 | Barandas metálicas y de vidrio (22 mts según 3D) sobre balcon PA* | 10d | 2026-06-22 | 2026-07-03 |  | 736d |  |  |  |
| 209 | 1.3.4.5 | **Conductos Metálicos** | 3d | 2027-02-18 | 2027-02-22 |  | 576d |  |  | 24h |
| 210 | 1.3.4.5.1 | Asador - conducto de ventilacion 3,00m - 30 diam. | 3d | 2027-02-18 | 2027-02-22 | 88FS-5d | 576d | 0d | Mariana V | 24h |
| 211 | 1.3.5 | **INSTALACIONES SANITARIAS** | 463d | 2026-08-25 | 2028-06-28 |  | 239d |  |  | 2096h |
| 212 | 1.3.5.1 | **Instalaciones Pluviales** | 426d | 2026-08-25 | 2028-05-04 |  | 276d |  |  | 432h |
| 213 | 1.3.5.1.1 | Desagues pluviales (sin zinguería) con colocacion de cámaras de inspección SS contrapiso | 7d | 2026-08-25 | 2026-09-02 | 22 | 695d |  | Mariana V | 56h |
| 214 | 1.3.5.1.2 | Desagues pluviales (sin zinguería) con colocacion de cámaras de inspección SS pared | 7d | 2027-03-26 | 2027-04-05 | 88FS+20d | 549d |  | Mariana V | 56h |
| 215 | 1.3.5.1.3 | Desagues pluviales (sin zinguería) con colocacion de cámaras de inspección PB contrapiso | 7d | 2027-04-16 | 2027-04-26 | 33 | 535d |  | Mariana V | 56h |
| 216 | 1.3.5.1.4 | Desagues pluviales (sin zinguería) con colocacion de cámaras de inspección PB pared | 7d | 2027-11-04 | 2027-11-12 | 92FS+20d | 395d |  | Mariana V | 56h |
| 217 | 1.3.5.1.5 | Desagues pluviales (sin zinguería) con colocacion de cámaras de inspección PA contrapiso | 7d | 2028-03-30 | 2028-04-07 | 96FS+20d | 243d | 0d | Mariana V | 56h |
| 218 | 1.3.5.1.6 | Desagues pluviales (sin zinguería) con colocacion de cámaras de inspección PA pared | 7d | 2028-04-10 | 2028-04-18 | 217 | 242d | 0d | Mariana V | 56h |
| 219 | 1.3.5.1.7 | Conexión exterior de pluviales | 12d | 2028-04-19 | 2028-05-04 | 218 | 242d | 0d | Mariana V | 96h |
| 220 | 1.3.5.2 | **Instalaciones Cloacales** | 458d | 2026-08-25 | 2028-06-21 |  | 244d |  |  | 680h |
| 221 | 1.3.5.2.1 | Instalación de cloacas para 2 baños completos en PSS, 1 cocina, 1 pileta de asador; 1 toilete y 1 baño completo con bañera en suite, 1 cocina con isla, pileta de cocina y 1 pileta en lavadero, lavarropas, lavavajilla, heladera y dispenser en PB; 2 baños c | 15d | 2026-08-25 | 2026-09-14 | 22 | 687d |  | Mariana V | 120h |
| 222 | 1.3.5.2.2 | Cloaca en suelo PB | 12d | 2027-04-16 | 2027-05-03 | 33 | 530d |  | Mariana V | 96h |
| 223 | 1.3.5.2.3 | Cloaca en suelo PA | 12d | 2028-03-30 | 2028-04-14 | 96FS+20d | 289d | 0d | Mariana V | 96h |
| 224 | 1.3.5.2.4 | Conexiones exteriores | 15d | 2028-04-20 | 2028-05-10 | 219FS-10d | 243d | 0d | Mariana V | 120h |
| 225 | 1.3.5.2.5 | Desagues de 3 AA Central en PSS, 6 AA Central en PB y 6 AA Central en PA | 3d | 2028-04-12 | 2028-04-14 | 223FF | 289d |  | Mariana V | 24h |
| 226 | 1.3.5.2.6 | Colocación de cámaras de inspección (según detalle técnico) | 3d | 2028-05-11 | 2028-05-15 | 224 | 244d | 0d | Mariana V | 24h |
| 227 | 1.3.5.2.7 | Instalación de 2 camaras sépticas (según plano técnico) | 5d | 2028-05-16 | 2028-05-22 | 226 | 244d | 0d | Mariana V | 40h |
| 228 | 1.3.5.2.8 | Armado de 2 Sangrías desde camara septica (coloc. de caños p/ filtrado) | 20d | 2028-05-23 | 2028-06-21 | 227 | 244d |  | Mariana V | 160h |

| ID | WBS | Task | Duration | Start | Finish | Predecessors | Total slack | Free slack | Resources | Work |
| --- | --- | --- | --- | --- | --- | --- | --- | --- | --- | --- |
| 229 | 1.3.5.3 | **Instalaciones de Agua** | 358d | 2027-01-12 | 2028-06-13 |  | 249d |  |  | 408h |
| 230 | 1.3.5.3.1 | Instalación de agua para 2 baños completos en PSS, 1 cocina, 1 pileta de asador; 1 toilete y 1 baño completo con bañera en suite, 1 cocina con isla, pileta de cocina y 1 pileta en lavadero, lavarropas, lavavajilla, heladera y dispenser en PB; 2 baños comp | 10d | 2027-01-12 | 2027-01-25 | 155 | 590d | 0d | Mariana V | 80h |
| 231 | 1.3.5.3.2 | Agua en PB | 10d | 2027-08-16 | 2027-08-27 | 156 | 436d | 0d | Mariana V | 80h |
| 232 | 1.3.5.3.3 | Agua PA | 10d | 2027-12-27 | 2028-01-07 | 158 | 352d | 0d | Mariana V | 80h |
| 233 | 1.3.5.3.4 | Agua Cubierta previo a pendiente de hormigon | 5d | 2028-03-01 | 2028-03-07 | 96 | 316d |  | Mariana V | 40h |
| 234 | 1.3.5.3.5 | Alimentación de agua para válvulas de inodoros desde tanques | 5d | 2028-01-10 | 2028-01-14 | 232 | 352d |  | Mariana V | 40h |
| 235 | 1.3.5.3.6 | Alimentación de agua a tanques y 6 canillas en patio | 10d | 2027-12-27 | 2028-01-07 | 93SS | 357d |  | Mariana V | 80h |
| 236 | 1.3.5.3.7 | Instalación de bomba hidroneumática bajo tanque | 1d | 2028-06-13 | 2028-06-13 | 367 | 249d |  | Mariana V | 8h |
| 237 | 1.3.5.4 | **Instalaciones de Gas** | 358d | 2027-01-26 | 2028-06-28 |  | 239d |  |  | 272h |
| 238 | 1.3.5.4.1 | Instalación de gas para anafe PSS, anafe y horno, termotanque y caldera en Pb* | 7d | 2027-01-26 | 2027-02-03 | 230 | 590d |  | Mariana V | 56h |
| 239 | 1.3.5.4.2 | Gas PB | 7d | 2027-08-30 | 2027-09-07 | 231 | 436d | 0d | Mariana V | 56h |
| 240 | 1.3.5.4.3 | Gas exterior y casilla | 3d | 2027-09-08 | 2027-09-10 | 239 | 436d | 0d | Mariana V | 24h |
| 241 | 1.3.5.4.4 | Ventilaciones para gas. Conductos y rejillas. | 3d | 2027-09-03 | 2027-09-07 | 239FF | 442d |  | Mariana V | 24h |
| 242 | 1.3.5.4.5 | Factibilidad de gas y plano aprobación de cañerías (se pagan en el momento) | 3d | 2027-09-13 | 2027-09-15 | 240 | 436d |  | Mariana V | 24h |
| 243 | 1.3.5.4.6 | Segunda inspección parcial de cañerías y ventilaciones. | 3d | 2028-06-16 | 2028-06-21 | 245 | 239d | 0d | Mariana V | 24h |
| 244 | 1.3.5.4.7 | Solicitud de servicio domiciliario (no incluye aranceles Ecogas). | 5d | 2028-06-22 | 2028-06-28 | 243 | 239d |  | Mariana V | 40h |
| 245 | 1.3.5.4.8 | Final de gas con artefactos colocados. | 3d | 2028-06-13 | 2028-06-15 | 367 | 0d |  | Mariana V | 24h |
| 246 | 1.3.5.5 | **Instalaciones de Aire Acondicionado** | 358d | 2027-01-12 | 2028-06-13 |  | 249d |  |  | 136h |
| 247 | 1.3.5.5.1 | 3 equipos de AA Split en PSS (Kit de preinstalacion) | 1d | 2027-01-12 | 2027-01-12 | 155 | 606d |  | Mariana V | 8h |
| 248 | 1.3.5.5.2 | 3 equipos de AA Split en PSS | 1d | 2028-06-13 | 2028-06-13 | 367 | 249d |  | Mariana V | 8h |
| 249 | 1.3.5.5.3 | Sistema por conducto (1 equipo) en PSS | 5d | 2028-04-27 | 2028-05-04 | 167 | 241d | 0d | Mariana V | 40h |
| 250 | 1.3.5.5.4 | Sistema por conducto (6 equipos) en PB | 5d | 2028-04-27 | 2028-05-04 | 167 | 276d |  | Mariana V | 40h |
| 251 | 1.3.5.5.5 | Sistema por conducto (6 equipos) en PA | 5d | 2028-04-27 | 2028-05-04 | 167 | 276d |  | Mariana V | 40h |
| 252 | 1.3.5.6 | **Instalación de Calefacción*** | 21d | 2028-03-01 | 2028-03-30 |  | 242d |  |  | 168h |
| 253 | 1.3.5.6.1 | Losa Radiante - 2 Colectores con 1 zona - PSS | 2d | 2028-03-01 | 2028-03-02 | 96 | 242d | 0d | Mariana V | 16h |
| 254 | 1.3.5.6.2 | Losa Radiante - 4 Colectores con 2 zona - PB | 2d | 2028-03-10 | 2028-03-13 | 256 | 280d | 0d | Mariana V | 16h |
| 255 | 1.3.5.6.3 | Losa Radiante - 2 Colectores con 1 zona - PA | 2d | 2028-03-21 | 2028-03-22 | 257 | 280d | 0d | Mariana V | 16h |
| 256 | 1.3.5.6.4 | Piso Radiante - PSS | 5d | 2028-03-03 | 2028-03-09 | 253 | 242d | 0d | Mariana V | 40h |
| 257 | 1.3.5.6.5 | Piso Radiante - PB | 5d | 2028-03-14 | 2028-03-20 | 254 | 280d | 0d | Mariana V | 40h |
| 258 | 1.3.5.6.6 | Piso Radiante - PA | 5d | 2028-03-23 | 2028-03-30 | 255 | 280d | 0d | Mariana V | 40h |

| ID | WBS | Task | Duration | Start | Finish | Predecessors | Total slack | Free slack | Resources | Work |
| --- | --- | --- | --- | --- | --- | --- | --- | --- | --- | --- |
| 259 | 1.3.6 | **INSTALACIONES ELECTRICAS Y SEÑALES DEBILES** | 503d? | 2026-06-22 | 2028-06-22 |  | 243d |  |  | 1216h |
| 260 | 1.3.6.1 | **Canalización, cableado y armado (electricidad)** | 501d? | 2026-06-22 | 2028-06-19 |  | 245d |  |  | 856h |
| 261 | 1.3.6.1.1 | Cableado SS | 10d | 2028-04-28 | 2028-05-11 | 361 | 243d | 0d | Mariana V | 80h |
| 262 | 1.3.6.1.2 | Bocas p/iluminacion techo | 2d | 2027-02-22 | 2027-02-23 | 88FS-3d | 577d |  | Mariana V | 16h |
| 263 | 1.3.6.1.3 | Bocas p/iluminacion pared | 10d | 2027-01-12 | 2027-01-25 | 155 | 597d |  | Mariana V | 80h |
| 264 | 1.3.6.1.4 | Tablero (por T.M y disyuntores) | 3d | 2028-05-12 | 2028-05-16 | 261 | 268d |  | Mariana V | 24h |
| 265 | 1.3.6.1.5 | Borneta puesta a tierra por tablero | 1d? | 2026-06-22 | 2026-06-22 |  | 745d |  | Mariana V | 8h |
| 266 | 1.3.6.1.6 | Instalación de Jabalina | 1d? | 2026-06-22 | 2026-06-22 |  | 745d |  | Mariana V | 8h |
| 267 | 1.3.6.1.7 | Toma individul A.A | 1d? | 2026-06-22 | 2026-06-22 |  | 745d |  | Mariana V | 8h |
| 268 | 1.3.6.1.8 | Termostatos | 1d? | 2026-06-22 | 2026-06-22 |  | 745d |  | Mariana V | 8h |
| 269 | 1.3.6.1.9 | Tiras Led aleros/nichos/espejos/placares/baso alacena mesada, etc | 1d? | 2026-06-22 | 2026-06-22 |  | 745d |  | Mariana V | 8h |
| 270 | 1.3.6.1.10 | Instalación artefactos comunes* | 3d | 2028-06-13 | 2028-06-15 | 367 | 246d | 0d | Mariana V | 24h |
| 271 | 1.3.6.1.11 | Bocas p/iluminacion techo | 3d | 2027-09-30 | 2027-10-04 | 89FS-3d | 423d |  | Mariana V | 24h |
| 272 | 1.3.6.1.12 | Bocas p/iluminacion pared | 12d | 2027-08-16 | 2027-09-01 | 156 | 446d |  | Mariana V | 96h |
| 273 | 1.3.6.1.13 | Cableado PB | 12d | 2028-05-12 | 2028-05-29 | 261 | 244d | 0d | Mariana V | 96h |
| 274 | 1.3.6.1.14 | Bocas p/iluminacion piso | 1d? | 2026-06-22 | 2026-06-22 |  | 745d |  | Mariana V | 8h |
| 275 | 1.3.6.1.15 | Tablero (por T.M y disyuntores) | 3d | 2028-05-30 | 2028-06-01 | 273 | 254d | 0d | Mariana V | 24h |
| 276 | 1.3.6.1.16 | Instalación de Jabalina | 1d? | 2026-06-22 | 2026-06-22 |  | 745d |  | Mariana V | 8h |
| 277 | 1.3.6.1.17 | Toma individul A.A | 1d? | 2026-06-22 | 2026-06-22 |  | 745d |  | Mariana V | 8h |
| 278 | 1.3.6.1.18 | Termostatos | 1d? | 2026-06-22 | 2026-06-22 |  | 745d |  | Mariana V | 8h |
| 279 | 1.3.6.1.19 | Tiras Led aleros/nichos/espejos/placares/baso alacena mesada, etc | 1d? | 2026-06-22 | 2026-06-22 |  | 745d |  | Mariana V | 8h |
| 280 | 1.3.6.1.20 | Instalación artefactos comunes* | 1d? | 2028-06-16 | 2028-06-16 | 270 | 246d |  | Mariana V | 8h |
| 281 | 1.3.6.1.21 | Instalación artefactos rieles grandes | 1d? | 2026-06-22 | 2026-06-22 |  | 745d |  | Mariana V | 8h |
| 282 | 1.3.6.1.22 | Conexión de acometida a Tablero | 3d | 2028-06-02 | 2028-06-06 | 275 | 254d |  | Mariana V | 24h |
| 283 | 1.3.6.1.23 | Bocas p/iluminacion techo | 3d | 2028-02-24 | 2028-02-28 | 93FS-3d | 322d |  | Mariana V | 24h |
| 284 | 1.3.6.1.24 | Bocas p/iluminacion pared | 12d | 2027-12-27 | 2028-01-11 | 158 | 355d |  | Mariana V | 96h |
| 285 | 1.3.6.1.25 | Cableado PA | 12d | 2028-05-30 | 2028-06-14 | 273 | 243d | 0d | Mariana V | 96h |
| 286 | 1.3.6.1.26 | Tablero (por T.M y disyuntores) | 3d | 2028-06-15 | 2028-06-19 | 285 | 245d |  | Mariana V | 24h |
| 287 | 1.3.6.1.27 | Toma individul A.A | 1d? | 2026-06-22 | 2026-06-22 |  | 745d |  | Mariana V | 8h |
| 288 | 1.3.6.1.28 | Termostatos | 1d? | 2026-06-22 | 2026-06-22 |  | 745d |  | Mariana V | 8h |
| 289 | 1.3.6.1.29 | Tiras Led aleros/nichos/espejos/placares/baso alacena mesada, etc* | 1d? | 2026-06-22 | 2026-06-22 |  | 745d |  | Mariana V | 8h |
| 290 | 1.3.6.1.30 | Instalación artefactos comunes* | 1d? | 2028-06-15 | 2028-06-15 | 285 | 247d |  | Mariana V | 8h |

| ID | WBS | Task | Duration | Start | Finish | Predecessors | Total slack | Free slack | Resources | Work |
| --- | --- | --- | --- | --- | --- | --- | --- | --- | --- | --- |
| 291 | 1.3.6.2 | **Instalación y configuración de Alarma (Señales Débiles)*** | 5d | 2028-06-15 | 2028-06-22 |  | 243d |  |  | 200h |
| 292 | 1.3.6.2.1 | Instalación de sensor inalámbrico - PSS | 5d | 2028-06-15 | 2028-06-22 | 285 | 243d |  | Mariana V | 40h |
| 293 | 1.3.6.2.2 | Instalación de sensor inalámbrico - PB | 5d | 2028-06-15 | 2028-06-22 | 285 | 243d |  | Mariana V | 40h |
| 294 | 1.3.6.2.3 | Central de Alarma | 5d | 2028-06-15 | 2028-06-22 | 285 | 243d |  | Mariana V | 40h |
| 295 | 1.3.6.2.4 | Instalación de sensor inalámbrico - PA | 5d | 2028-06-15 | 2028-06-22 | 285 | 243d |  | Mariana V | 40h |
| 296 | 1.3.6.2.5 | Sirena | 5d | 2028-06-15 | 2028-06-22 | 285 | 243d |  | Mariana V | 40h |
| 297 | 1.3.6.3 | **Instalación y configuración de Red de Datos (Señales Débiles)** | 5d | 2028-06-15 | 2028-06-22 |  | 243d |  |  | 160h |
| 298 | 1.3.6.3.1 | Instalación de Acces Point (repetidor) - PSS | 5d | 2028-06-15 | 2028-06-22 | 285 | 243d |  | Mariana V | 40h |
| 299 | 1.3.6.3.2 | Instalación de Acces Point (repetidor) - PB | 5d | 2028-06-15 | 2028-06-22 | 285 | 243d |  | Mariana V | 40h |
| 300 | 1.3.6.3.3 | Instalación de Switch POE (central derivador de datos)* | 5d | 2028-06-15 | 2028-06-22 | 285 | 243d |  | Mariana V | 40h |
| 301 | 1.3.6.3.4 | Instalación de Acces Point (repetidor) - PSS | 5d | 2028-06-15 | 2028-06-22 | 285 | 243d |  | Mariana V | 40h |
| 302 | 1.3.7 | **PISOS Y REVESTIMIENTOS** | 520d? | 2026-06-22 | 2028-07-17 |  | 226d |  |  | 4848h |
| 303 | 1.3.7.1 | **Pisos Interiores** | 486d | 2026-06-22 | 2028-05-29 |  | 260d |  |  | 616h |
| 304 | 1.3.7.1.1 | S11 - Porcelanato Gris - (Cochera/ingreso/cine/gym/dºservicio/quincho) | 20d | 2028-03-29 | 2028-04-25 | 131 | 242d | 0d | Mariana V | 160h |
| 305 | 1.3.7.1.2 | S1 - Porcelanato Gris (interior y exterior de casa) | 30d | 2028-04-12 | 2028-05-24 | 304FS-10d | 242d | 0d | Mariana V | 240h |
| 306 | 1.3.7.1.3 | S4 - Entablonado PVC Simil Madera (estar exterior) | 10d | 2026-06-22 | 2026-07-03 |  | 736d |  | Mariana V | 80h |
| 307 | 1.3.7.1.4 | S1 - Porcelanato Gris (interior de casa) | 5d | 2028-05-04 | 2028-05-10 | 305FS-15d | 250d | 0d | Mariana V | 40h |
| 308 | 1.3.7.1.5 | S3 - Porcelanato Simil Madera (interior de casa) | 12d | 2028-05-11 | 2028-05-29 | 307 | 260d |  | Mariana V | 96h |
| 309 | 1.3.7.2 | **Pisos Exteriores** | 12d | 2026-06-22 | 2026-07-07 |  | 734d |  |  | 400h |
| 310 | 1.3.7.2.1 | S1 - Porcelanato Gris (galeria quincho/fogonero) | 12d | 2026-06-22 | 2026-07-07 |  | 734d |  | Mariana V | 96h |
| 311 | 1.3.7.2.2 | S4 - Entablonado PVC Simil Madera (deck pileta) | 7d | 2026-06-22 | 2026-06-30 |  | 739d |  | Mariana V | 56h |
| 312 | 1.3.7.2.3 | S8 - Adoquines (ingreso cochera) | 7d | 2026-06-22 | 2026-06-30 |  | 739d |  | Mariana V | 56h |
| 313 | 1.3.7.2.4 | S12 - Piedra Bola (patio interior y fogon) | 5d | 2026-06-22 | 2026-06-26 |  | 741d |  | Mariana V | 40h |
| 314 | 1.3.7.2.5 | S2 - Hormigon alisado (Ingreso peatonal/ingreso secundario cochera) | 7d | 2026-06-22 | 2026-06-30 |  | 739d |  | Mariana V | 56h |
| 315 | 1.3.7.2.6 | S4 - Entablonado PVC Simil Madera (terraza balcon) | 7d | 2026-06-22 | 2026-06-30 |  | 739d |  | Mariana V | 56h |
| 316 | 1.3.7.2.7 | S7 - Granza Exterior (terraza balcon) | 5d | 2026-06-22 | 2026-06-26 |  | 741d |  | Mariana V | 40h |

| ID | WBS | Task | Duration | Start | Finish | Predecessors | Total slack | Free slack | Resources | Work |
| --- | --- | --- | --- | --- | --- | --- | --- | --- | --- | --- |
| 317 | 1.3.7.3 | **Zócalos** | 10d | 2028-04-26 | 2028-05-10 |  | 272d |  |  | 216h |
| 318 | 1.3.7.3.1 | Zócalo en Interior PSS - Porcelanato | 7d | 2028-05-02 | 2028-05-10 | 361FF+8d | 272d | 0d | Mariana V | 56h |
| 319 | 1.3.7.3.2 | Zócalo en (Interior PB/interior quincho/exterior galeria/veredas) | 10d | 2028-04-26 | 2028-05-10 | 318FF | 272d |  | Mariana V | 80h |
| 320 | 1.3.7.3.3 | Zócalo en (Interior PA) - Porcelanato Simil Madera | 10d | 2028-04-26 | 2028-05-10 | 318FF | 272d |  | Mariana V | 80h |
| 321 | 1.3.7.4 | **Banquina** | 12d | 2028-03-21 | 2028-04-06 |  | 295d |  |  | 120h |
| 322 | 1.3.7.4.1 | Bajo cocina e isla PSS - H: 0,12cm (6,20 m2) | 5d | 2028-03-21 | 2028-03-28 | 131FF | 302d |  | Mariana V | 40h |
| 323 | 1.3.7.4.2 | Bajo cocina e isla PB - H: 0,12cm (12,30 m2) | 5d | 2028-03-31 | 2028-04-06 | 135FF | 295d |  | Mariana V | 40h |
| 324 | 1.3.7.4.3 | Bajo lavadero PB - H: 0,12cm (3,10 m2) | 5d | 2028-03-31 | 2028-04-06 | 135FF | 295d |  | Mariana V | 40h |
| 325 | 1.3.7.5 | **Revestimientos Interiores** | 56d | 2028-04-26 | 2028-07-17 |  | 226d |  |  | 800h |
| 326 | 1.3.7.5.1 | Porcelanato - Baños y cocina quincho (definir medidas y tipo) | 10d | 2028-04-26 | 2028-05-10 | 304 | 269d | 0d | Mariana V | 80h |
| 327 | 1.3.7.5.2 | Revestimiento Simil Madera | 5d | 2028-04-28 | 2028-05-05 | 361 | 245d | 0d | Mariana V | 40h |
| 328 | 1.3.7.5.3 | Porcelanato - Cocina, baños y lavadero (definir medidas y tipo) | 12d | 2028-05-26 | 2028-06-12 | 305 | 243d | 0d | Mariana V | 96h |
| 329 | 1.3.7.5.4 | Revestimiento Microcemento | 7d | 2028-06-13 | 2028-06-22 | 328 | 243d |  | Mariana V | 56h |
| 330 | 1.3.7.5.5 | Revestimiento Simil Madera | 15d | 2028-05-08 | 2028-05-29 | 327 | 245d | 0d | Mariana V | 120h |
| 331 | 1.3.7.5.6 | Revestimiento Simil Roca Viva | 12d | 2028-06-13 | 2028-06-29 | 367 | 226d | 0d | Mariana V | 96h |
| 332 | 1.3.7.5.7 | Porcelanato - Baños (definir medidas y tipo) | 15d | 2028-05-11 | 2028-06-01 | 307 | 250d | 0d | Mariana V | 120h |
| 333 | 1.3.7.5.8 | Revestimiento Microcemento | 7d | 2028-06-02 | 2028-06-12 | 332 | 250d |  | Mariana V | 56h |
| 334 | 1.3.7.5.9 | Revestimiento Simil Madera | 5d | 2028-05-30 | 2028-06-05 | 330 | 245d | 0d | Mariana V | 40h |
| 335 | 1.3.7.5.10 | Revestimiento Simil Roca Viva | 12d | 2028-06-30 | 2028-07-17 | 331 | 226d |  | Mariana V | 96h |
| 336 | 1.3.7.6 | **Revestimientos Exteriores** | 374d | 2026-12-23 | 2028-06-19 |  | 245d |  |  | 1560h |
| 337 | 1.3.7.6.1 | Revestimiento de Piedra - (definir tipo) | 35d | 2026-12-23 | 2027-02-12 | 151 | 564d | 0d | Mariana V | 280h |
| 338 | 1.3.7.6.2 | Revestimiento de Ladrillos Refractarios - (Asador) | 3d | 2028-05-11 | 2028-05-15 | 326 | 269d |  | Mariana V | 24h |
| 339 | 1.3.7.6.3 | Revestimiento de Piedra en muro de contención - (definir tipo) | 20d | 2027-02-15 | 2027-03-12 | 337 | 564d |  | Mariana V | 160h |
| 340 | 1.3.7.6.4 | Revestimiento plástico - (definir color) | 3d | 2028-05-24 | 2028-05-29 | 162 | 246d | 0d | Mariana V | 24h |
| 341 | 1.3.7.6.5 | Revestimiento de Piedra - (definir tipo) | 15d | 2027-07-26 | 2027-08-13 | 152 | 458d |  | Mariana V | 120h |
| 342 | 1.3.7.6.6 | Revestimiento de Hormigón Visto | 30d | 2027-06-25 | 2027-08-06 | 102 | 463d |  | Mariana V | 240h |
| 343 | 1.3.7.6.7 | Revestimiento plástico en tanque de agua - (definir color) | 7d | 2028-05-30 | 2028-06-07 | 340 | 246d | 0d | Mariana V | 56h |
| 344 | 1.3.7.6.8 | Revestimiento plástico en canteros - (definir color) | 7d | 2028-06-08 | 2028-06-16 | 343 | 246d |  | Mariana V | 56h |
| 345 | 1.3.7.6.9 | Revestimiento de Piedra - (definir tipo) | 15d | 2027-12-03 | 2027-12-24 | 153 | 367d |  | Mariana V | 120h |
| 346 | 1.3.7.6.10 | Revestimiento de Hormigón Visto | 50d | 2027-11-11 | 2028-01-21 | 105 | 347d |  | Mariana V | 400h |
| 347 | 1.3.7.6.11 | Revestimiento de Alistonado WPC* | 10d | 2028-06-06 | 2028-06-19 | 334 | 245d |  | Mariana V | 80h |

| ID | WBS | Task | Type | Duration | Start | Finish | Predecessors | Total slack | Resources | Work |
| --- | --- | --- | --- | --- | --- | --- | --- | --- | --- | --- |
| 348 | 1.3.7.7 | **PINTURA** |  | 336d | 2027-02-23 | 2028-06-23 |  | 242d |  | 616h |
| 349 | 1.3.7.7.1 | **Pintura Interior en pared y cielorraso** |  | 40d | 2028-04-26 | 2028-06-23 |  | 242d |  | 440h |
| 350 | 1.3.7.7.1.1 | Latex Interior PSS |  | 15d | 2028-04-26 | 2028-05-17 | 304 | 267d | Mariana V | 120h |
| 351 | 1.3.7.7.1.2 | Latex Interior PB |  | 20d | 2028-05-26 | 2028-06-23 | 305 | 242d | Mariana V | 160h |
| 352 | 1.3.7.7.1.3 | Latex Interior PA |  | 20d | 2028-05-11 | 2028-06-08 | 307 | 252d | Mariana V | 160h |
| 353 | 1.3.7.7.2 | **Pintura Exterior** |  | 137.5d | 2027-02-23 | 2027-09-09 |  | 440.5d |  | 176h |
| 354 | 1.3.7.7.2.1 | Esmalte Sintetico en columnas y vigas metalicas* |  | 10d | 2027-08-26 | 2027-09-09 | 201FF | 440.5d | Mariana V | 80h |
| 355 | 1.3.7.7.2.2 | Esmalte Sintetico en pérgola* |  | 10d | 2027-05-07 | 2027-05-20 | 205FF | 517d | Mariana V | 80h |
| 356 | 1.3.7.7.2.3 | Esmalte Sintetico en conductos metalicos* |  | 2d | 2027-02-23 | 2027-02-24 | 210 | 576d | Mariana V | 16h |
| 357 | 1.3.7.8 | **CARPINTERIAS** |  | 135d | 2027-12-27 | 2028-07-07 |  | 0d |  | 360h |
| 358 | 1.3.7.8.1 | Colocación de premarcos |  | 10d | 2027-12-27 | 2028-01-07 | 158 | 0d | Mariana V | 80h |
| 359 | 1.3.7.8.2 | Puertas de madera* |  | 15d | 2028-06-16 | 2028-07-07 | 158FS+120d | 232d | Mariana V | 120h |
| 360 | 1.3.7.8.3 | Puertas de aluminio* |  | 5d | 2028-04-28 | 2028-05-05 | 361 | 275d | Mariana V | 40h |
| 361 | 1.3.7.8.4 | Aberturas de aluminio* |  | 15d | 2028-04-07 | 2028-04-27 | 358FS+90ed | 0d | Mariana V | 120h |
| 362 | 1.3.7.9 | **LIMPIEZA DE OBRA** |  | 503d? | 2026-06-22 | 2028-06-22 |  | 243d |  | 40h |
| 363 | 1.3.7.9.1 | Limpieza periodica |  | 1d? | 2026-06-22 | 2026-06-22 |  | 745d | Mariana V | 8h |
| 364 | 1.3.7.9.2 | Limpieza final |  | 4d | 2028-06-16 | 2028-06-22 | 245 | 243d | Mariana V | 32h |
| 365 | 1.3.7.10 | **VARIOS** |  | 15d | 2028-05-22 | 2028-06-12 |  | 0d |  | 120h |
| 366 | 1.3.7.10.1 | Muebles |  | 10d | 2028-05-22 | 2028-06-05 | 361FS+15d | 0d | Mariana V | 80h |
| 367 | 1.3.7.10.2 | Mesadas |  | 5d | 2028-06-06 | 2028-06-12 | 366 | 0d | Mariana V | 40h |
| 368 | 1.4 | Firma Acta recepcion Provisoria | milestone | 0d | 2028-06-15 | 2028-06-15 | 245 | 0d | Mariana V |  |
| 369 | 1.5 | Posventa |  | 12emo | 2028-06-15 | 2029-06-10 | 368 | 0d | Posventa | 8640h |
