# Vivienda Lugon

Schedule from MS Project XML, 2022-11-28 to 2028-01-30, A marks actual dates.

## Calendars

- Calendario Argentino 2024: Mon-Fri 09:00-13:00, 15:00-19:00; Sat-Sun off. Exceptions (off unless hours are given): 2024-07-09 (Día de la Independencia), 2024-10-11 (Feriado con fines turísticos), 2024-11-18 (Día de la Soberanía Nacional (20/11)), 2024-12-25 to 2033-12-25 (Navidad, recurring), 2025-01-01 to 2034-01-01 (Año nuevo 2025, recurring), 2025-02-10 to 2034-02-10 (Carnaval 2025, recurring), 2025-03-24 to 2034-03-24 (Día Nacional de la Memoria por la Verdad y la Justicia, recurring), 2025-03-28 (Viernes Santo), 2025-04-02 to 2034-04-02 (Día del Veterano y de los Caídos en la Guerra de Malvinas, recurring), 2025-05-01 to 2034-05-01 (Día del Trabajador, recurring), 2025-05-25 to 2034-05-25 (Dia de la revolucion de Mayo, recurring), 2025-06-20 to 2034-06-20 (Día de la Bandera, recurring), 2025-07-09 to 2034-07-09 (Día de la Independencia, recurring), 2025-08-18 to 2034-08-18 (Paso a la Inmortalidad del Gral. José de San Martín (17/08), recurring), 2025-10-13 to 2034-10-13 (Día del Respeto a la Diversidad Cultural (12/10), recurring), 2025-11-18 to 2034-11-18 (Día de la Soberanía Nacional (20/11), recurring), 2025-12-08 to 2034-12-08 (Día de la Virgen, recurring).

## Resources

| Resource |
| --- |
| Gabriela Rojo |
| Posventa |
| Proyectos |
| Marina F |
| Mariana Valdez |

## Schedule

| ID | WBS | Task | Duration | Start | Finish | Predecessors | Complete | Remaining | Baseline start | Baseline finish | Baseline duration | Baseline 1 start | Baseline 1 finish | Total slack | Free slack | Constraint | Resources | Work | Actual work |
| --- | --- | --- | --- | --- | --- | --- | --- | --- | --- | --- | --- | --- | --- | --- | --- | --- | --- | --- | --- |
| 1 | 1 | **Vivienda Lugon** | 1305d? | 2022-11-28 A | 2028-01-30 |  | 14% | 1119.02d? | 2022-11-28 | 2025-06-02 | 640d? | 2022-11-28 | 2028-01-30 | 0d |  |  |  | 44632h | 4784h |
| 2 | 1.1 | ✔Vivienda Lugon Contratada | 598d | 2022-11-28 A | 2025-04-01 A |  | 100% |  | 2022-11-28 | 2025-04-01 | 612d | 2022-11-28 | 2026-11-10 |  |  | start no earlier than 2022-11-28 | Mariana Valdez | 4784h | 4784h |
| 3 | 1.2 | Obra Lugon | 579d | 2024-09-30 | 2027-02-04 |  |  |  |  |  |  | 2024-09-30 | 2027-02-04 | 247d |  |  | Mariana Valdez | 4632h |  |
| 4 | 1.3 | **Obra Lugon** | 579d? | 2024-09-28 A | 2027-02-04 |  |  | 579d? |  |  |  | 2024-09-28 | 2027-02-04 | -579d | 0d |  |  | 17928h |  |
| 5 | 1.3.1 | **COLUMNAS Y VIGAS METÁLICAS SOBRE PLANTA BAJA Y PLANTA ALTA** | 126d | 2026-05-05 | 2026-11-02 |  |  |  |  |  |  | 2026-05-05 | 2026-11-02 | -579d | 0d |  |  | 536h |  |
| 6 | 1.3.1.1 | Tubo rectangular 40x80x2,5 | 5d | 2026-09-21 | 2026-09-25 | 11 |  |  |  |  |  | 2026-09-21 | 2026-09-25 | -579d | 0d |  | Mariana Valdez | 40h |  |
| 7 | 1.3.1.2 | Tubo rectangular 60x120x1,6 | 5d | 2026-09-28 | 2026-10-02 | 6 |  |  |  |  |  | 2026-09-28 | 2026-10-02 | -579d | 0d |  | Mariana Valdez | 40h |  |
| 8 | 1.3.1.3 | Tubo rectangular 40x60x2,5 | 5d | 2026-10-05 | 2026-10-09 | 7 |  |  |  |  |  | 2026-10-05 | 2026-10-09 | -579d | 0d |  | Mariana Valdez | 40h |  |
| 9 | 1.3.1.4 | Tubo rectangular 40x80x2,5 | 5d | 2026-10-12 | 2026-10-19 | 8 |  |  |  |  |  | 2026-10-12 | 2026-10-19 | -579d | 0d |  | Mariana Valdez | 40h |  |
| 10 | 1.3.1.5 | Gabinetes termotanque y en galeria/tender | 10d | 2026-10-20 | 2026-11-02 | 9 |  |  |  |  |  | 2026-10-20 | 2026-11-02 | -579d | 0d |  | Mariana Valdez | 80h |  |
| 11 | 1.3.1.6 | Albañales (los metros lineales son confusos) Rejilla guardaganado marco + rejilla. | 20d | 2026-08-24 | 2026-09-18 | 76 |  |  |  |  |  | 2026-08-24 | 2026-09-18 | -579d | 0d |  | Mariana Valdez | 160h |  |
| 12 | 1.3.1.7 | Canaletas ver si se contemplaron en cubiertas metalicas | 5d | 2026-06-12 | 2026-06-18 | 22 |  |  |  |  |  | 2026-06-12 | 2026-06-18 | -485d | 0d |  | Mariana Valdez | 40h |  |
| 13 | 1.3.1.8 | Cotizar colocar perfil ipn en contrapiso en ingreso cochera cortesia/ peatonal W310 | 2d | 2026-05-05 | 2026-05-06 | 30SS+15d |  |  |  |  |  | 2026-05-05 | 2026-05-06 | -579d | 0d |  | Mariana Valdez | 16h |  |
| 14 | 1.3.1.9 | Baranda suspendida de escalera principal | 10d | 2026-05-07 | 2026-05-20 | 13 |  |  |  |  |  | 2026-05-07 | 2026-05-20 | -485d | 0d |  | Mariana Valdez | 80h |  |
| 15 | 1.3.2 | **CONTRAPISO** | 37d | 2026-05-07 | 2026-06-29 |  |  |  |  |  |  | 2026-05-07 | 2026-06-29 | -579d | 0d |  | Mariana Valdez | 352h |  |
| 16 | 1.3.2.1 | CONTRAPISO DE HORMIGÓN EXTERIOR: e= 10cm falta aprox un 20% | 2d | 2026-05-07 | 2026-05-08 | 13 |  |  |  |  |  | 2026-05-07 | 2026-05-08 | -579d | 0d |  | Mariana Valdez | 16h |  |
| 17 | 1.3.2.2 | ADICIONAL - Contrapisos de terrazas para igualar nivel interior-exterior (planta alta dormitorios + gym) | 5d | 2026-06-23 | 2026-06-29 | 157 |  |  |  |  |  | 2026-06-23 | 2026-06-29 | -579d | 0d |  | Mariana Valdez | 40h |  |
| 18 | 1.3.3 | **CARPETA DE NIVELACIÓN EN SUBSUELO, PLANTA BAJA Y PLANTA ALTA** | 12d | 2026-06-30 | 2026-07-16 |  |  |  |  |  |  | 2026-06-30 | 2026-07-16 | -579d | 0d |  | Mariana Valdez | 192h |  |
| 19 | 1.3.3.1 | Carpeta exterior GYM | 5d | 2026-06-30 | 2026-07-06 | 17 |  |  |  |  |  | 2026-06-30 | 2026-07-06 | -579d | 0d |  | Mariana Valdez | 40h |  |
| 20 | 1.3.3.2 | ADICIONAL - Carpetas de terrazas por igualar nivel interior-exterior (planta alta dormitorios) | 7d | 2026-07-07 | 2026-07-16 | 19 |  |  |  |  |  | 2026-07-07 | 2026-07-16 | -579d | 0d |  | Mariana Valdez | 56h |  |
| 21 | 1.3.4 | **CUBIERTA** | 15d | 2026-05-21 | 2026-06-11 |  |  |  |  |  |  | 2026-05-21 | 2026-06-11 | -485d | 0d |  | Mariana Valdez | 240h |  |
| 22 | 1.3.4.1 | CUBIERTA METÁLICA DE CORTESIA (Cotizacion actualizada, sin canaletas) | 15d | 2026-05-21 | 2026-06-11 | 14 |  |  |  |  |  | 2026-05-21 | 2026-06-11 | -485d | 0d |  | Mariana Valdez | 120h |  |
| 23 | 1.3.5 | **REVESTIMIENTOS INTERIORES** | 17d | 2026-08-24 | 2026-09-15 |  |  |  |  |  |  | 2026-08-24 | 2026-09-15 | -546d | 0d |  | Mariana Valdez | 272h |  |
| 24 | 1.3.5.1 | REV: BAÑO - SB (REVEST PORCELANATO) | 5d | 2026-08-24 | 2026-08-28 | 76 |  |  |  |  |  | 2026-08-24 | 2026-08-28 | -546d | 0d |  | Mariana Valdez | 40h |  |
| 25 | 1.3.5.2 | REV: BAÑO C/ANTEBAÑO 1 - PA Y NICHO hay que modificarlo, ver si mantenemos revestimiento colocado | 3d | 2026-08-31 | 2026-09-02 | 24 |  |  |  |  |  | 2026-08-31 | 2026-09-02 | -546d | 0d |  | Mariana Valdez | 24h |  |
| 26 | 1.3.5.3 | REV: BAÑO 2 - PA Y NICHO (90%) | 3d | 2026-09-03 | 2026-09-07 | 25 |  |  |  |  |  | 2026-09-03 | 2026-09-07 | -546d | 0d |  | Mariana Valdez | 24h |  |
| 27 | 1.3.5.4 | REV: BAÑO 3 - PA Y NICHO | 3d | 2026-09-08 | 2026-09-10 | 26 |  |  |  |  |  | 2026-09-08 | 2026-09-10 | -546d | 0d |  | Mariana Valdez | 24h |  |
| 28 | 1.3.5.5 | REV: ASADOR - refractarias | 3d | 2026-09-11 | 2026-09-15 | 27 |  |  |  |  |  | 2026-09-11 | 2026-09-15 | -546d | 0d |  | Mariana Valdez | 24h |  |

Notes:
- 6: Galeria PB y tender (se adiciono gabinete) menos pergola
- 7: Cochera de cortesia
- 8: Tender vertical es 60x40
- 9: Cochera de cortesia (laterales) 60x40 vertical

| ID | WBS | Task | Type | Duration | Start | Finish | Predecessors | Baseline 1 start | Baseline 1 finish | Total slack | Free slack | Constraint | Resources | Work |
| --- | --- | --- | --- | --- | --- | --- | --- | --- | --- | --- | --- | --- | --- | --- |
| 29 | 1.3.6 | **REVESTIMIENTOS EXTERIORES** |  | 25d | 2026-04-13 | 2026-05-18 |  | 2026-04-13 | 2026-05-18 | -579d | 0d |  | Mariana Valdez | 400h |
| 30 | 1.3.6.1 | MURO REVESTIMIENTO PIEDRA GRIS |  | 25d | 2026-04-13 | 2026-05-18 |  | 2026-04-13 | 2026-05-18 | -579d | 0d | start no earlier than 2026-04-13 | Mariana Valdez | 200h |
| 31 | 1.3.7 | **PISOS INTERIORES** |  | 158d | 2026-04-13 | 2026-11-26 |  | 2026-04-13 | 2026-11-26 | -596d | 0d |  | Mariana Valdez | 2056h |
| 32 | 1.3.7.1 | PISO INTERIOR - COCHERA PSB (CEMENTO ALISADO) |  | 10d | 2026-04-13 | 2026-04-24 |  | 2026-04-13 | 2026-04-24 | -448d | 0d | start no earlier than 2026-04-13 | Mariana Valdez | 80h |
| 33 | 1.3.7.2 | PISO INTERIOR - QUINCHO Y EXTERIOR - PSB (PORC. VILLAGRES HOUSE CEMENT NATURAL 123*123) |  | 10d | 2026-07-22 | 2026-08-04 | 148 | 2026-07-22 | 2026-08-04 | -620d | 0d |  | Mariana Valdez | 80h |
| 34 | 1.3.7.3 | PISO INTERIOR - PASILLO - PSB |  | 2d | 2026-08-05 | 2026-08-06 | 33 | 2026-08-05 | 2026-08-06 | -620d | 0d |  | Mariana Valdez | 16h |
| 35 | 1.3.7.4 | PISO INTERIOR - BAÑO - PSB | milestone | 0d | 2026-04-13 | 2026-04-13 |  | 2026-04-13 | 2026-04-13 | -438d | 0d | start no earlier than 2026-04-13 | Mariana Valdez |  |
| 36 | 1.3.7.5 | PISO INTERIOR - BAÑO - PB | milestone | 0d | 2026-04-13 | 2026-04-13 |  | 2026-04-13 | 2026-04-13 | -438d | 0d | start no earlier than 2026-04-13 | Mariana Valdez |  |
| 37 | 1.3.7.6 | PISO INTERIOR - DESPENSA - PB | milestone | 0d | 2026-04-13 | 2026-04-13 |  | 2026-04-13 | 2026-04-13 | -438d | 0d | start no earlier than 2026-04-13 | Mariana Valdez |  |
| 38 | 1.3.7.7 | PISO INTERIOR - ESTAR - PB |  | 4d | 2026-08-07 | 2026-08-12 | 34 | 2026-08-07 | 2026-08-12 | -620d | 0d |  | Mariana Valdez | 32h |
| 39 | 1.3.7.8 | PISO INTERIOR - ESCRITORIO - PB | milestone | 0d | 2026-04-13 | 2026-04-13 |  | 2026-04-13 | 2026-04-13 | -438d | 0d | start no earlier than 2026-04-13 | Mariana Valdez |  |
| 40 | 1.3.7.9 | PISO INTERIOR - PASILLO - PB | milestone | 0d | 2026-04-13 | 2026-04-13 |  | 2026-04-13 | 2026-04-13 | -438d | 0d | start no earlier than 2026-04-13 | Mariana Valdez |  |
| 41 | 1.3.7.10 | PISO INTERIOR - COMEDOR - PB |  | 4d | 2026-08-13 | 2026-08-19 | 38 | 2026-08-13 | 2026-08-19 | -620d | 0d |  | Mariana Valdez | 32h |
| 42 | 1.3.7.11 | PISO INTERIOR - COCINA Y GALERIA Y ALERO - PB |  | 10d | 2026-08-20 | 2026-09-02 | 41 | 2026-08-20 | 2026-09-02 | -620d | 0d |  | Mariana Valdez | 80h |
| 43 | 1.3.7.12 | PISO INTERIOR - LAVADERO - PB |  | 2d | 2026-09-03 | 2026-09-04 | 42 | 2026-09-03 | 2026-09-04 | -620d | 0d |  | Mariana Valdez | 16h |
| 44 | 1.3.7.13 | PISO INTERIOR - BAÑO C/ANTEBAÑO - PA |  | 2d | 2026-09-07 | 2026-09-08 | 43 | 2026-09-07 | 2026-09-08 | -620d | 0d |  | Mariana Valdez | 16h |
| 45 | 1.3.7.14 | PISO INTERIOR - PASILLO - PA |  | 7d | 2026-09-09 | 2026-09-17 | 44 | 2026-09-09 | 2026-09-17 | -620d | 0d |  | Mariana Valdez | 56h |
| 46 | 1.3.7.15 | PISO INTERIOR - DORMITORIO PPAL Y TERRAZA Y BALCON. - PA |  | 10d | 2026-09-18 | 2026-10-01 | 45 | 2026-09-18 | 2026-10-01 | -620d | 0d |  | Mariana Valdez | 80h |
| 47 | 1.3.7.16 | PISO INTERIOR - VESTIDOR - PA | milestone | 0d | 2026-04-13 | 2026-04-13 |  | 2026-04-13 | 2026-04-13 | -438d | 0d | start no earlier than 2026-04-13 | Mariana Valdez |  |
| 48 | 1.3.7.17 | PISO INTERIOR - DORMITORIO 2 - PA | milestone | 0d | 2026-04-13 | 2026-04-13 |  | 2026-04-13 | 2026-04-13 | -438d | 0d | start no earlier than 2026-04-13 | Mariana Valdez |  |
| 49 | 1.3.7.18 | PISO INTERIOR - VESTIDOR 2 - PA | milestone | 0d | 2026-04-13 | 2026-04-13 |  | 2026-04-13 | 2026-04-13 | -438d | 0d | start no earlier than 2026-04-13 | Mariana Valdez |  |
| 50 | 1.3.7.19 | PISO INTERIOR - DORMITORIO 3 - PA |  | 7d | 2026-10-02 | 2026-10-12 | 46 | 2026-10-02 | 2026-10-12 | -620d | 0d |  | Mariana Valdez | 56h |
| 51 | 1.3.7.20 | PISO INTERIOR - VESTIDOR 3 - PA | milestone | 0d | 2026-04-13 | 2026-04-13 |  | 2026-04-13 | 2026-04-13 | -438d | 0d | start no earlier than 2026-04-13 | Mariana Valdez |  |
| 52 | 1.3.7.21 | PISO INTERIOR -GYM Y TERRAZA - PA 2 (CEMENTO ALISADO O PORFIDO?) |  | 10d | 2026-10-14 | 2026-10-27 | 50 | 2026-10-14 | 2026-10-27 | -620d | 0d |  | Mariana Valdez | 80h |
| 53 | 1.3.7.22 | PISO INTERIOR -ESCALERA COMPLETA EN ALTURA (PORFIDO O GRANITO NATURAL) |  | 21d | 2026-10-28 | 2026-11-26 | 52 | 2026-10-28 | 2026-11-26 | -620d | 0d |  | Mariana Valdez | 168h |

| ID | WBS | Task | Type | Duration | Start | Finish | Predecessors | Baseline 1 start | Baseline 1 finish | Total slack | Free slack | Constraint | Resources | Work |
| --- | --- | --- | --- | --- | --- | --- | --- | --- | --- | --- | --- | --- | --- | --- |
| 54 | 1.3.8 | **PISOS EXTERIORES faltan todos** |  | 182d | 2026-04-13 | 2027-01-04 |  | 2026-04-13 | 2027-01-04 | -620d | 0d |  | Mariana Valdez | 1968h |
| 55 | 1.3.8.1 | INGRESO PEATONAL Y PATIO PB (PORFIDO O GRANITO NATURAL) |  | 10d | 2026-04-13 | 2026-04-24 |  | 2026-04-13 | 2026-04-24 | -448d | 0d | start no earlier than 2026-04-13 | Mariana Valdez | 80h |
| 56 | 1.3.8.2 | PISOS: VEREDA PERIMETRAL PATIO (CONTEMP EN QUINCHO) (SE MODIFICO A MISMO PORCELANATO QUE INTERIOR) |  | 7d | 2026-11-27 | 2026-12-07 | 53 | 2026-11-27 | 2026-12-07 | -620d | 0d |  | Mariana Valdez | 56h |
| 57 | 1.3.8.3 | INGRESO COCHERA cortesía* (ADOQUINES) |  | 15d | 2026-04-13 | 2026-05-04 |  | 2026-04-13 | 2026-05-04 | -453d | 0d | start no earlier than 2026-04-13 | Mariana Valdez | 120h |
| 58 | 1.3.8.4 | INGRESO COCHERA Y LAVADO 5*6 subsuelo (ADOQUINES) |  | 15d | 2026-04-13 | 2026-05-04 |  | 2026-04-13 | 2026-05-04 | -453d | 0d | start no earlier than 2026-04-13 | Mariana Valdez | 120h |
| 59 | 1.3.8.5 | TERRAZA CONTEMPLADO EN DORM EN SUITE (MISMO PISO QUE INTERIOR) |  | 7d | 2026-12-09 | 2026-12-17 | 56 | 2026-12-09 | 2026-12-17 | -620d | 0d |  | Mariana Valdez | 56h |
| 60 | 1.3.8.6 | ADICIONAL - Piso sobre aleros en PA |  | 10d | 2026-12-18 | 2027-01-04 | 59 | 2026-12-18 | 2027-01-04 | -620d | 0d |  | Mariana Valdez | 80h |
| 61 | 1.3.8.7 | DURMIENTES HORIZ.* | milestone | 0d | 2026-04-13 | 2026-04-13 |  | 2026-04-13 | 2026-04-13 | -438d | 0d | start no earlier than 2026-04-13 | Mariana Valdez |  |
| 62 | 1.3.8.8 | DURMIENTES VERT.* | milestone | 0d | 2026-04-13 | 2026-04-13 |  | 2026-04-13 | 2026-04-13 | -438d | 0d | start no earlier than 2026-04-13 | Mariana Valdez |  |
| 63 | 1.3.9 | **ZOCALOS** |  | 10d | 2026-11-27 | 2026-12-11 |  | 2026-11-27 | 2026-12-11 | -606d | 0d |  | Mariana Valdez | 320h |
| 64 | 1.3.9.1 | ZOCALOS: Interiores SS |  | 10d | 2026-11-27 | 2026-12-11 | 53 | 2026-11-27 | 2026-12-11 | -606d | 0d |  | Mariana Valdez | 80h |
| 65 | 1.3.9.2 | ZOCALOS: Interiores PB |  | 10d | 2026-11-27 | 2026-12-11 | 53 | 2026-11-27 | 2026-12-11 | -606d | 0d |  | Mariana Valdez | 80h |
| 66 | 1.3.9.3 | ZOCALOS: Interiores PA |  | 10d | 2026-11-27 | 2026-12-11 | 53 | 2026-11-27 | 2026-12-11 | -606d | 0d |  | Mariana Valdez | 80h |
| 67 | 1.3.10 | **INSTALACIONES SANITARIAS Y PLUVIALES GENERALES** |  | 87d | 2026-05-19 | 2026-09-21 |  | 2026-05-19 | 2026-09-21 | -550d | 0d |  | Mariana Valdez | 1112h |
| 68 | 1.3.10.1 | ADICIONAL - tirada hasta el fondo |  | 7d | 2026-09-11 | 2026-09-21 | 73 | 2026-09-11 | 2026-09-21 | -553d | 0d |  | Mariana Valdez | 56h |
| 69 | 1.3.10.2 | ADICIONAL - desagüe de canteros |  | 1d | 2026-06-01 | 2026-06-01 | 71 | 2026-06-01 | 2026-06-01 | -472d | 0d |  | Mariana Valdez | 8h |
| 70 | 1.3.10.3 | ADICIONAL - desagüe de cochera de cortesia |  | 3d | 2026-05-21 | 2026-05-26 | 72 | 2026-05-21 | 2026-05-26 | -475d | 0d |  | Mariana Valdez | 24h |
| 71 | 1.3.10.4 | ADICIONAL - modificación de pluviales en cochera de subsuelo |  | 3d | 2026-05-27 | 2026-05-29 | 70 | 2026-05-27 | 2026-05-29 | -472d | 0d |  | Mariana Valdez | 24h |
| 72 | 1.3.10.5 | ADICIONAL - desagüe de abertura de GYM |  | 2d | 2026-05-19 | 2026-05-20 | 30 | 2026-05-19 | 2026-05-20 | -475d | 0d |  | Mariana Valdez | 16h |
| 73 | 1.3.10.6 | ADICIONAL - desagüe pluvial lado izquiero desde ingreso hasta quincho por terreno natural |  | 14d | 2026-08-24 | 2026-09-10 | 76 | 2026-08-24 | 2026-09-10 | -553d | 0d |  | Mariana Valdez | 112h |
| 74 | 1.3.10.7 | ADICIONAL - Modificar embudos de cambio de carpetas |  | 2d | 2026-05-21 | 2026-05-22 | 72 | 2026-05-21 | 2026-05-22 | -472d | 0d |  | Mariana Valdez | 16h |
| 75 | 1.3.10.8 | Agua a cisterna y distribución de cañeria (hacer) |  | 5d | 2026-05-26 | 2026-06-01 | 74 | 2026-05-26 | 2026-06-01 | -472d | 0d |  | Mariana Valdez | 40h |
| 76 | 1.3.10.9 | ADICIONAL - Albañal de desague |  | 15d | 2026-07-31 | 2026-08-21 | 168 | 2026-07-31 | 2026-08-21 | -579d | 0d |  | Mariana Valdez | 120h |
| 77 | 1.3.11 | **INSTALACIONES SANITARIAS INTERNAS** |  | 205d | 2026-04-13 | 2027-02-04 |  | 2026-04-13 | 2027-02-04 | -643d | 0d |  | Mariana Valdez | 1680h |
| 78 | 1.3.11.1 | INST. AGUA FRIA Y CALIENTE |  | 3d | 2026-09-22 | 2026-09-24 | 68 | 2026-09-22 | 2026-09-24 | -553d | 0d |  | Mariana Valdez | 24h |
| 79 | 1.3.11.2 | Cisterna enterrada (subsuelo y distribución)* | milestone | 0d | 2026-04-13 | 2026-04-13 |  | 2026-04-13 | 2026-04-13 | -438d | 0d | start no earlier than 2026-04-13 | Mariana Valdez |  |
| 80 | 1.3.11.3 | Bomba* |  | 2d | 2027-02-03 | 2027-02-04 | 82 | 2027-02-03 | 2027-02-04 | -643d | 0d |  | Mariana Valdez | 16h |

| ID | WBS | Task | Type | Duration | Start | Finish | Predecessors | Baseline 1 start | Baseline 1 finish | Total slack | Free slack | Constraint | Resources | Work |
| --- | --- | --- | --- | --- | --- | --- | --- | --- | --- | --- | --- | --- | --- | --- |
| 81 | 1.3.12 | **INSTALACIONES CLOACAS** |  | 5d | 2027-01-27 | 2027-02-02 |  | 2027-01-27 | 2027-02-02 | -643d | 0d |  | Mariana Valdez | 80h |
| 82 | 1.3.12.1 | Colocación artefactos |  | 5d | 2027-01-27 | 2027-02-02 | 174 | 2027-01-27 | 2027-02-02 | -643d | 0d |  | Mariana Valdez | 40h |
| 83 | 1.3.13 | **INSTALACION GAS arreglar caño de gas en el ingreso, ver donde van las rejillas de gas** |  | 50d | 2026-04-13 | 2026-06-23 |  | 2026-04-13 | 2026-06-23 | -488d | 0d |  | Mariana Valdez | 600h |
| 84 | 1.3.13.1 | 2 subida de gas PSS, PB y PA - cañeria Ø110 | milestone | 0d | 2026-04-13 | 2026-04-13 |  | 2026-04-13 | 2026-04-13 | -438d | 0d | start no earlier than 2026-04-13 | Mariana Valdez |  |
| 85 | 1.3.13.2 | Casilla de gas |  | 3d | 2026-05-19 | 2026-05-21 | 30 | 2026-05-19 | 2026-05-21 | -488d | 0d |  | Mariana Valdez | 24h |
| 86 | 1.3.13.3 | ADICIONAL - arreglar caño de gas x bobcat en el ingreso |  | 2d | 2026-05-22 | 2026-05-26 | 85 | 2026-05-22 | 2026-05-26 | -488d | 0d |  | Mariana Valdez | 16h |
| 87 | 1.3.13.4 | Aprobacion de gas |  | 10d | 2026-06-10 | 2026-06-23 | 90 | 2026-06-10 | 2026-06-23 | -488d | 0d |  | Mariana Valdez | 80h |
| 88 | 1.3.13.5 | Rejillas de ventilación |  | 3d | 2026-05-27 | 2026-05-29 | 86 | 2026-05-27 | 2026-05-29 | -488d | 0d |  | Mariana Valdez | 24h |
| 89 | 1.3.13.6 | ADICIONAL - modificación de llave de gas en termotanque (por cierre de gabinete) |  | 3d | 2026-06-01 | 2026-06-03 | 88 | 2026-06-01 | 2026-06-03 | -488d | 0d |  | Mariana Valdez | 24h |
| 90 | 1.3.13.7 | Colocación de Artefactos |  | 4d | 2026-06-04 | 2026-06-09 | 89 | 2026-06-04 | 2026-06-09 | -488d | 0d |  | Mariana Valdez | 32h |
| 91 | 1.3.14 | **INSTALACION ELECTRICA / SEÑALES DEBILES** |  | 15d | 2024-09-28 | 2024-10-21 |  | 2024-09-28 | 2024-10-21 | -79d | 0d |  | Mariana Valdez | 440h |
| 92 | 1.3.14.1 | Canalización, cableado y armado según plano. | milestone | 0d | 2024-09-28 | 2024-09-28 |  | 2024-09-28 | 2024-09-28 | -64d | 0d |  | Mariana Valdez |  |
| 93 | 1.3.14.2 | BOCAS DE ILUMINACIÓN EN LOSA | milestone | 0d | 2024-09-28 | 2024-09-28 |  | 2024-09-28 | 2024-09-28 | -64d | 0d |  | Mariana Valdez |  |
| 94 | 1.3.14.3 | BOCAS DE ILUMINACIÓN EN PARED | milestone | 0d | 2024-09-28 | 2024-09-28 |  | 2024-09-28 | 2024-09-28 | -64d | 0d |  | Mariana Valdez |  |
| 95 | 1.3.14.4 | BOCAS DE TOMACORRIENTES | milestone | 0d | 2024-09-28 | 2024-09-28 |  | 2024-09-28 | 2024-09-28 | -64d | 0d |  | Mariana Valdez |  |
| 96 | 1.3.14.5 | SEÑALES DÉBILES | milestone | 0d | 2024-09-28 | 2024-09-28 |  | 2024-09-28 | 2024-09-28 | -64d | 0d |  | Mariana Valdez |  |
| 97 | 1.3.14.6 | ARMADO DE TABLERO GENERAL | milestone | 0d | 2024-09-28 | 2024-09-28 |  | 2024-09-28 | 2024-09-28 | -64d | 0d |  | Mariana Valdez |  |
| 98 | 1.3.14.7 | CERTIFICACIÓN PARA EPEC/COOPERATIVA | milestone | 0d | 2024-09-28 | 2024-09-28 |  | 2024-09-28 | 2024-09-28 | -64d | 0d |  | Mariana Valdez |  |
| 99 | 1.3.14.8 | ARMADO DE TABLERO PARA LUZ DE OBRA | milestone | 0d | 2024-09-28 | 2024-09-28 |  | 2024-09-28 | 2024-09-28 | -64d | 0d |  | Mariana Valdez |  |
| 100 | 1.3.14.9 | Armado tablero obra arriba y conexión cble subterráneo | milestone | 0d | 2024-09-28 | 2024-09-28 |  | 2024-09-28 | 2024-09-28 | -64d | 0d |  | Mariana Valdez |  |
| 101 | 1.3.14.10 | Alimentación de pilar a grupo electrogeno | milestone | 0d | 2024-09-28 | 2024-09-28 |  | 2024-09-28 | 2024-09-28 | -64d | 0d |  | Mariana Valdez |  |
| 102 | 1.3.14.11 | Alimentación de grupo electrogeno hacia tableros interiores | milestone | 0d | 2024-09-28 | 2024-09-28 |  | 2024-09-28 | 2024-09-28 | -64d | 0d |  | Mariana Valdez |  |
| 103 | 1.3.14.12 | Zanjeo de pilar a tableros | milestone | 0d | 2024-09-28 | 2024-09-28 |  | 2024-09-28 | 2024-09-28 | -64d | 0d |  | Mariana Valdez |  |
| 104 | 1.3.14.13 | Grupo electrógeno | milestone | 0d | 2024-09-28 | 2024-09-28 |  | 2024-09-28 | 2024-09-28 | -64d | 0d |  | Mariana Valdez |  |
| 105 | 1.3.14.14 | Bocas faltantes | milestone | 0d | 2024-09-28 | 2024-09-28 |  | 2024-09-28 | 2024-09-28 | -64d | 0d |  | Mariana Valdez |  |
| 106 | 1.3.14.15 | Cableado |  | 15d | 2024-09-30 | 2024-10-21 |  | 2024-09-30 | 2024-10-21 | -79d | 0d |  | Mariana Valdez | 120h |
| 107 | 1.3.14.16 | Armado de tableros |  | 10d | 2024-09-30 | 2024-10-14 |  | 2024-09-30 | 2024-10-14 | -74d | 0d |  | Mariana Valdez | 80h |
| 108 | 1.3.14.17 | Armado de cajas |  | 15d | 2024-09-30 | 2024-10-21 |  | 2024-09-30 | 2024-10-21 | -79d | 0d |  | Mariana Valdez | 120h |

| ID | WBS | Task | Type | Duration | Start | Finish | Predecessors | Baseline 1 start | Baseline 1 finish | Total slack | Free slack | Constraint | Resources | Work |
| --- | --- | --- | --- | --- | --- | --- | --- | --- | --- | --- | --- | --- | --- | --- |
| 109 | 1.3.15 | **INSTALACION A°A° falta conectar desagues, y hacer conductos** |  | 37d | 2026-04-13 | 2026-06-04 |  | 2026-04-13 | 2026-06-04 | -495d | 0d |  | Mariana Valdez | 592h |
| 110 | 1.3.15.1 | AA SALA DE MÚSICA SS (contemplo conductos) |  | 5d | 2026-04-15 | 2026-04-21 | 118 | 2026-04-15 | 2026-04-21 | -495d | 0d |  | Mariana Valdez | 40h |
| 111 | 1.3.15.2 | AA DORMITORIO 1 (contemplo conductos) |  | 5d | 2026-04-22 | 2026-04-28 | 110 | 2026-04-22 | 2026-04-28 | -495d | 0d |  | Mariana Valdez | 40h |
| 112 | 1.3.15.3 | AA DORMITORIO 2 (contemplo conductos) |  | 5d | 2026-04-29 | 2026-05-06 | 111 | 2026-04-29 | 2026-05-06 | -495d | 0d |  | Mariana Valdez | 40h |
| 113 | 1.3.15.4 | AA DORMITORIO 3 (contemplo conductos) |  | 5d | 2026-05-07 | 2026-05-13 | 112 | 2026-05-07 | 2026-05-13 | -495d | 0d |  | Mariana Valdez | 40h |
| 114 | 1.3.15.5 | AA ESTAR COMEDOR (contemplo conductos) |  | 5d | 2026-05-14 | 2026-05-20 | 113 | 2026-05-14 | 2026-05-20 | -495d | 0d |  | Mariana Valdez | 40h |
| 115 | 1.3.15.6 | AA QUINCHO (contemplo conductos) |  | 5d | 2026-05-21 | 2026-05-28 | 114 | 2026-05-21 | 2026-05-28 | -495d | 0d |  | Mariana Valdez | 40h |
| 116 | 1.3.15.7 | AA GYM (contemplo conductos) |  | 5d | 2026-05-29 | 2026-06-04 | 115 | 2026-05-29 | 2026-06-04 | -495d | 0d |  | Mariana Valdez | 40h |
| 117 | 1.3.15.8 | KIT INSTALACION AA | milestone | 0d | 2026-04-13 | 2026-04-13 |  | 2026-04-13 | 2026-04-13 | -438d | 0d | start no earlier than 2026-04-13 | Mariana Valdez |  |
| 118 | 1.3.15.9 | Conexión de desagues de bajo siluetas |  | 2d | 2026-04-13 | 2026-04-14 |  | 2026-04-13 | 2026-04-14 | -495d | 0d | start no earlier than 2026-04-13 | Mariana Valdez | 16h |
| 119 | 1.3.16 | **INSTALACION CALEFACCIÓN** |  | 0d | 2026-04-13 | 2026-04-13 |  | 2026-04-13 | 2026-04-13 | -438d | 0d |  | Mariana Valdez |  |
| 120 | 1.3.16.1 | COLECTOR | milestone | 0d | 2026-04-13 | 2026-04-13 |  | 2026-04-13 | 2026-04-13 | -438d | 0d | start no earlier than 2026-04-13 | Mariana Valdez |  |
| 121 | 1.3.16.2 | KIT INSTALACION CAÑERIA | milestone | 0d | 2026-04-13 | 2026-04-13 |  | 2026-04-13 | 2026-04-13 | -438d | 0d | start no earlier than 2026-04-13 | Mariana Valdez |  |
| 122 | 1.3.16.3 | KIT INSTALACION CALDERA Y ELEMENTOS | milestone | 0d | 2026-04-13 | 2026-04-13 |  | 2026-04-13 | 2026-04-13 | -438d | 0d | start no earlier than 2026-04-13 | Mariana Valdez |  |
| 123 | 1.3.17 | **PINTURA GENERAL*** |  | 33d | 2026-04-13 | 2026-05-29 |  | 2026-04-13 | 2026-05-29 | -471d | 0d |  | Mariana Valdez | 1200h |
| 124 | 1.3.17.1 | LATEX INTERIOR PSS (LATEX INTERIOR, COLOR BLANCO CRUDO - 30GY 88 / 014 [ALBA]) |  | 5d | 2026-04-13 | 2026-04-17 |  | 2026-04-13 | 2026-04-17 | -443d | 0d | start no earlier than 2026-04-13 | Mariana Valdez | 40h |
| 125 | 1.3.17.2 | BASE + ESTUCADO INTERIOR PSS (ALBA DESIGN EFECTO CEMENTO, COLOR GRANITO HUMEDO [ALBA]) |  | 8d | 2026-04-13 | 2026-04-22 |  | 2026-04-13 | 2026-04-22 | -446d | 0d | start no earlier than 2026-04-13 | Mariana Valdez | 64h |
| 126 | 1.3.17.3 | LATEX INTERIOR PSS (base blanca) |  | 3d | 2026-05-13 | 2026-05-15 | 139 | 2026-05-13 | 2026-05-15 | -471d | 0d |  | Mariana Valdez | 24h |
| 127 | 1.3.17.4 | Planchado de paredes SS |  | 5d | 2026-04-13 | 2026-04-17 |  | 2026-04-13 | 2026-04-17 | -471d | 0d | start no earlier than 2026-04-13 | Mariana Valdez | 40h |
| 128 | 1.3.17.5 | Latex interior cielorraso durlock SS (definir color) |  | 4d | 2026-04-13 | 2026-04-16 |  | 2026-04-13 | 2026-04-16 | -442d | 0d | start no earlier than 2026-04-13 | Mariana Valdez | 32h |
| 129 | 1.3.17.6 | LATEX INTERIOR PB (LATEX INTERIOR, COLOR BLANCO CRUDO - 30GY 88 / 014 [ALBA]) |  | 5d | 2026-04-13 | 2026-04-17 |  | 2026-04-13 | 2026-04-17 | -443d | 0d | start no earlier than 2026-04-13 | Mariana Valdez | 40h |
| 130 | 1.3.17.7 | LATEX INTERIOR PB (base blanca) |  | 3d | 2026-05-18 | 2026-05-20 | 126 | 2026-05-18 | 2026-05-20 | -471d | 0d |  | Mariana Valdez | 24h |
| 131 | 1.3.17.8 | Planchado de paredes PB |  | 3d | 2026-04-20 | 2026-04-22 | 127 | 2026-04-20 | 2026-04-22 | -471d | 0d |  | Mariana Valdez | 24h |
| 132 | 1.3.17.9 | Latex interior cielorraso durlock PB (definir color) |  | 5d | 2026-04-13 | 2026-04-17 |  | 2026-04-13 | 2026-04-17 | -443d | 0d | start no earlier than 2026-04-13 | Mariana Valdez | 40h |
| 133 | 1.3.17.10 | LATEX INTERIOR PA (LATEX INTERIOR, COLOR BLANCO CRUDO - 30GY 88 / 014 [ALBA]) |  | 14d | 2026-04-13 | 2026-04-30 |  | 2026-04-13 | 2026-04-30 | -452d | 0d | start no earlier than 2026-04-13 | Mariana Valdez | 112h |
| 134 | 1.3.17.11 | BASE + ESTUCADO INTERIOR PA (a definir color) |  | 7d | 2026-04-13 | 2026-04-21 |  | 2026-04-13 | 2026-04-21 | -445d | 0d | start no earlier than 2026-04-13 | Mariana Valdez | 56h |
| 135 | 1.3.17.12 | LATEX INTERIOR PA (base blanca) |  | 4d | 2026-05-21 | 2026-05-27 | 130 | 2026-05-21 | 2026-05-27 | -471d | 0d |  | Mariana Valdez | 32h |
| 136 | 1.3.17.13 | Planchado de paredes + cielorraso PA |  | 10d | 2026-04-23 | 2026-05-07 | 131 | 2026-04-23 | 2026-05-07 | -471d | 0d |  | Mariana Valdez | 80h |
| 137 | 1.3.17.14 | Latex interior cielorraso durlock + yeso PA (definir color) |  | 6d | 2026-04-13 | 2026-04-20 |  | 2026-04-13 | 2026-04-20 | -444d | 0d | start no earlier than 2026-04-13 | Mariana Valdez | 48h |
| 138 | 1.3.17.15 | LATEX INTERIOR GYM (MUROS Y CIELORRASOS) (base blanca) |  | 5d | 2026-04-13 | 2026-04-17 |  | 2026-04-13 | 2026-04-17 | -443d | 0d | start no earlier than 2026-04-13 | Mariana Valdez | 40h |
| 139 | 1.3.17.16 | Planchado de paredes GYM |  | 3d | 2026-05-08 | 2026-05-12 | 136 | 2026-05-08 | 2026-05-12 | -471d | 0d |  | Mariana Valdez | 24h |
| 140 | 1.3.17.17 | Latex interior cielorraso yeso GYM (definir color) |  | 2d | 2026-05-28 | 2026-05-29 | 135 | 2026-05-28 | 2026-05-29 | -471d | 0d |  | Mariana Valdez | 16h |
| 141 | 1.3.17.18 | Revestimiento plastico (o si va revestimiento de madera, la pintura sobre el fino contemplar) |  | 15d | 2026-04-13 | 2026-05-04 |  | 2026-04-13 | 2026-05-04 | -453d | 0d | start no earlier than 2026-04-13 | Mariana Valdez | 120h |
| 142 | 1.3.17.19 | Laca hidrófuga sobre hormigones vistos |  | 10d | 2026-04-13 | 2026-04-24 |  | 2026-04-13 | 2026-04-24 | -448d | 0d | start no earlier than 2026-04-13 | Mariana Valdez | 80h |

| ID | WBS | Task | Type | Duration | Start | Finish | Predecessors | Complete | Baseline start | Baseline finish | Baseline duration | Baseline 1 start | Baseline 1 finish | Total slack | Free slack | Constraint | Deadline | Resources | Work |
| --- | --- | --- | --- | --- | --- | --- | --- | --- | --- | --- | --- | --- | --- | --- | --- | --- | --- | --- | --- |
| 143 | 1.3.18 | **YESO EN PAREDES ya se hizo, hay que certificar al 100** |  | 0d | 2024-09-28 A | 2024-09-28 A |  | 100% |  |  |  | 2024-09-28 | 2024-09-28 |  |  |  |  | Mariana Valdez |  |
| 144 | 1.3.18.1 | ✔MUROS PLANTA BAJA | milestone | 0d | 2024-09-28 A | 2024-09-28 A |  | 100% |  |  |  | 2024-09-28 | 2024-09-28 |  |  |  |  | Mariana Valdez |  |
| 145 | 1.3.18.2 | ✔MUROS PLANTA ALTA | milestone | 0d | 2024-09-28 A | 2024-09-28 A |  | 100% |  |  |  | 2024-09-28 | 2024-09-28 |  |  |  |  | Mariana Valdez |  |
| 146 | 1.3.18.3 | ✔CIELORRASO PLANTA ALTA | milestone | 0d | 2024-09-28 A | 2024-09-28 A |  | 100% |  |  |  | 2024-09-28 | 2024-09-28 |  |  |  |  | Mariana Valdez |  |
| 147 | 1.3.18.4 | ✔CIELORRASO GYM | milestone | 0d | 2024-09-28 A | 2024-09-28 A |  | 100% |  |  |  | 2024-09-28 | 2024-09-28 |  |  |  |  | Mariana Valdez |  |
| 148 | 1.3.19 | ABERTURAS |  | 5d | 2026-07-15 | 2026-07-21 |  |  |  |  |  | 2026-07-15 | 2026-07-21 | -620d | 0d | start no earlier than 2026-07-15 |  | Mariana Valdez | 40h |
| 149 | 1.3.20 | ESCALERAS | milestone | 0d | 2026-04-13 | 2026-04-13 |  |  |  |  |  | 2026-04-13 | 2026-04-13 | -438d | 0d | start no earlier than 2026-04-13 |  | Mariana Valdez |  |
| 150 | 1.3.21 | ESCALERA Hº VISTO-GALERIA A PATIO CON DURMIENTES | milestone | 0d | 2026-04-13 | 2026-04-13 |  |  |  |  |  | 2026-04-13 | 2026-04-13 | -438d | 0d | start no earlier than 2026-04-13 |  | Mariana Valdez |  |
| 151 | 1.3.22 | TERRAZA VERDE |  | 10d? | 2026-04-13 | 2026-04-24 |  |  |  |  |  | 2026-04-13 | 2026-04-24 | -448d | 0d | start no earlier than 2026-04-13 |  | Mariana Valdez | 80h |
| 152 | 1.3.23 | **ASADOR hecho** |  | 0d | 2026-04-13 | 2026-04-13 |  |  |  |  |  | 2026-04-13 | 2026-04-13 | -438d | 0d |  |  | Mariana Valdez |  |
| 153 | 1.3.23.1 | ASADOR | milestone | 0d | 2026-04-13 | 2026-04-13 |  |  |  |  |  | 2026-04-13 | 2026-04-13 | -438d | 0d | start no earlier than 2026-04-13 |  | Mariana Valdez |  |
| 154 | 1.3.24 | **BARANDAS faltan - nosotros tenemos que hacer lugar a los anclajes (adicional)** |  | 30d | 2026-05-11 | 2026-06-22 |  |  |  |  |  | 2026-05-11 | 2026-06-22 | -579d | 0d |  |  | Mariana Valdez | 480h |
| 155 | 1.3.24.1 | BARANDAS VIDRIOS h:0,70m (Faltan cotizar normalmente son MAT y MO) |  | 10d | 2026-05-11 | 2026-05-22 | 16 |  |  |  |  | 2026-05-11 | 2026-05-22 | -579d | 0d |  |  | Mariana Valdez | 80h |
| 156 | 1.3.24.2 | BARANDAS VIDRIOS h:0,90m (Faltan cotizar normalmente son MAT y MO) |  | 10d | 2026-05-26 | 2026-06-08 | 155 |  |  |  |  | 2026-05-26 | 2026-06-08 | -579d | 0d |  |  | Mariana Valdez | 80h |
| 157 | 1.3.24.3 | BARANDAS VIDRIOS h:0,70m (Faltan cotizar normalmente son MAT y MO) |  | 10d | 2026-06-09 | 2026-06-22 | 156 |  |  |  |  | 2026-06-09 | 2026-06-22 | -579d | 0d |  |  | Mariana Valdez | 80h |
| 158 | 1.3.25 | PÉRGOLAS - CERRAMIENTOS METÁLICOS | milestone | 0d | 2026-04-13 | 2026-04-13 |  |  |  |  |  | 2026-04-13 | 2026-04-13 | -438d | 0d | start no earlier than 2026-04-13 |  | Mariana Valdez |  |
| 159 | 1.3.26 | ASCENSOR |  | 10d | 2026-06-19 | 2026-07-02 | 165 |  |  |  |  | 2026-06-19 | 2026-07-02 | -495d | 0d |  |  | Mariana Valdez | 80h |
| 160 | 1.3.27 | PILETA | milestone | 0d | 2026-04-13 | 2026-04-13 |  |  |  |  |  | 2026-04-13 | 2026-04-13 | -438d | 0d | start no earlier than 2026-04-13 |  | Mariana Valdez |  |
| 161 | 1.3.28 | **ADICIONALES** |  | 572d | 2024-09-30 | 2027-01-26 |  |  |  |  |  | 2024-09-30 | 2027-01-26 | -636d | 0d |  |  | Mariana Valdez | 5208h |
| 162 | 1.3.28.1 | Revestimeinto de piedra oct25 a dic25 |  | 5d | 2024-09-30 | 2024-10-04 |  |  |  |  |  | 2024-09-30 | 2024-10-04 | -69d | 0d |  |  | Mariana Valdez | 40h |
| 163 | 1.3.28.2 | Sala de maquinas - abrir vano, hacer puerta metálica y llevar electricidad |  | 5d | 2027-01-06 | 2027-01-12 | 164 |  |  |  |  | 2027-01-06 | 2027-01-12 | -626d | 0d |  |  | Mariana Valdez | 40h |
| 164 | 1.3.28.3 | Paisajismo - colocación de durmientes, y movimientos que hagan falta |  | 10d | 2026-12-21 | 2027-01-05 |  |  |  |  |  | 2026-12-21 | 2027-01-05 | -626d | 0d | start no earlier than 2026-12-21 |  | Mariana Valdez | 80h |
| 165 | 1.3.28.4 | Durlock - cielorraso |  | 10d | 2026-06-05 | 2026-06-18 | 116 |  |  |  |  | 2026-06-05 | 2026-06-18 | -495d | 0d |  |  | Mariana Valdez | 80h |
| 166 | 1.3.28.5 | Durlock - paredes |  | 15d | 2026-05-14 | 2026-06-05 | 165SF |  |  |  |  | 2026-05-14 | 2026-06-05 | -475d | 0d |  |  | Mariana Valdez | 120h |
| 167 | 1.3.28.6 | Cordones de adoquines (vigas riostras de contensión) DEFINIR DISEÑO |  | 7d | 2026-05-27 | 2026-06-04 | 70 |  |  |  |  | 2026-05-27 | 2026-06-04 | -475d | 0d |  |  | Mariana Valdez | 56h |
| 168 | 1.3.28.7 | Membranas de terrazas y balcones |  | 10d | 2026-07-17 | 2026-07-30 | 20 |  |  |  |  | 2026-07-17 | 2026-07-30 | -579d | 0d |  |  | Mariana Valdez | 80h |
| 169 | 1.3.28.8 | Romper contrapiso de cochera |  | 5d | 2024-09-30 | 2024-10-04 |  |  |  |  |  | 2024-09-30 | 2024-10-04 | -69d | 0d |  |  | Mariana Valdez | 40h |
| 170 | 1.3.28.9 | Rehacer contrapiso de cochera |  | 5d | 2024-09-30 | 2024-10-04 |  |  |  |  |  | 2024-09-30 | 2024-10-04 | -69d | 0d |  |  | Mariana Valdez | 40h |
| 171 | 1.3.28.10 | Realizar pruebas hidraulicas de todas las instalaciones. (agua/ cloaca/ pluviales/ gas) |  | 3d | 2026-05-04 | 2026-05-06 |  |  |  |  |  | 2026-05-04 | 2026-05-06 | -455d | 0d | start no earlier than 2026-05-04 |  | Mariana Valdez | 24h |
| 172 | 1.3.28.11 | Desmalezado y corte de cesped |  | 1d | 2026-05-04 | 2026-05-04 |  |  |  |  |  | 2026-05-04 | 2026-05-04 | -453d | 0d | start no earlier than 2026-05-04 |  | Mariana Valdez | 8h |
| 173 | 1.3.28.12 | Realizar limpieza de Hormigon/mantenimiento |  | 3d | 2026-05-04 | 2026-05-06 |  |  |  |  |  | 2026-05-04 | 2026-05-06 | -455d | 0d | start no earlier than 2026-05-04 |  | Mariana Valdez | 24h |
| 174 | 1.3.28.13 | Colocación de muebles |  | 5d | 2027-01-20 | 2027-01-26 |  |  |  |  |  | 2027-01-20 | 2027-01-26 | -643d | 0d | start no earlier than 2027-01-20 |  |  |  |
| 175 | 1.4 | StandBy - Cliente solicito frenar |  | 102d | 2025-11-03 | 2026-04-01 |  |  |  |  |  | 2025-11-03 | 2026-04-01 | 458d |  | start no earlier than 2025-11-03 |  |  |  |
| 176 | 1.5 | Posventa Pasiva |  | 12emo | 2027-02-04 | 2028-01-30 | 4 |  | 2025-04-02 | 2025-06-02 | 0.49emo | 2027-02-04 | 2028-01-30 | -2847d | 0d |  |  | Posventa | 8640h |
| 177 | 1.6 | Fin Postventa | milestone | 0d | 2028-01-30 | 2028-01-30 | 176 |  | 2025-06-02 | 2025-06-02 |  | 2028-01-30 | 2028-01-30 | -649d | 0d |  | 2025-06-25 | Posventa |  |
| 178 | 1.7 | Firma Acta recepcion Provisoria |  | 1d | 2024-09-30 | 2024-09-30 |  |  | 2027-03-05 | 2027-03-05 |  | 2024-09-30 | 2024-09-30 | 578d | 0d |  |  | Mariana Valdez | 8h |
| 179 | 1.8 | Posventa |  | 12emo | 2024-09-30 | 2025-09-25 | 178 |  | 2027-03-05 | 2028-02-28 | 12emo | 2024-09-30 | 2025-09-25 | 2571d |  |  |  | Posventa | 8640h |
